# YHO_FEM2 _base 2030_42 locations__Rev.2K_3 — P50 cycle-grouped preliminary schedule

Schedule from MS Project XML, 2030-04-01 to 2030-09-17, 24 hours a day.
Preliminary planning schedule with baseline Duration, Duration WDT and simulated Start/Finish
Project review

## Calendars

- 24 Hours: Mon-Sun 00:00-23:59.

## Schedule

| ID | WBS | Task | Type | Duration | Start | Finish | Predecessors | Duration WDT [days] | Location | Activity ID | Position | Safe-to-safe group |
| --- | --- | --- | --- | --- | --- | --- | --- | --- | --- | --- | --- | --- |
| 1 | 1 | **Cycle 01 — Positions 1–2** |  | 160.4eh | 2030-04-01 00:00 | 2030-04-15 23:15 |  | 8.218750 |  |  |  |  |
| 2 | 1.1 | Port maneuvering | manual | 1eh | 2030-04-01 00:00 | 2030-04-01 01:00 |  | 0.000000 | OFFSHORE | 1 |  |  |
| 3 | 1.2 | Preload and jacking up at port | manual | 2eh | 2030-04-01 01:00 | 2030-04-01 03:00 | 2 | 0.000000 | OFFSHORE | 2 |  |  |
| 4 | 1.3 | Release crane, gangway etc and prep for lifting | manual | 3eh | 2030-04-01 03:00 | 2030-04-01 06:00 | 3 | 0.000000 | OFFSHORE | 3 |  |  |
| 5 | 1.4 | Load in/out WTG supplier equipment | manual | 1.5eh | 2030-04-01 06:00 | 2030-04-01 07:30 | 4 | 0.000000 | OFFSHORE | 4 |  |  |
| 6 | 1.5 | Loadout Nacelle #1 | manual | 3.38eh | 2030-04-01 07:30 | 2030-04-01 11:00 | 5 | 0.000000 | OFFSHORE | 5 |  |  |
| 7 | 1.6 | Loadout Tower #1 | manual | 3.38eh | 2030-04-01 11:00 | 2030-04-02 10:30 | 6 | 0.833333 | OFFSHORE | 6 |  |  |
| 8 | 1.7 | Loadout Blade 1 | manual | 2.25eh | 2030-04-02 10:30 | 2030-04-02 12:45 | 7 | 0.000000 | OFFSHORE | 7 |  |  |
| 9 | 1.8 | Loadout Blade 2 | manual | 2.25eh | 2030-04-02 12:45 | 2030-04-02 15:00 | 8 | 0.000000 | OFFSHORE | 8 |  |  |
| 10 | 1.9 | Loadout Blade 3 | manual | 2.25eh | 2030-04-02 15:00 | 2030-04-02 17:15 | 9 | 0.000000 | OFFSHORE | 9 |  |  |
| 11 | 1.10 | Load in/out WTG supplier equipment | manual | 1.5eh | 2030-04-02 17:15 | 2030-04-02 18:45 | 10 | 0.000000 | OFFSHORE | 10 |  |  |
| 12 | 1.11 | Loadout Nacelle #2 | manual | 3.38eh | 2030-04-02 18:45 | 2030-04-02 22:15 | 11 | 0.000000 | OFFSHORE | 11 |  |  |
| 13 | 1.12 | Loadout Tower #2 | manual | 3.38eh | 2030-04-02 22:15 | 2030-04-03 01:45 | 12 | 0.000000 | OFFSHORE | 12 |  |  |
| 14 | 1.13 | Loadout Blade 1 | manual | 2.25eh | 2030-04-03 01:45 | 2030-04-03 04:00 | 13 | 0.000000 | OFFSHORE | 13 |  |  |
| 15 | 1.14 | Loadout Blade 2 | manual | 2.25eh | 2030-04-03 04:00 | 2030-04-03 06:15 | 14 | 0.000000 | OFFSHORE | 14 |  |  |
| 16 | 1.15 | Loadout Blade 3 | manual | 2.25eh | 2030-04-03 06:15 | 2030-04-03 08:30 | 15 | 0.000000 | OFFSHORE | 15 |  |  |
| 17 | 1.16 | Secure of crane, gangway (at port)) | manual | 3eh | 2030-04-03 08:30 | 2030-04-03 11:30 | 16 | 0.000000 | OFFSHORE | 16 |  |  |
| 18 | 1.17 | Jacking down at port | manual | 2eh | 2030-04-03 11:30 | 2030-04-03 13:30 | 17 | 0.000000 | OFFSHORE | 17 |  |  |
| 19 | 1.18 | Port maneuvering | manual | 1eh | 2030-04-03 13:30 | 2030-04-03 14:30 | 18 | 0.000000 | OFFSHORE | 18 |  |  |
| 20 | 1.19 | Transit from port to site | manual | 5.2eh | 2030-04-03 14:30 | 2030-04-03 19:45 | 19 | 0.000000 | OFFSHORE | 19 |  |  |
| 21 | 1.20 | DP field check | manual | 0.5eh | 2030-04-03 19:45 | 2030-04-03 20:15 | 20 | 0.000000 | OFFSHORE | 20 |  |  |
| 22 | 1.21 | Transit to next foundation | manual | 1eh | 2030-04-03 20:15 | 2030-04-03 21:15 | 21 | 0.000000 | OFFSHORE | 21 | 1 |  |
| 23 | 1.22 | Positioning at WTG location | manual | 1eh | 2030-04-03 21:15 | 2030-04-04 00:00 | 22 | 0.072917 | OFFSHORE | 22 | 1 |  |
| 24 | 1.23 | Preload and jacking up at site | manual | 4eh | 2030-04-04 00:00 | 2030-04-04 04:00 | 23 | 0.000000 | OFFSHORE | 23 | 1 |  |
| 25 | 1.24 | Release crane, gangway and prep for lifting | manual | 3eh | 2030-04-04 04:00 | 2030-04-04 07:00 | 24 | 0.000000 | OFFSHORE | 24 | 1 |  |
| 26 | 1.25 | Remove TP cover and Preparation of TP | manual | 1.5eh | 2030-04-04 07:00 | 2030-04-04 08:30 | 25 | 0.000000 | OFFSHORE | 25 | 1 |  |
| 27 | 1.26 | Tower preparation, removal of seafastening bolts | manual | 3eh | 2030-04-04 08:30 | 2030-04-04 11:30 | 26 | 0.000000 | OFFSHORE | 26 | 1 |  |
| 28 | 1.27 | Tower rigging-up (attached lifting equipment) | manual | 1.5eh | 2030-04-04 11:30 | 2030-04-04 13:00 | 27 | 0.000000 | OFFSHORE | 27 | 1 | G1 |
| 29 | 1.28 | Tower Lifting (safe-to-safe) | manual | 5.25eh | 2030-04-04 13:00 | 2030-04-04 18:15 | 28 | 0.000000 | OFFSHORE | 28 | 1 | G1 |
| 30 | 1.29 | Tower derigging (remove lifting equipment) | manual | 0.75eh | 2030-04-04 18:15 | 2030-04-04 19:00 | 29 | 0.000000 | OFFSHORE | 29 | 1 | G1 |
| 31 | 1.30 | Nacelle preparation and rigging | manual | 0.75eh | 2030-04-04 19:00 | 2030-04-04 19:45 | 30 | 0.000000 | OFFSHORE | 30 | 1 | G2 |
| 32 | 1.31 | Nacelle Lifting (safe-to-safe) | manual | 3.38eh | 2030-04-04 19:45 | 2030-04-04 23:15 | 31 | 0.000000 | OFFSHORE | 31 | 1 | G2 |
| 33 | 1.32 | Nacelle derigging (remove lifting equipment) | manual | 0.75eh | 2030-04-04 23:15 | 2030-04-05 00:00 | 32 | 0.000000 | OFFSHORE | 32 | 1 | G2 |
| 34 | 1.33 | Blade yoke rigging and attachement to Blade #1 | manual | 0.75eh | 2030-04-05 00:00 | 2030-04-05 01:45 | 33 | 0.041667 | OFFSHORE | 33 | 1 | G3 |
| 35 | 1.34 | Blade #1 Lifting (safe-to-safe) | manual | 2.62eh | 2030-04-05 01:45 | 2030-04-05 04:30 | 34 | 0.000000 | OFFSHORE | 34 | 1 | G3 |
| 36 | 1.35 | Blade #1 completion work, re-locate blade yoke to next blade | manual | 2.25eh | 2030-04-05 04:30 | 2030-04-05 06:45 | 35 | 0.000000 | OFFSHORE | 35 | 1 | G3 |
| 37 | 1.36 | Blade #2 Lifting (safe-to-safe) | manual | 2.62eh | 2030-04-05 06:45 | 2030-04-08 03:45 | 36 | 2.760417 | OFFSHORE | 36 | 1 | G4 |
| 38 | 1.37 | Balde #2 completion work, re-locate blade yoke to next blade | manual | 2.25eh | 2030-04-08 03:45 | 2030-04-08 06:00 | 37 | 0.000000 | OFFSHORE | 37 | 1 | G4 |
| 39 | 1.38 | Blade #3 Lifting (safe-to-safe) | manual | 2.62eh | 2030-04-08 06:00 | 2030-04-08 08:45 | 38 | 0.000000 | OFFSHORE | 38 | 1 | G5 |
| 40 | 1.39 | Blade #3 completion work, blade yoke de-rigging | manual | 2.25eh | 2030-04-08 08:45 | 2030-04-08 11:00 | 39 | 0.000000 | OFFSHORE | 39 | 1 | G5 |
| 41 | 1.40 | Handling HSBM and lifting tools | manual | 1.5eh | 2030-04-08 11:00 | 2030-04-08 12:30 | 40 | 0.000000 | OFFSHORE | 40 | 1 |  |
| 42 | 1.41 | Lifting HSBM and lifting tools from Nacelle | manual | 1.5eh | 2030-04-08 12:30 | 2030-04-08 14:00 | 41 | 0.000000 | OFFSHORE | 41 | 1 |  |
| 43 | 1.42 | Turbine general completion works | manual | 4.5eh | 2030-04-08 14:00 | 2030-04-08 18:30 | 42 | 0.000000 | OFFSHORE | 42 | 1 |  |
| 44 | 1.43 | Secure of crane, gangway etc. Preparation for jacking down and sailing | manual | 3eh | 2030-04-08 18:30 | 2030-04-08 21:30 | 43 | 0.000000 | OFFSHORE | 43 | 1 |  |
| 45 | 1.44 | Jacking down at site | manual | 2eh | 2030-04-08 21:30 | 2030-04-08 23:30 | 44 | 0.000000 | OFFSHORE | 44 | 1 |  |
| 46 | 1.45 | Transit to next foundation | manual | 1eh | 2030-04-08 23:30 | 2030-04-09 00:30 | 45 | 0.000000 | OFFSHORE | 21 | 2 |  |
| 47 | 1.46 | Positioning at WTG location | manual | 1eh | 2030-04-09 00:30 | 2030-04-09 01:30 | 46 | 0.000000 | OFFSHORE | 22 | 2 |  |
| 48 | 1.47 | Preload and jacking up at site | manual | 4eh | 2030-04-09 01:30 | 2030-04-09 05:30 | 47 | 0.000000 | OFFSHORE | 23 | 2 |  |
| 49 | 1.48 | Release crane, gangway and prep for lifting | manual | 3eh | 2030-04-09 05:30 | 2030-04-09 08:30 | 48 | 0.000000 | OFFSHORE | 24 | 2 |  |
| 50 | 1.49 | Remove TP cover and Preparation of TP | manual | 1.5eh | 2030-04-09 08:30 | 2030-04-09 10:00 | 49 | 0.000000 | OFFSHORE | 25 | 2 |  |
| 51 | 1.50 | Tower preparation, removal of seafastening bolts | manual | 3eh | 2030-04-09 10:00 | 2030-04-09 13:00 | 50 | 0.000000 | OFFSHORE | 26 | 2 |  |
| 52 | 1.51 | Tower rigging-up (attached lifting equipment) | manual | 1.5eh | 2030-04-09 13:00 | 2030-04-09 14:30 | 51 | 0.000000 | OFFSHORE | 27 | 2 | G1 |
| 53 | 1.52 | Tower Lifting (safe-to-safe) | manual | 5.25eh | 2030-04-09 14:30 | 2030-04-09 19:45 | 52 | 0.000000 | OFFSHORE | 28 | 2 | G1 |
| 54 | 1.53 | Tower derigging (remove lifting equipment) | manual | 0.75eh | 2030-04-09 19:45 | 2030-04-09 20:30 | 53 | 0.000000 | OFFSHORE | 29 | 2 | G1 |
| 55 | 1.54 | Nacelle preparation and rigging | manual | 0.75eh | 2030-04-09 20:30 | 2030-04-09 21:15 | 54 | 0.000000 | OFFSHORE | 30 | 2 | G2 |
| 56 | 1.55 | Nacelle Lifting (safe-to-safe) | manual | 3.38eh | 2030-04-09 21:15 | 2030-04-10 00:45 | 55 | 0.000000 | OFFSHORE | 31 | 2 | G2 |
| 57 | 1.56 | Nacelle derigging (remove lifting equipment) | manual | 0.75eh | 2030-04-10 00:45 | 2030-04-10 01:30 | 56 | 0.000000 | OFFSHORE | 32 | 2 | G2 |
| 58 | 1.57 | Blade yoke rigging and attachement to Blade #1 | manual | 0.75eh | 2030-04-10 01:30 | 2030-04-11 22:45 | 57 | 1.854167 | OFFSHORE | 33 | 2 | G3 |
| 59 | 1.58 | Blade #1 Lifting (safe-to-safe) | manual | 2.62eh | 2030-04-11 22:45 | 2030-04-12 01:30 | 58 | 0.000000 | OFFSHORE | 34 | 2 | G3 |
| 60 | 1.59 | Blade #1 completion work, re-locate blade yoke to next blade | manual | 2.25eh | 2030-04-12 01:30 | 2030-04-12 03:45 | 59 | 0.000000 | OFFSHORE | 35 | 2 | G3 |
| 61 | 1.60 | Blade #2 Lifting (safe-to-safe) | manual | 2.62eh | 2030-04-12 03:45 | 2030-04-12 06:30 | 60 | 0.000000 | OFFSHORE | 36 | 2 | G4 |
| 62 | 1.61 | Balde #2 completion work, re-locate blade yoke to next blade | manual | 2.25eh | 2030-04-12 06:30 | 2030-04-12 08:45 | 61 | 0.000000 | OFFSHORE | 37 | 2 | G4 |
| 63 | 1.62 | Blade #3 Lifting (safe-to-safe) | manual | 2.62eh | 2030-04-12 08:45 | 2030-04-14 15:45 | 62 | 2.177083 | OFFSHORE | 38 | 2 | G5 |
| 64 | 1.63 | Blade #3 completion work, blade yoke de-rigging | manual | 2.25eh | 2030-04-14 15:45 | 2030-04-14 18:00 | 63 | 0.000000 | OFFSHORE | 39 | 2 | G5 |
| 65 | 1.64 | Handling HSBM and lifting tools | manual | 1.5eh | 2030-04-14 18:00 | 2030-04-14 19:30 | 64 | 0.000000 | OFFSHORE | 40 | 2 |  |
| 66 | 1.65 | Lifting HSBM and lifting tools from Nacelle | manual | 1.5eh | 2030-04-14 19:30 | 2030-04-14 21:00 | 65 | 0.000000 | OFFSHORE | 41 | 2 |  |
| 67 | 1.66 | Turbine general completion works | manual | 4.5eh | 2030-04-14 21:00 | 2030-04-15 01:30 | 66 | 0.000000 | OFFSHORE | 42 | 2 |  |
| 68 | 1.67 | Secure of crane, gangway etc. Preparation for jacking down and sailing | manual | 3eh | 2030-04-15 01:30 | 2030-04-15 04:30 | 67 | 0.000000 | OFFSHORE | 43 | 2 |  |
| 69 | 1.68 | Jacking down at site | manual | 2eh | 2030-04-15 04:30 | 2030-04-15 18:00 | 68 | 0.479167 | OFFSHORE | 44 | 2 |  |
| 70 | 1.69 | Transit from site to port | manual | 5.2eh | 2030-04-15 18:00 | 2030-04-15 23:15 | 69 | 0.000000 | OFFSHORE | 45 |  |  |

Notes:
- 1: P50 representative hindcast year 1984; cycle 1; baseline duration 6.683 days; downtime 8.219 days; elapsed duration 14.969 days.
- 2: Scenario: P50; P50 representative hindcast year 1984; cycle: 1; activity ID: 1; location: OFFSHORE; position: n/a; safe-to-safe group: none; baseline duration: 1.000 h; weather/operational downtime: 0.000 h; elapsed duration: 1.000 h.
- 3: Scenario: P50; P50 representative hindcast year 1984; cycle: 1; activity ID: 2; location: OFFSHORE; position: n/a; safe-to-safe group: none; baseline duration: 2.000 h; weather/operational downtime: 0.000 h; elapsed duration: 2.000 h.
- 4: Scenario: P50; P50 representative hindcast year 1984; cycle: 1; activity ID: 3; location: OFFSHORE; position: n/a; safe-to-safe group: none; baseline duration: 3.000 h; weather/operational downtime: 0.000 h; elapsed duration: 3.000 h.
- 5: Scenario: P50; P50 representative hindcast year 1984; cycle: 1; activity ID: 4; location: OFFSHORE; position: n/a; safe-to-safe group: none; baseline duration: 1.500 h; weather/operational downtime: 0.000 h; elapsed duration: 1.500 h.
- 6: Scenario: P50; P50 representative hindcast year 1984; cycle: 1; activity ID: 5; location: OFFSHORE; position: n/a; safe-to-safe group: none; baseline duration: 3.375 h; weather/operational downtime: 0.000 h; elapsed duration: 3.500 h.
- 7: Scenario: P50; P50 representative hindcast year 1984; cycle: 1; activity ID: 6; location: OFFSHORE; position: n/a; safe-to-safe group: none; baseline duration: 3.375 h; weather/operational downtime: 20.000 h; elapsed duration: 23.500 h.
- 8: Scenario: P50; P50 representative hindcast year 1984; cycle: 1; activity ID: 7; location: OFFSHORE; position: n/a; safe-to-safe group: none; baseline duration: 2.250 h; weather/operational downtime: 0.000 h; elapsed duration: 2.250 h.
- 9: Scenario: P50; P50 representative hindcast year 1984; cycle: 1; activity ID: 8; location: OFFSHORE; position: n/a; safe-to-safe group: none; baseline duration: 2.250 h; weather/operational downtime: 0.000 h; elapsed duration: 2.250 h.
- 10: Scenario: P50; P50 representative hindcast year 1984; cycle: 1; activity ID: 9; location: OFFSHORE; position: n/a; safe-to-safe group: none; baseline duration: 2.250 h; weather/operational downtime: 0.000 h; elapsed duration: 2.250 h.
- 11: Scenario: P50; P50 representative hindcast year 1984; cycle: 1; activity ID: 10; location: OFFSHORE; position: n/a; safe-to-safe group: none; baseline duration: 1.500 h; weather/operational downtime: 0.000 h; elapsed duration: 1.500 h.
- 12: Scenario: P50; P50 representative hindcast year 1984; cycle: 1; activity ID: 11; location: OFFSHORE; position: n/a; safe-to-safe group: none; baseline duration: 3.375 h; weather/operational downtime: 0.000 h; elapsed duration: 3.500 h.
- 13: Scenario: P50; P50 representative hindcast year 1984; cycle: 1; activity ID: 12; location: OFFSHORE; position: n/a; safe-to-safe group: none; baseline duration: 3.375 h; weather/operational downtime: 0.000 h; elapsed duration: 3.500 h.
- 14: Scenario: P50; P50 representative hindcast year 1984; cycle: 1; activity ID: 13; location: OFFSHORE; position: n/a; safe-to-safe group: none; baseline duration: 2.250 h; weather/operational downtime: 0.000 h; elapsed duration: 2.250 h.
- 15: Scenario: P50; P50 representative hindcast year 1984; cycle: 1; activity ID: 14; location: OFFSHORE; position: n/a; safe-to-safe group: none; baseline duration: 2.250 h; weather/operational downtime: 0.000 h; elapsed duration: 2.250 h.
- 16: Scenario: P50; P50 representative hindcast year 1984; cycle: 1; activity ID: 15; location: OFFSHORE; position: n/a; safe-to-safe group: none; baseline duration: 2.250 h; weather/operational downtime: 0.000 h; elapsed duration: 2.250 h.
- 17: Scenario: P50; P50 representative hindcast year 1984; cycle: 1; activity ID: 16; location: OFFSHORE; position: n/a; safe-to-safe group: none; baseline duration: 3.000 h; weather/operational downtime: 0.000 h; elapsed duration: 3.000 h.
- 18: Scenario: P50; P50 representative hindcast year 1984; cycle: 1; activity ID: 17; location: OFFSHORE; position: n/a; safe-to-safe group: none; baseline duration: 2.000 h; weather/operational downtime: 0.000 h; elapsed duration: 2.000 h.
- 19: Scenario: P50; P50 representative hindcast year 1984; cycle: 1; activity ID: 18; location: OFFSHORE; position: n/a; safe-to-safe group: none; baseline duration: 1.000 h; weather/operational downtime: 0.000 h; elapsed duration: 1.000 h.
- 20: Scenario: P50; P50 representative hindcast year 1984; cycle: 1; activity ID: 19; location: OFFSHORE; position: n/a; safe-to-safe group: none; baseline duration: 5.200 h; weather/operational downtime: 0.000 h; elapsed duration: 5.250 h.
- 21: Scenario: P50; P50 representative hindcast year 1984; cycle: 1; activity ID: 20; location: OFFSHORE; position: n/a; safe-to-safe group: none; baseline duration: 0.500 h; weather/operational downtime: 0.000 h; elapsed duration: 0.500 h.
- 22: Scenario: P50; P50 representative hindcast year 1984; cycle: 1; activity ID: 21; location: OFFSHORE; position: 1; safe-to-safe group: none; baseline duration: 1.000 h; weather/operational downtime: 0.000 h; elapsed duration: 1.000 h.
- 23: Scenario: P50; P50 representative hindcast year 1984; cycle: 1; activity ID: 22; location: OFFSHORE; position: 1; safe-to-safe group: none; baseline duration: 1.000 h; weather/operational downtime: 1.750 h; elapsed duration: 2.750 h.
- 24: Scenario: P50; P50 representative hindcast year 1984; cycle: 1; activity ID: 23; location: OFFSHORE; position: 1; safe-to-safe group: none; baseline duration: 4.000 h; weather/operational downtime: 0.000 h; elapsed duration: 4.000 h.
- 25: Scenario: P50; P50 representative hindcast year 1984; cycle: 1; activity ID: 24; location: OFFSHORE; position: 1; safe-to-safe group: none; baseline duration: 3.000 h; weather/operational downtime: 0.000 h; elapsed duration: 3.000 h.
- 26: Scenario: P50; P50 representative hindcast year 1984; cycle: 1; activity ID: 25; location: OFFSHORE; position: 1; safe-to-safe group: none; baseline duration: 1.500 h; weather/operational downtime: 0.000 h; elapsed duration: 1.500 h.
- 27: Scenario: P50; P50 representative hindcast year 1984; cycle: 1; activity ID: 26; location: OFFSHORE; position: 1; safe-to-safe group: none; baseline duration: 3.000 h; weather/operational downtime: 0.000 h; elapsed duration: 3.000 h.
- 28: Scenario: P50; P50 representative hindcast year 1984; cycle: 1; activity ID: 27; location: OFFSHORE; position: 1; safe-to-safe group: G1; baseline duration: 1.500 h; weather/operational downtime: 0.000 h; elapsed duration: 1.500 h.
- 29: Scenario: P50; P50 representative hindcast year 1984; cycle: 1; activity ID: 28; location: OFFSHORE; position: 1; safe-to-safe group: G1; baseline duration: 5.250 h; weather/operational downtime: 0.000 h; elapsed duration: 5.250 h.
- 30: Scenario: P50; P50 representative hindcast year 1984; cycle: 1; activity ID: 29; location: OFFSHORE; position: 1; safe-to-safe group: G1; baseline duration: 0.750 h; weather/operational downtime: 0.000 h; elapsed duration: 0.750 h.
- 31: Scenario: P50; P50 representative hindcast year 1984; cycle: 1; activity ID: 30; location: OFFSHORE; position: 1; safe-to-safe group: G2; baseline duration: 0.750 h; weather/operational downtime: 0.000 h; elapsed duration: 0.750 h.
- 32: Scenario: P50; P50 representative hindcast year 1984; cycle: 1; activity ID: 31; location: OFFSHORE; position: 1; safe-to-safe group: G2; baseline duration: 3.375 h; weather/operational downtime: 0.000 h; elapsed duration: 3.500 h.
- 33: Scenario: P50; P50 representative hindcast year 1984; cycle: 1; activity ID: 32; location: OFFSHORE; position: 1; safe-to-safe group: G2; baseline duration: 0.750 h; weather/operational downtime: 0.000 h; elapsed duration: 0.750 h.
- 34: Scenario: P50; P50 representative hindcast year 1984; cycle: 1; activity ID: 33; location: OFFSHORE; position: 1; safe-to-safe group: G3; baseline duration: 0.750 h; weather/operational downtime: 1.000 h; elapsed duration: 1.750 h.
- 35: Scenario: P50; P50 representative hindcast year 1984; cycle: 1; activity ID: 34; location: OFFSHORE; position: 1; safe-to-safe group: G3; baseline duration: 2.625 h; weather/operational downtime: 0.000 h; elapsed duration: 2.750 h.
- 36: Scenario: P50; P50 representative hindcast year 1984; cycle: 1; activity ID: 35; location: OFFSHORE; position: 1; safe-to-safe group: G3; baseline duration: 2.250 h; weather/operational downtime: 0.000 h; elapsed duration: 2.250 h.
- 37: Scenario: P50; P50 representative hindcast year 1984; cycle: 1; activity ID: 36; location: OFFSHORE; position: 1; safe-to-safe group: G4; baseline duration: 2.625 h; weather/operational downtime: 66.250 h; elapsed duration: 69.000 h.
- 38: Scenario: P50; P50 representative hindcast year 1984; cycle: 1; activity ID: 37; location: OFFSHORE; position: 1; safe-to-safe group: G4; baseline duration: 2.250 h; weather/operational downtime: 0.000 h; elapsed duration: 2.250 h.
- 39: Scenario: P50; P50 representative hindcast year 1984; cycle: 1; activity ID: 38; location: OFFSHORE; position: 1; safe-to-safe group: G5; baseline duration: 2.625 h; weather/operational downtime: 0.000 h; elapsed duration: 2.750 h.
- 40: Scenario: P50; P50 representative hindcast year 1984; cycle: 1; activity ID: 39; location: OFFSHORE; position: 1; safe-to-safe group: G5; baseline duration: 2.250 h; weather/operational downtime: 0.000 h; elapsed duration: 2.250 h.
- 41: Scenario: P50; P50 representative hindcast year 1984; cycle: 1; activity ID: 40; location: OFFSHORE; position: 1; safe-to-safe group: none; baseline duration: 1.500 h; weather/operational downtime: 0.000 h; elapsed duration: 1.500 h.
- 42: Scenario: P50; P50 representative hindcast year 1984; cycle: 1; activity ID: 41; location: OFFSHORE; position: 1; safe-to-safe group: none; baseline duration: 1.500 h; weather/operational downtime: 0.000 h; elapsed duration: 1.500 h.
- 43: Scenario: P50; P50 representative hindcast year 1984; cycle: 1; activity ID: 42; location: OFFSHORE; position: 1; safe-to-safe group: none; baseline duration: 4.500 h; weather/operational downtime: 0.000 h; elapsed duration: 4.500 h.
- 44: Scenario: P50; P50 representative hindcast year 1984; cycle: 1; activity ID: 43; location: OFFSHORE; position: 1; safe-to-safe group: none; baseline duration: 3.000 h; weather/operational downtime: 0.000 h; elapsed duration: 3.000 h.
- 45: Scenario: P50; P50 representative hindcast year 1984; cycle: 1; activity ID: 44; location: OFFSHORE; position: 1; safe-to-safe group: none; baseline duration: 2.000 h; weather/operational downtime: 0.000 h; elapsed duration: 2.000 h.
- 46: Scenario: P50; P50 representative hindcast year 1984; cycle: 1; activity ID: 21; location: OFFSHORE; position: 2; safe-to-safe group: none; baseline duration: 1.000 h; weather/operational downtime: 0.000 h; elapsed duration: 1.000 h.
- 47: Scenario: P50; P50 representative hindcast year 1984; cycle: 1; activity ID: 22; location: OFFSHORE; position: 2; safe-to-safe group: none; baseline duration: 1.000 h; weather/operational downtime: 0.000 h; elapsed duration: 1.000 h.
- 48: Scenario: P50; P50 representative hindcast year 1984; cycle: 1; activity ID: 23; location: OFFSHORE; position: 2; safe-to-safe group: none; baseline duration: 4.000 h; weather/operational downtime: 0.000 h; elapsed duration: 4.000 h.
- 49: Scenario: P50; P50 representative hindcast year 1984; cycle: 1; activity ID: 24; location: OFFSHORE; position: 2; safe-to-safe group: none; baseline duration: 3.000 h; weather/operational downtime: 0.000 h; elapsed duration: 3.000 h.
- 50: Scenario: P50; P50 representative hindcast year 1984; cycle: 1; activity ID: 25; location: OFFSHORE; position: 2; safe-to-safe group: none; baseline duration: 1.500 h; weather/operational downtime: 0.000 h; elapsed duration: 1.500 h.
- 51: Scenario: P50; P50 representative hindcast year 1984; cycle: 1; activity ID: 26; location: OFFSHORE; position: 2; safe-to-safe group: none; baseline duration: 3.000 h; weather/operational downtime: 0.000 h; elapsed duration: 3.000 h.
- 52: Scenario: P50; P50 representative hindcast year 1984; cycle: 1; activity ID: 27; location: OFFSHORE; position: 2; safe-to-safe group: G1; baseline duration: 1.500 h; weather/operational downtime: 0.000 h; elapsed duration: 1.500 h.
- 53: Scenario: P50; P50 representative hindcast year 1984; cycle: 1; activity ID: 28; location: OFFSHORE; position: 2; safe-to-safe group: G1; baseline duration: 5.250 h; weather/operational downtime: 0.000 h; elapsed duration: 5.250 h.
- 54: Scenario: P50; P50 representative hindcast year 1984; cycle: 1; activity ID: 29; location: OFFSHORE; position: 2; safe-to-safe group: G1; baseline duration: 0.750 h; weather/operational downtime: 0.000 h; elapsed duration: 0.750 h.
- 55: Scenario: P50; P50 representative hindcast year 1984; cycle: 1; activity ID: 30; location: OFFSHORE; position: 2; safe-to-safe group: G2; baseline duration: 0.750 h; weather/operational downtime: 0.000 h; elapsed duration: 0.750 h.
- 56: Scenario: P50; P50 representative hindcast year 1984; cycle: 1; activity ID: 31; location: OFFSHORE; position: 2; safe-to-safe group: G2; baseline duration: 3.375 h; weather/operational downtime: 0.000 h; elapsed duration: 3.500 h.
- 57: Scenario: P50; P50 representative hindcast year 1984; cycle: 1; activity ID: 32; location: OFFSHORE; position: 2; safe-to-safe group: G2; baseline duration: 0.750 h; weather/operational downtime: 0.000 h; elapsed duration: 0.750 h.
- 58: Scenario: P50; P50 representative hindcast year 1984; cycle: 1; activity ID: 33; location: OFFSHORE; position: 2; safe-to-safe group: G3; baseline duration: 0.750 h; weather/operational downtime: 44.500 h; elapsed duration: 45.250 h.
- 59: Scenario: P50; P50 representative hindcast year 1984; cycle: 1; activity ID: 34; location: OFFSHORE; position: 2; safe-to-safe group: G3; baseline duration: 2.625 h; weather/operational downtime: 0.000 h; elapsed duration: 2.750 h.
- 60: Scenario: P50; P50 representative hindcast year 1984; cycle: 1; activity ID: 35; location: OFFSHORE; position: 2; safe-to-safe group: G3; baseline duration: 2.250 h; weather/operational downtime: 0.000 h; elapsed duration: 2.250 h.
- 61: Scenario: P50; P50 representative hindcast year 1984; cycle: 1; activity ID: 36; location: OFFSHORE; position: 2; safe-to-safe group: G4; baseline duration: 2.625 h; weather/operational downtime: 0.000 h; elapsed duration: 2.750 h.
- 62: Scenario: P50; P50 representative hindcast year 1984; cycle: 1; activity ID: 37; location: OFFSHORE; position: 2; safe-to-safe group: G4; baseline duration: 2.250 h; weather/operational downtime: 0.000 h; elapsed duration: 2.250 h.
- 63: Scenario: P50; P50 representative hindcast year 1984; cycle: 1; activity ID: 38; location: OFFSHORE; position: 2; safe-to-safe group: G5; baseline duration: 2.625 h; weather/operational downtime: 52.250 h; elapsed duration: 55.000 h.
- 64: Scenario: P50; P50 representative hindcast year 1984; cycle: 1; activity ID: 39; location: OFFSHORE; position: 2; safe-to-safe group: G5; baseline duration: 2.250 h; weather/operational downtime: 0.000 h; elapsed duration: 2.250 h.
- 65: Scenario: P50; P50 representative hindcast year 1984; cycle: 1; activity ID: 40; location: OFFSHORE; position: 2; safe-to-safe group: none; baseline duration: 1.500 h; weather/operational downtime: 0.000 h; elapsed duration: 1.500 h.
- 66: Scenario: P50; P50 representative hindcast year 1984; cycle: 1; activity ID: 41; location: OFFSHORE; position: 2; safe-to-safe group: none; baseline duration: 1.500 h; weather/operational downtime: 0.000 h; elapsed duration: 1.500 h.
- 67: Scenario: P50; P50 representative hindcast year 1984; cycle: 1; activity ID: 42; location: OFFSHORE; position: 2; safe-to-safe group: none; baseline duration: 4.500 h; weather/operational downtime: 0.000 h; elapsed duration: 4.500 h.
- 68: Scenario: P50; P50 representative hindcast year 1984; cycle: 1; activity ID: 43; location: OFFSHORE; position: 2; safe-to-safe group: none; baseline duration: 3.000 h; weather/operational downtime: 0.000 h; elapsed duration: 3.000 h.
- 69: Scenario: P50; P50 representative hindcast year 1984; cycle: 1; activity ID: 44; location: OFFSHORE; position: 2; safe-to-safe group: none; baseline duration: 2.000 h; weather/operational downtime: 11.500 h; elapsed duration: 13.500 h.
- 70: Scenario: P50; P50 representative hindcast year 1984; cycle: 1; activity ID: 45; location: OFFSHORE; position: n/a; safe-to-safe group: none; baseline duration: 5.200 h; weather/operational downtime: 0.000 h; elapsed duration: 5.250 h.

| ID | WBS | Task | Type | Duration | Start | Finish | Predecessors | Duration WDT [days] | Location | Activity ID | Position | Safe-to-safe group |
| --- | --- | --- | --- | --- | --- | --- | --- | --- | --- | --- | --- | --- |
| 71 | 2 | **Cycle 02 — Positions 3–4** |  | 160.4eh | 2030-04-15 23:15 | 2030-04-28 01:45 |  | 5.354167 |  |  |  |  |
| 72 | 2.1 | Port maneuvering | manual | 1eh | 2030-04-15 23:15 | 2030-04-16 00:15 | 70 | 0.000000 | OFFSHORE | 1 |  |  |
| 73 | 2.2 | Preload and jacking up at port | manual | 2eh | 2030-04-16 00:15 | 2030-04-16 02:15 | 72 | 0.000000 | OFFSHORE | 2 |  |  |
| 74 | 2.3 | Release crane, gangway etc and prep for lifting | manual | 3eh | 2030-04-16 02:15 | 2030-04-16 05:15 | 73 | 0.000000 | OFFSHORE | 3 |  |  |
| 75 | 2.4 | Load in/out WTG supplier equipment | manual | 1.5eh | 2030-04-16 05:15 | 2030-04-16 06:45 | 74 | 0.000000 | OFFSHORE | 4 |  |  |
| 76 | 2.5 | Loadout Nacelle #1 | manual | 3.38eh | 2030-04-16 06:45 | 2030-04-16 10:15 | 75 | 0.000000 | OFFSHORE | 5 |  |  |
| 77 | 2.6 | Loadout Tower #1 | manual | 3.38eh | 2030-04-16 10:15 | 2030-04-16 13:45 | 76 | 0.000000 | OFFSHORE | 6 |  |  |
| 78 | 2.7 | Loadout Blade 1 | manual | 2.25eh | 2030-04-16 13:45 | 2030-04-16 16:00 | 77 | 0.000000 | OFFSHORE | 7 |  |  |
| 79 | 2.8 | Loadout Blade 2 | manual | 2.25eh | 2030-04-16 16:00 | 2030-04-16 18:15 | 78 | 0.000000 | OFFSHORE | 8 |  |  |
| 80 | 2.9 | Loadout Blade 3 | manual | 2.25eh | 2030-04-16 18:15 | 2030-04-16 20:30 | 79 | 0.000000 | OFFSHORE | 9 |  |  |
| 81 | 2.10 | Load in/out WTG supplier equipment | manual | 1.5eh | 2030-04-16 20:30 | 2030-04-16 22:00 | 80 | 0.000000 | OFFSHORE | 10 |  |  |
| 82 | 2.11 | Loadout Nacelle #2 | manual | 3.38eh | 2030-04-16 22:00 | 2030-04-17 01:30 | 81 | 0.000000 | OFFSHORE | 11 |  |  |
| 83 | 2.12 | Loadout Tower #2 | manual | 3.38eh | 2030-04-17 01:30 | 2030-04-17 05:00 | 82 | 0.000000 | OFFSHORE | 12 |  |  |
| 84 | 2.13 | Loadout Blade 1 | manual | 2.25eh | 2030-04-17 05:00 | 2030-04-17 07:15 | 83 | 0.000000 | OFFSHORE | 13 |  |  |
| 85 | 2.14 | Loadout Blade 2 | manual | 2.25eh | 2030-04-17 07:15 | 2030-04-17 09:30 | 84 | 0.000000 | OFFSHORE | 14 |  |  |
| 86 | 2.15 | Loadout Blade 3 | manual | 2.25eh | 2030-04-17 09:30 | 2030-04-17 11:45 | 85 | 0.000000 | OFFSHORE | 15 |  |  |
| 87 | 2.16 | Secure of crane, gangway (at port)) | manual | 3eh | 2030-04-17 11:45 | 2030-04-17 14:45 | 86 | 0.000000 | OFFSHORE | 16 |  |  |
| 88 | 2.17 | Jacking down at port | manual | 2eh | 2030-04-17 14:45 | 2030-04-17 16:45 | 87 | 0.000000 | OFFSHORE | 17 |  |  |
| 89 | 2.18 | Port maneuvering | manual | 1eh | 2030-04-17 16:45 | 2030-04-17 17:45 | 88 | 0.000000 | OFFSHORE | 18 |  |  |
| 90 | 2.19 | Transit from port to site | manual | 5.2eh | 2030-04-17 17:45 | 2030-04-17 23:00 | 89 | 0.000000 | OFFSHORE | 19 |  |  |
| 91 | 2.20 | DP field check | manual | 0.5eh | 2030-04-17 23:00 | 2030-04-17 23:30 | 90 | 0.000000 | OFFSHORE | 20 |  |  |
| 92 | 2.21 | Transit to next foundation | manual | 1eh | 2030-04-17 23:30 | 2030-04-18 00:30 | 91 | 0.000000 | OFFSHORE | 21 | 3 |  |
| 93 | 2.22 | Positioning at WTG location | manual | 1eh | 2030-04-18 00:30 | 2030-04-18 01:30 | 92 | 0.000000 | OFFSHORE | 22 | 3 |  |
| 94 | 2.23 | Preload and jacking up at site | manual | 4eh | 2030-04-18 01:30 | 2030-04-18 05:30 | 93 | 0.000000 | OFFSHORE | 23 | 3 |  |
| 95 | 2.24 | Release crane, gangway and prep for lifting | manual | 3eh | 2030-04-18 05:30 | 2030-04-18 08:30 | 94 | 0.000000 | OFFSHORE | 24 | 3 |  |
| 96 | 2.25 | Remove TP cover and Preparation of TP | manual | 1.5eh | 2030-04-18 08:30 | 2030-04-18 10:00 | 95 | 0.000000 | OFFSHORE | 25 | 3 |  |
| 97 | 2.26 | Tower preparation, removal of seafastening bolts | manual | 3eh | 2030-04-18 10:00 | 2030-04-18 13:00 | 96 | 0.000000 | OFFSHORE | 26 | 3 |  |
| 98 | 2.27 | Tower rigging-up (attached lifting equipment) | manual | 1.5eh | 2030-04-18 13:00 | 2030-04-18 14:30 | 97 | 0.000000 | OFFSHORE | 27 | 3 | G1 |
| 99 | 2.28 | Tower Lifting (safe-to-safe) | manual | 5.25eh | 2030-04-18 14:30 | 2030-04-18 19:45 | 98 | 0.000000 | OFFSHORE | 28 | 3 | G1 |
| 100 | 2.29 | Tower derigging (remove lifting equipment) | manual | 0.75eh | 2030-04-18 19:45 | 2030-04-18 20:30 | 99 | 0.000000 | OFFSHORE | 29 | 3 | G1 |
| 101 | 2.30 | Nacelle preparation and rigging | manual | 0.75eh | 2030-04-18 20:30 | 2030-04-18 21:15 | 100 | 0.000000 | OFFSHORE | 30 | 3 | G2 |
| 102 | 2.31 | Nacelle Lifting (safe-to-safe) | manual | 3.38eh | 2030-04-18 21:15 | 2030-04-19 00:45 | 101 | 0.000000 | OFFSHORE | 31 | 3 | G2 |
| 103 | 2.32 | Nacelle derigging (remove lifting equipment) | manual | 0.75eh | 2030-04-19 00:45 | 2030-04-19 01:30 | 102 | 0.000000 | OFFSHORE | 32 | 3 | G2 |
| 104 | 2.33 | Blade yoke rigging and attachement to Blade #1 | manual | 0.75eh | 2030-04-19 01:30 | 2030-04-20 03:45 | 103 | 1.062500 | OFFSHORE | 33 | 3 | G3 |
| 105 | 2.34 | Blade #1 Lifting (safe-to-safe) | manual | 2.62eh | 2030-04-20 03:45 | 2030-04-20 06:30 | 104 | 0.000000 | OFFSHORE | 34 | 3 | G3 |
| 106 | 2.35 | Blade #1 completion work, re-locate blade yoke to next blade | manual | 2.25eh | 2030-04-20 06:30 | 2030-04-20 08:45 | 105 | 0.000000 | OFFSHORE | 35 | 3 | G3 |
| 107 | 2.36 | Blade #2 Lifting (safe-to-safe) | manual | 2.62eh | 2030-04-20 08:45 | 2030-04-20 11:30 | 106 | 0.000000 | OFFSHORE | 36 | 3 | G4 |
| 108 | 2.37 | Balde #2 completion work, re-locate blade yoke to next blade | manual | 2.25eh | 2030-04-20 11:30 | 2030-04-20 13:45 | 107 | 0.000000 | OFFSHORE | 37 | 3 | G4 |
| 109 | 2.38 | Blade #3 Lifting (safe-to-safe) | manual | 2.62eh | 2030-04-20 13:45 | 2030-04-20 16:30 | 108 | 0.000000 | OFFSHORE | 38 | 3 | G5 |
| 110 | 2.39 | Blade #3 completion work, blade yoke de-rigging | manual | 2.25eh | 2030-04-20 16:30 | 2030-04-20 18:45 | 109 | 0.000000 | OFFSHORE | 39 | 3 | G5 |
| 111 | 2.40 | Handling HSBM and lifting tools | manual | 1.5eh | 2030-04-20 18:45 | 2030-04-20 20:15 | 110 | 0.000000 | OFFSHORE | 40 | 3 |  |
| 112 | 2.41 | Lifting HSBM and lifting tools from Nacelle | manual | 1.5eh | 2030-04-20 20:15 | 2030-04-20 21:45 | 111 | 0.000000 | OFFSHORE | 41 | 3 |  |
| 113 | 2.42 | Turbine general completion works | manual | 4.5eh | 2030-04-20 21:45 | 2030-04-21 02:15 | 112 | 0.000000 | OFFSHORE | 42 | 3 |  |
| 114 | 2.43 | Secure of crane, gangway etc. Preparation for jacking down and sailing | manual | 3eh | 2030-04-21 02:15 | 2030-04-21 05:15 | 113 | 0.000000 | OFFSHORE | 43 | 3 |  |
| 115 | 2.44 | Jacking down at site | manual | 2eh | 2030-04-21 05:15 | 2030-04-24 15:00 | 114 | 3.322917 | OFFSHORE | 44 | 3 |  |
| 116 | 2.45 | Transit to next foundation | manual | 1eh | 2030-04-24 15:00 | 2030-04-24 16:00 | 115 | 0.000000 | OFFSHORE | 21 | 4 |  |
| 117 | 2.46 | Positioning at WTG location | manual | 1eh | 2030-04-24 16:00 | 2030-04-24 17:00 | 116 | 0.000000 | OFFSHORE | 22 | 4 |  |
| 118 | 2.47 | Preload and jacking up at site | manual | 4eh | 2030-04-24 17:00 | 2030-04-25 00:00 | 117 | 0.125000 | OFFSHORE | 23 | 4 |  |
| 119 | 2.48 | Release crane, gangway and prep for lifting | manual | 3eh | 2030-04-25 00:00 | 2030-04-25 03:00 | 118 | 0.000000 | OFFSHORE | 24 | 4 |  |
| 120 | 2.49 | Remove TP cover and Preparation of TP | manual | 1.5eh | 2030-04-25 03:00 | 2030-04-25 04:30 | 119 | 0.000000 | OFFSHORE | 25 | 4 |  |
| 121 | 2.50 | Tower preparation, removal of seafastening bolts | manual | 3eh | 2030-04-25 04:30 | 2030-04-25 07:30 | 120 | 0.000000 | OFFSHORE | 26 | 4 |  |
| 122 | 2.51 | Tower rigging-up (attached lifting equipment) | manual | 1.5eh | 2030-04-25 07:30 | 2030-04-25 09:00 | 121 | 0.000000 | OFFSHORE | 27 | 4 | G1 |
| 123 | 2.52 | Tower Lifting (safe-to-safe) | manual | 5.25eh | 2030-04-25 09:00 | 2030-04-25 14:15 | 122 | 0.000000 | OFFSHORE | 28 | 4 | G1 |
| 124 | 2.53 | Tower derigging (remove lifting equipment) | manual | 0.75eh | 2030-04-25 14:15 | 2030-04-25 15:00 | 123 | 0.000000 | OFFSHORE | 29 | 4 | G1 |
| 125 | 2.54 | Nacelle preparation and rigging | manual | 0.75eh | 2030-04-25 15:00 | 2030-04-25 15:45 | 124 | 0.000000 | OFFSHORE | 30 | 4 | G2 |
| 126 | 2.55 | Nacelle Lifting (safe-to-safe) | manual | 3.38eh | 2030-04-25 15:45 | 2030-04-25 19:15 | 125 | 0.000000 | OFFSHORE | 31 | 4 | G2 |
| 127 | 2.56 | Nacelle derigging (remove lifting equipment) | manual | 0.75eh | 2030-04-25 19:15 | 2030-04-25 20:00 | 126 | 0.000000 | OFFSHORE | 32 | 4 | G2 |
| 128 | 2.57 | Blade yoke rigging and attachement to Blade #1 | manual | 0.75eh | 2030-04-25 20:00 | 2030-04-25 20:45 | 127 | 0.000000 | OFFSHORE | 33 | 4 | G3 |
| 129 | 2.58 | Blade #1 Lifting (safe-to-safe) | manual | 2.62eh | 2030-04-25 20:45 | 2030-04-25 23:30 | 128 | 0.000000 | OFFSHORE | 34 | 4 | G3 |
| 130 | 2.59 | Blade #1 completion work, re-locate blade yoke to next blade | manual | 2.25eh | 2030-04-25 23:30 | 2030-04-26 01:45 | 129 | 0.000000 | OFFSHORE | 35 | 4 | G3 |
| 131 | 2.60 | Blade #2 Lifting (safe-to-safe) | manual | 2.62eh | 2030-04-26 01:45 | 2030-04-26 20:45 | 130 | 0.677083 | OFFSHORE | 36 | 4 | G4 |
| 132 | 2.61 | Balde #2 completion work, re-locate blade yoke to next blade | manual | 2.25eh | 2030-04-26 20:45 | 2030-04-26 23:00 | 131 | 0.000000 | OFFSHORE | 37 | 4 | G4 |
| 133 | 2.62 | Blade #3 Lifting (safe-to-safe) | manual | 2.62eh | 2030-04-26 23:00 | 2030-04-27 05:45 | 132 | 0.166667 | OFFSHORE | 38 | 4 | G5 |
| 134 | 2.63 | Blade #3 completion work, blade yoke de-rigging | manual | 2.25eh | 2030-04-27 05:45 | 2030-04-27 08:00 | 133 | 0.000000 | OFFSHORE | 39 | 4 | G5 |
| 135 | 2.64 | Handling HSBM and lifting tools | manual | 1.5eh | 2030-04-27 08:00 | 2030-04-27 09:30 | 134 | 0.000000 | OFFSHORE | 40 | 4 |  |
| 136 | 2.65 | Lifting HSBM and lifting tools from Nacelle | manual | 1.5eh | 2030-04-27 09:30 | 2030-04-27 11:00 | 135 | 0.000000 | OFFSHORE | 41 | 4 |  |
| 137 | 2.66 | Turbine general completion works | manual | 4.5eh | 2030-04-27 11:00 | 2030-04-27 15:30 | 136 | 0.000000 | OFFSHORE | 42 | 4 |  |
| 138 | 2.67 | Secure of crane, gangway etc. Preparation for jacking down and sailing | manual | 3eh | 2030-04-27 15:30 | 2030-04-27 18:30 | 137 | 0.000000 | OFFSHORE | 43 | 4 |  |
| 139 | 2.68 | Jacking down at site | manual | 2eh | 2030-04-27 18:30 | 2030-04-27 20:30 | 138 | 0.000000 | OFFSHORE | 44 | 4 |  |
| 140 | 2.69 | Transit from site to port | manual | 5.2eh | 2030-04-27 20:30 | 2030-04-28 01:45 | 139 | 0.000000 | OFFSHORE | 45 |  |  |

Notes:
- 71: P50 representative hindcast year 1984; cycle 2; baseline duration 6.683 days; downtime 5.354 days; elapsed duration 12.104 days.
- 72: Scenario: P50; P50 representative hindcast year 1984; cycle: 2; activity ID: 1; location: OFFSHORE; position: n/a; safe-to-safe group: none; baseline duration: 1.000 h; weather/operational downtime: 0.000 h; elapsed duration: 1.000 h.
- 73: Scenario: P50; P50 representative hindcast year 1984; cycle: 2; activity ID: 2; location: OFFSHORE; position: n/a; safe-to-safe group: none; baseline duration: 2.000 h; weather/operational downtime: 0.000 h; elapsed duration: 2.000 h.
- 74: Scenario: P50; P50 representative hindcast year 1984; cycle: 2; activity ID: 3; location: OFFSHORE; position: n/a; safe-to-safe group: none; baseline duration: 3.000 h; weather/operational downtime: 0.000 h; elapsed duration: 3.000 h.
- 75: Scenario: P50; P50 representative hindcast year 1984; cycle: 2; activity ID: 4; location: OFFSHORE; position: n/a; safe-to-safe group: none; baseline duration: 1.500 h; weather/operational downtime: 0.000 h; elapsed duration: 1.500 h.
- 76: Scenario: P50; P50 representative hindcast year 1984; cycle: 2; activity ID: 5; location: OFFSHORE; position: n/a; safe-to-safe group: none; baseline duration: 3.375 h; weather/operational downtime: 0.000 h; elapsed duration: 3.500 h.
- 77: Scenario: P50; P50 representative hindcast year 1984; cycle: 2; activity ID: 6; location: OFFSHORE; position: n/a; safe-to-safe group: none; baseline duration: 3.375 h; weather/operational downtime: 0.000 h; elapsed duration: 3.500 h.
- 78: Scenario: P50; P50 representative hindcast year 1984; cycle: 2; activity ID: 7; location: OFFSHORE; position: n/a; safe-to-safe group: none; baseline duration: 2.250 h; weather/operational downtime: 0.000 h; elapsed duration: 2.250 h.
- 79: Scenario: P50; P50 representative hindcast year 1984; cycle: 2; activity ID: 8; location: OFFSHORE; position: n/a; safe-to-safe group: none; baseline duration: 2.250 h; weather/operational downtime: 0.000 h; elapsed duration: 2.250 h.
- 80: Scenario: P50; P50 representative hindcast year 1984; cycle: 2; activity ID: 9; location: OFFSHORE; position: n/a; safe-to-safe group: none; baseline duration: 2.250 h; weather/operational downtime: 0.000 h; elapsed duration: 2.250 h.
- 81: Scenario: P50; P50 representative hindcast year 1984; cycle: 2; activity ID: 10; location: OFFSHORE; position: n/a; safe-to-safe group: none; baseline duration: 1.500 h; weather/operational downtime: 0.000 h; elapsed duration: 1.500 h.
- 82: Scenario: P50; P50 representative hindcast year 1984; cycle: 2; activity ID: 11; location: OFFSHORE; position: n/a; safe-to-safe group: none; baseline duration: 3.375 h; weather/operational downtime: 0.000 h; elapsed duration: 3.500 h.
- 83: Scenario: P50; P50 representative hindcast year 1984; cycle: 2; activity ID: 12; location: OFFSHORE; position: n/a; safe-to-safe group: none; baseline duration: 3.375 h; weather/operational downtime: 0.000 h; elapsed duration: 3.500 h.
- 84: Scenario: P50; P50 representative hindcast year 1984; cycle: 2; activity ID: 13; location: OFFSHORE; position: n/a; safe-to-safe group: none; baseline duration: 2.250 h; weather/operational downtime: 0.000 h; elapsed duration: 2.250 h.
- 85: Scenario: P50; P50 representative hindcast year 1984; cycle: 2; activity ID: 14; location: OFFSHORE; position: n/a; safe-to-safe group: none; baseline duration: 2.250 h; weather/operational downtime: 0.000 h; elapsed duration: 2.250 h.
- 86: Scenario: P50; P50 representative hindcast year 1984; cycle: 2; activity ID: 15; location: OFFSHORE; position: n/a; safe-to-safe group: none; baseline duration: 2.250 h; weather/operational downtime: 0.000 h; elapsed duration: 2.250 h.
- 87: Scenario: P50; P50 representative hindcast year 1984; cycle: 2; activity ID: 16; location: OFFSHORE; position: n/a; safe-to-safe group: none; baseline duration: 3.000 h; weather/operational downtime: 0.000 h; elapsed duration: 3.000 h.
- 88: Scenario: P50; P50 representative hindcast year 1984; cycle: 2; activity ID: 17; location: OFFSHORE; position: n/a; safe-to-safe group: none; baseline duration: 2.000 h; weather/operational downtime: 0.000 h; elapsed duration: 2.000 h.
- 89: Scenario: P50; P50 representative hindcast year 1984; cycle: 2; activity ID: 18; location: OFFSHORE; position: n/a; safe-to-safe group: none; baseline duration: 1.000 h; weather/operational downtime: 0.000 h; elapsed duration: 1.000 h.
- 90: Scenario: P50; P50 representative hindcast year 1984; cycle: 2; activity ID: 19; location: OFFSHORE; position: n/a; safe-to-safe group: none; baseline duration: 5.200 h; weather/operational downtime: 0.000 h; elapsed duration: 5.250 h.
- 91: Scenario: P50; P50 representative hindcast year 1984; cycle: 2; activity ID: 20; location: OFFSHORE; position: n/a; safe-to-safe group: none; baseline duration: 0.500 h; weather/operational downtime: 0.000 h; elapsed duration: 0.500 h.
- 92: Scenario: P50; P50 representative hindcast year 1984; cycle: 2; activity ID: 21; location: OFFSHORE; position: 3; safe-to-safe group: none; baseline duration: 1.000 h; weather/operational downtime: 0.000 h; elapsed duration: 1.000 h.
- 93: Scenario: P50; P50 representative hindcast year 1984; cycle: 2; activity ID: 22; location: OFFSHORE; position: 3; safe-to-safe group: none; baseline duration: 1.000 h; weather/operational downtime: 0.000 h; elapsed duration: 1.000 h.
- 94: Scenario: P50; P50 representative hindcast year 1984; cycle: 2; activity ID: 23; location: OFFSHORE; position: 3; safe-to-safe group: none; baseline duration: 4.000 h; weather/operational downtime: 0.000 h; elapsed duration: 4.000 h.
- 95: Scenario: P50; P50 representative hindcast year 1984; cycle: 2; activity ID: 24; location: OFFSHORE; position: 3; safe-to-safe group: none; baseline duration: 3.000 h; weather/operational downtime: 0.000 h; elapsed duration: 3.000 h.
- 96: Scenario: P50; P50 representative hindcast year 1984; cycle: 2; activity ID: 25; location: OFFSHORE; position: 3; safe-to-safe group: none; baseline duration: 1.500 h; weather/operational downtime: 0.000 h; elapsed duration: 1.500 h.
- 97: Scenario: P50; P50 representative hindcast year 1984; cycle: 2; activity ID: 26; location: OFFSHORE; position: 3; safe-to-safe group: none; baseline duration: 3.000 h; weather/operational downtime: 0.000 h; elapsed duration: 3.000 h.
- 98: Scenario: P50; P50 representative hindcast year 1984; cycle: 2; activity ID: 27; location: OFFSHORE; position: 3; safe-to-safe group: G1; baseline duration: 1.500 h; weather/operational downtime: 0.000 h; elapsed duration: 1.500 h.
- 99: Scenario: P50; P50 representative hindcast year 1984; cycle: 2; activity ID: 28; location: OFFSHORE; position: 3; safe-to-safe group: G1; baseline duration: 5.250 h; weather/operational downtime: 0.000 h; elapsed duration: 5.250 h.
- 100: Scenario: P50; P50 representative hindcast year 1984; cycle: 2; activity ID: 29; location: OFFSHORE; position: 3; safe-to-safe group: G1; baseline duration: 0.750 h; weather/operational downtime: 0.000 h; elapsed duration: 0.750 h.
- 101: Scenario: P50; P50 representative hindcast year 1984; cycle: 2; activity ID: 30; location: OFFSHORE; position: 3; safe-to-safe group: G2; baseline duration: 0.750 h; weather/operational downtime: 0.000 h; elapsed duration: 0.750 h.
- 102: Scenario: P50; P50 representative hindcast year 1984; cycle: 2; activity ID: 31; location: OFFSHORE; position: 3; safe-to-safe group: G2; baseline duration: 3.375 h; weather/operational downtime: 0.000 h; elapsed duration: 3.500 h.
- 103: Scenario: P50; P50 representative hindcast year 1984; cycle: 2; activity ID: 32; location: OFFSHORE; position: 3; safe-to-safe group: G2; baseline duration: 0.750 h; weather/operational downtime: 0.000 h; elapsed duration: 0.750 h.
- 104: Scenario: P50; P50 representative hindcast year 1984; cycle: 2; activity ID: 33; location: OFFSHORE; position: 3; safe-to-safe group: G3; baseline duration: 0.750 h; weather/operational downtime: 25.500 h; elapsed duration: 26.250 h.
- 105: Scenario: P50; P50 representative hindcast year 1984; cycle: 2; activity ID: 34; location: OFFSHORE; position: 3; safe-to-safe group: G3; baseline duration: 2.625 h; weather/operational downtime: 0.000 h; elapsed duration: 2.750 h.
- 106: Scenario: P50; P50 representative hindcast year 1984; cycle: 2; activity ID: 35; location: OFFSHORE; position: 3; safe-to-safe group: G3; baseline duration: 2.250 h; weather/operational downtime: 0.000 h; elapsed duration: 2.250 h.
- 107: Scenario: P50; P50 representative hindcast year 1984; cycle: 2; activity ID: 36; location: OFFSHORE; position: 3; safe-to-safe group: G4; baseline duration: 2.625 h; weather/operational downtime: 0.000 h; elapsed duration: 2.750 h.
- 108: Scenario: P50; P50 representative hindcast year 1984; cycle: 2; activity ID: 37; location: OFFSHORE; position: 3; safe-to-safe group: G4; baseline duration: 2.250 h; weather/operational downtime: 0.000 h; elapsed duration: 2.250 h.
- 109: Scenario: P50; P50 representative hindcast year 1984; cycle: 2; activity ID: 38; location: OFFSHORE; position: 3; safe-to-safe group: G5; baseline duration: 2.625 h; weather/operational downtime: 0.000 h; elapsed duration: 2.750 h.
- 110: Scenario: P50; P50 representative hindcast year 1984; cycle: 2; activity ID: 39; location: OFFSHORE; position: 3; safe-to-safe group: G5; baseline duration: 2.250 h; weather/operational downtime: 0.000 h; elapsed duration: 2.250 h.
- 111: Scenario: P50; P50 representative hindcast year 1984; cycle: 2; activity ID: 40; location: OFFSHORE; position: 3; safe-to-safe group: none; baseline duration: 1.500 h; weather/operational downtime: 0.000 h; elapsed duration: 1.500 h.
- 112: Scenario: P50; P50 representative hindcast year 1984; cycle: 2; activity ID: 41; location: OFFSHORE; position: 3; safe-to-safe group: none; baseline duration: 1.500 h; weather/operational downtime: 0.000 h; elapsed duration: 1.500 h.
- 113: Scenario: P50; P50 representative hindcast year 1984; cycle: 2; activity ID: 42; location: OFFSHORE; position: 3; safe-to-safe group: none; baseline duration: 4.500 h; weather/operational downtime: 0.000 h; elapsed duration: 4.500 h.
- 114: Scenario: P50; P50 representative hindcast year 1984; cycle: 2; activity ID: 43; location: OFFSHORE; position: 3; safe-to-safe group: none; baseline duration: 3.000 h; weather/operational downtime: 0.000 h; elapsed duration: 3.000 h.
- 115: Scenario: P50; P50 representative hindcast year 1984; cycle: 2; activity ID: 44; location: OFFSHORE; position: 3; safe-to-safe group: none; baseline duration: 2.000 h; weather/operational downtime: 79.750 h; elapsed duration: 81.750 h.
- 116: Scenario: P50; P50 representative hindcast year 1984; cycle: 2; activity ID: 21; location: OFFSHORE; position: 4; safe-to-safe group: none; baseline duration: 1.000 h; weather/operational downtime: 0.000 h; elapsed duration: 1.000 h.
- 117: Scenario: P50; P50 representative hindcast year 1984; cycle: 2; activity ID: 22; location: OFFSHORE; position: 4; safe-to-safe group: none; baseline duration: 1.000 h; weather/operational downtime: 0.000 h; elapsed duration: 1.000 h.
- 118: Scenario: P50; P50 representative hindcast year 1984; cycle: 2; activity ID: 23; location: OFFSHORE; position: 4; safe-to-safe group: none; baseline duration: 4.000 h; weather/operational downtime: 3.000 h; elapsed duration: 7.000 h.
- 119: Scenario: P50; P50 representative hindcast year 1984; cycle: 2; activity ID: 24; location: OFFSHORE; position: 4; safe-to-safe group: none; baseline duration: 3.000 h; weather/operational downtime: 0.000 h; elapsed duration: 3.000 h.
- 120: Scenario: P50; P50 representative hindcast year 1984; cycle: 2; activity ID: 25; location: OFFSHORE; position: 4; safe-to-safe group: none; baseline duration: 1.500 h; weather/operational downtime: 0.000 h; elapsed duration: 1.500 h.
- 121: Scenario: P50; P50 representative hindcast year 1984; cycle: 2; activity ID: 26; location: OFFSHORE; position: 4; safe-to-safe group: none; baseline duration: 3.000 h; weather/operational downtime: 0.000 h; elapsed duration: 3.000 h.
- 122: Scenario: P50; P50 representative hindcast year 1984; cycle: 2; activity ID: 27; location: OFFSHORE; position: 4; safe-to-safe group: G1; baseline duration: 1.500 h; weather/operational downtime: 0.000 h; elapsed duration: 1.500 h.
- 123: Scenario: P50; P50 representative hindcast year 1984; cycle: 2; activity ID: 28; location: OFFSHORE; position: 4; safe-to-safe group: G1; baseline duration: 5.250 h; weather/operational downtime: 0.000 h; elapsed duration: 5.250 h.
- 124: Scenario: P50; P50 representative hindcast year 1984; cycle: 2; activity ID: 29; location: OFFSHORE; position: 4; safe-to-safe group: G1; baseline duration: 0.750 h; weather/operational downtime: 0.000 h; elapsed duration: 0.750 h.
- 125: Scenario: P50; P50 representative hindcast year 1984; cycle: 2; activity ID: 30; location: OFFSHORE; position: 4; safe-to-safe group: G2; baseline duration: 0.750 h; weather/operational downtime: 0.000 h; elapsed duration: 0.750 h.
- 126: Scenario: P50; P50 representative hindcast year 1984; cycle: 2; activity ID: 31; location: OFFSHORE; position: 4; safe-to-safe group: G2; baseline duration: 3.375 h; weather/operational downtime: 0.000 h; elapsed duration: 3.500 h.
- 127: Scenario: P50; P50 representative hindcast year 1984; cycle: 2; activity ID: 32; location: OFFSHORE; position: 4; safe-to-safe group: G2; baseline duration: 0.750 h; weather/operational downtime: 0.000 h; elapsed duration: 0.750 h.
- 128: Scenario: P50; P50 representative hindcast year 1984; cycle: 2; activity ID: 33; location: OFFSHORE; position: 4; safe-to-safe group: G3; baseline duration: 0.750 h; weather/operational downtime: 0.000 h; elapsed duration: 0.750 h.
- 129: Scenario: P50; P50 representative hindcast year 1984; cycle: 2; activity ID: 34; location: OFFSHORE; position: 4; safe-to-safe group: G3; baseline duration: 2.625 h; weather/operational downtime: 0.000 h; elapsed duration: 2.750 h.
- 130: Scenario: P50; P50 representative hindcast year 1984; cycle: 2; activity ID: 35; location: OFFSHORE; position: 4; safe-to-safe group: G3; baseline duration: 2.250 h; weather/operational downtime: 0.000 h; elapsed duration: 2.250 h.
- 131: Scenario: P50; P50 representative hindcast year 1984; cycle: 2; activity ID: 36; location: OFFSHORE; position: 4; safe-to-safe group: G4; baseline duration: 2.625 h; weather/operational downtime: 16.250 h; elapsed duration: 19.000 h.
- 132: Scenario: P50; P50 representative hindcast year 1984; cycle: 2; activity ID: 37; location: OFFSHORE; position: 4; safe-to-safe group: G4; baseline duration: 2.250 h; weather/operational downtime: 0.000 h; elapsed duration: 2.250 h.
- 133: Scenario: P50; P50 representative hindcast year 1984; cycle: 2; activity ID: 38; location: OFFSHORE; position: 4; safe-to-safe group: G5; baseline duration: 2.625 h; weather/operational downtime: 4.000 h; elapsed duration: 6.750 h.
- 134: Scenario: P50; P50 representative hindcast year 1984; cycle: 2; activity ID: 39; location: OFFSHORE; position: 4; safe-to-safe group: G5; baseline duration: 2.250 h; weather/operational downtime: 0.000 h; elapsed duration: 2.250 h.
- 135: Scenario: P50; P50 representative hindcast year 1984; cycle: 2; activity ID: 40; location: OFFSHORE; position: 4; safe-to-safe group: none; baseline duration: 1.500 h; weather/operational downtime: 0.000 h; elapsed duration: 1.500 h.
- 136: Scenario: P50; P50 representative hindcast year 1984; cycle: 2; activity ID: 41; location: OFFSHORE; position: 4; safe-to-safe group: none; baseline duration: 1.500 h; weather/operational downtime: 0.000 h; elapsed duration: 1.500 h.
- 137: Scenario: P50; P50 representative hindcast year 1984; cycle: 2; activity ID: 42; location: OFFSHORE; position: 4; safe-to-safe group: none; baseline duration: 4.500 h; weather/operational downtime: 0.000 h; elapsed duration: 4.500 h.
- 138: Scenario: P50; P50 representative hindcast year 1984; cycle: 2; activity ID: 43; location: OFFSHORE; position: 4; safe-to-safe group: none; baseline duration: 3.000 h; weather/operational downtime: 0.000 h; elapsed duration: 3.000 h.
- 139: Scenario: P50; P50 representative hindcast year 1984; cycle: 2; activity ID: 44; location: OFFSHORE; position: 4; safe-to-safe group: none; baseline duration: 2.000 h; weather/operational downtime: 0.000 h; elapsed duration: 2.000 h.
- 140: Scenario: P50; P50 representative hindcast year 1984; cycle: 2; activity ID: 45; location: OFFSHORE; position: n/a; safe-to-safe group: none; baseline duration: 5.200 h; weather/operational downtime: 0.000 h; elapsed duration: 5.250 h.

| ID | WBS | Task | Type | Duration | Start | Finish | Predecessors | Duration WDT [days] | Location | Activity ID | Position | Safe-to-safe group |
| --- | --- | --- | --- | --- | --- | --- | --- | --- | --- | --- | --- | --- |
| 141 | 3 | **Cycle 03 — Positions 5–6** |  | 160.4eh | 2030-04-28 01:45 | 2030-05-11 16:15 |  | 6.854167 |  |  |  |  |
| 142 | 3.1 | Port maneuvering | manual | 1eh | 2030-04-28 01:45 | 2030-04-28 02:45 | 140 | 0.000000 | OFFSHORE | 1 |  |  |
| 143 | 3.2 | Preload and jacking up at port | manual | 2eh | 2030-04-28 02:45 | 2030-04-28 04:45 | 142 | 0.000000 | OFFSHORE | 2 |  |  |
| 144 | 3.3 | Release crane, gangway etc and prep for lifting | manual | 3eh | 2030-04-28 04:45 | 2030-04-28 07:45 | 143 | 0.000000 | OFFSHORE | 3 |  |  |
| 145 | 3.4 | Load in/out WTG supplier equipment | manual | 1.5eh | 2030-04-28 07:45 | 2030-04-28 09:15 | 144 | 0.000000 | OFFSHORE | 4 |  |  |
| 146 | 3.5 | Loadout Nacelle #1 | manual | 3.38eh | 2030-04-28 09:15 | 2030-04-28 12:45 | 145 | 0.000000 | OFFSHORE | 5 |  |  |
| 147 | 3.6 | Loadout Tower #1 | manual | 3.38eh | 2030-04-28 12:45 | 2030-05-01 01:30 | 146 | 2.385417 | OFFSHORE | 6 |  |  |
| 148 | 3.7 | Loadout Blade 1 | manual | 2.25eh | 2030-05-01 01:30 | 2030-05-01 03:45 | 147 | 0.000000 | OFFSHORE | 7 |  |  |
| 149 | 3.8 | Loadout Blade 2 | manual | 2.25eh | 2030-05-01 03:45 | 2030-05-01 06:00 | 148 | 0.000000 | OFFSHORE | 8 |  |  |
| 150 | 3.9 | Loadout Blade 3 | manual | 2.25eh | 2030-05-01 06:00 | 2030-05-01 13:15 | 149 | 0.208333 | OFFSHORE | 9 |  |  |
| 151 | 3.10 | Load in/out WTG supplier equipment | manual | 1.5eh | 2030-05-01 13:15 | 2030-05-01 14:45 | 150 | 0.000000 | OFFSHORE | 10 |  |  |
| 152 | 3.11 | Loadout Nacelle #2 | manual | 3.38eh | 2030-05-01 14:45 | 2030-05-01 18:15 | 151 | 0.000000 | OFFSHORE | 11 |  |  |
| 153 | 3.12 | Loadout Tower #2 | manual | 3.38eh | 2030-05-01 18:15 | 2030-05-01 21:45 | 152 | 0.000000 | OFFSHORE | 12 |  |  |
| 154 | 3.13 | Loadout Blade 1 | manual | 2.25eh | 2030-05-01 21:45 | 2030-05-03 17:15 | 153 | 1.718750 | OFFSHORE | 13 |  |  |
| 155 | 3.14 | Loadout Blade 2 | manual | 2.25eh | 2030-05-03 17:15 | 2030-05-03 19:30 | 154 | 0.000000 | OFFSHORE | 14 |  |  |
| 156 | 3.15 | Loadout Blade 3 | manual | 2.25eh | 2030-05-03 19:30 | 2030-05-03 21:45 | 155 | 0.000000 | OFFSHORE | 15 |  |  |
| 157 | 3.16 | Secure of crane, gangway (at port)) | manual | 3eh | 2030-05-03 21:45 | 2030-05-04 00:45 | 156 | 0.000000 | OFFSHORE | 16 |  |  |
| 158 | 3.17 | Jacking down at port | manual | 2eh | 2030-05-04 00:45 | 2030-05-04 02:45 | 157 | 0.000000 | OFFSHORE | 17 |  |  |
| 159 | 3.18 | Port maneuvering | manual | 1eh | 2030-05-04 02:45 | 2030-05-04 03:45 | 158 | 0.000000 | OFFSHORE | 18 |  |  |
| 160 | 3.19 | Transit from port to site | manual | 5.2eh | 2030-05-04 03:45 | 2030-05-04 09:00 | 159 | 0.000000 | OFFSHORE | 19 |  |  |
| 161 | 3.20 | DP field check | manual | 0.5eh | 2030-05-04 09:00 | 2030-05-04 09:30 | 160 | 0.000000 | OFFSHORE | 20 |  |  |
| 162 | 3.21 | Transit to next foundation | manual | 1eh | 2030-05-04 09:30 | 2030-05-04 10:30 | 161 | 0.000000 | OFFSHORE | 21 | 5 |  |
| 163 | 3.22 | Positioning at WTG location | manual | 1eh | 2030-05-04 10:30 | 2030-05-04 11:30 | 162 | 0.000000 | OFFSHORE | 22 | 5 |  |
| 164 | 3.23 | Preload and jacking up at site | manual | 4eh | 2030-05-04 11:30 | 2030-05-04 15:30 | 163 | 0.000000 | OFFSHORE | 23 | 5 |  |
| 165 | 3.24 | Release crane, gangway and prep for lifting | manual | 3eh | 2030-05-04 15:30 | 2030-05-04 18:30 | 164 | 0.000000 | OFFSHORE | 24 | 5 |  |
| 166 | 3.25 | Remove TP cover and Preparation of TP | manual | 1.5eh | 2030-05-04 18:30 | 2030-05-04 20:00 | 165 | 0.000000 | OFFSHORE | 25 | 5 |  |
| 167 | 3.26 | Tower preparation, removal of seafastening bolts | manual | 3eh | 2030-05-04 20:00 | 2030-05-04 23:00 | 166 | 0.000000 | OFFSHORE | 26 | 5 |  |
| 168 | 3.27 | Tower rigging-up (attached lifting equipment) | manual | 1.5eh | 2030-05-04 23:00 | 2030-05-07 13:30 | 167 | 2.541667 | OFFSHORE | 27 | 5 | G1 |
| 169 | 3.28 | Tower Lifting (safe-to-safe) | manual | 5.25eh | 2030-05-07 13:30 | 2030-05-07 18:45 | 168 | 0.000000 | OFFSHORE | 28 | 5 | G1 |
| 170 | 3.29 | Tower derigging (remove lifting equipment) | manual | 0.75eh | 2030-05-07 18:45 | 2030-05-07 19:30 | 169 | 0.000000 | OFFSHORE | 29 | 5 | G1 |
| 171 | 3.30 | Nacelle preparation and rigging | manual | 0.75eh | 2030-05-07 19:30 | 2030-05-07 20:15 | 170 | 0.000000 | OFFSHORE | 30 | 5 | G2 |
| 172 | 3.31 | Nacelle Lifting (safe-to-safe) | manual | 3.38eh | 2030-05-07 20:15 | 2030-05-07 23:45 | 171 | 0.000000 | OFFSHORE | 31 | 5 | G2 |
| 173 | 3.32 | Nacelle derigging (remove lifting equipment) | manual | 0.75eh | 2030-05-07 23:45 | 2030-05-08 00:30 | 172 | 0.000000 | OFFSHORE | 32 | 5 | G2 |
| 174 | 3.33 | Blade yoke rigging and attachement to Blade #1 | manual | 0.75eh | 2030-05-08 00:30 | 2030-05-08 01:15 | 173 | 0.000000 | OFFSHORE | 33 | 5 | G3 |
| 175 | 3.34 | Blade #1 Lifting (safe-to-safe) | manual | 2.62eh | 2030-05-08 01:15 | 2030-05-08 04:00 | 174 | 0.000000 | OFFSHORE | 34 | 5 | G3 |
| 176 | 3.35 | Blade #1 completion work, re-locate blade yoke to next blade | manual | 2.25eh | 2030-05-08 04:00 | 2030-05-08 06:15 | 175 | 0.000000 | OFFSHORE | 35 | 5 | G3 |
| 177 | 3.36 | Blade #2 Lifting (safe-to-safe) | manual | 2.62eh | 2030-05-08 06:15 | 2030-05-08 09:00 | 176 | 0.000000 | OFFSHORE | 36 | 5 | G4 |
| 178 | 3.37 | Balde #2 completion work, re-locate blade yoke to next blade | manual | 2.25eh | 2030-05-08 09:00 | 2030-05-08 11:15 | 177 | 0.000000 | OFFSHORE | 37 | 5 | G4 |
| 179 | 3.38 | Blade #3 Lifting (safe-to-safe) | manual | 2.62eh | 2030-05-08 11:15 | 2030-05-08 14:00 | 178 | 0.000000 | OFFSHORE | 38 | 5 | G5 |
| 180 | 3.39 | Blade #3 completion work, blade yoke de-rigging | manual | 2.25eh | 2030-05-08 14:00 | 2030-05-08 16:15 | 179 | 0.000000 | OFFSHORE | 39 | 5 | G5 |
| 181 | 3.40 | Handling HSBM and lifting tools | manual | 1.5eh | 2030-05-08 16:15 | 2030-05-08 17:45 | 180 | 0.000000 | OFFSHORE | 40 | 5 |  |
| 182 | 3.41 | Lifting HSBM and lifting tools from Nacelle | manual | 1.5eh | 2030-05-08 17:45 | 2030-05-08 19:15 | 181 | 0.000000 | OFFSHORE | 41 | 5 |  |
| 183 | 3.42 | Turbine general completion works | manual | 4.5eh | 2030-05-08 19:15 | 2030-05-08 23:45 | 182 | 0.000000 | OFFSHORE | 42 | 5 |  |
| 184 | 3.43 | Secure of crane, gangway etc. Preparation for jacking down and sailing | manual | 3eh | 2030-05-08 23:45 | 2030-05-09 02:45 | 183 | 0.000000 | OFFSHORE | 43 | 5 |  |
| 185 | 3.44 | Jacking down at site | manual | 2eh | 2030-05-09 02:45 | 2030-05-09 04:45 | 184 | 0.000000 | OFFSHORE | 44 | 5 |  |
| 186 | 3.45 | Transit to next foundation | manual | 1eh | 2030-05-09 04:45 | 2030-05-09 05:45 | 185 | 0.000000 | OFFSHORE | 21 | 6 |  |
| 187 | 3.46 | Positioning at WTG location | manual | 1eh | 2030-05-09 05:45 | 2030-05-09 06:45 | 186 | 0.000000 | OFFSHORE | 22 | 6 |  |
| 188 | 3.47 | Preload and jacking up at site | manual | 4eh | 2030-05-09 06:45 | 2030-05-09 10:45 | 187 | 0.000000 | OFFSHORE | 23 | 6 |  |
| 189 | 3.48 | Release crane, gangway and prep for lifting | manual | 3eh | 2030-05-09 10:45 | 2030-05-09 13:45 | 188 | 0.000000 | OFFSHORE | 24 | 6 |  |
| 190 | 3.49 | Remove TP cover and Preparation of TP | manual | 1.5eh | 2030-05-09 13:45 | 2030-05-09 15:15 | 189 | 0.000000 | OFFSHORE | 25 | 6 |  |
| 191 | 3.50 | Tower preparation, removal of seafastening bolts | manual | 3eh | 2030-05-09 15:15 | 2030-05-09 18:15 | 190 | 0.000000 | OFFSHORE | 26 | 6 |  |
| 192 | 3.51 | Tower rigging-up (attached lifting equipment) | manual | 1.5eh | 2030-05-09 18:15 | 2030-05-09 19:45 | 191 | 0.000000 | OFFSHORE | 27 | 6 | G1 |
| 193 | 3.52 | Tower Lifting (safe-to-safe) | manual | 5.25eh | 2030-05-09 19:45 | 2030-05-10 01:00 | 192 | 0.000000 | OFFSHORE | 28 | 6 | G1 |
| 194 | 3.53 | Tower derigging (remove lifting equipment) | manual | 0.75eh | 2030-05-10 01:00 | 2030-05-10 01:45 | 193 | 0.000000 | OFFSHORE | 29 | 6 | G1 |
| 195 | 3.54 | Nacelle preparation and rigging | manual | 0.75eh | 2030-05-10 01:45 | 2030-05-10 02:30 | 194 | 0.000000 | OFFSHORE | 30 | 6 | G2 |
| 196 | 3.55 | Nacelle Lifting (safe-to-safe) | manual | 3.38eh | 2030-05-10 02:30 | 2030-05-10 06:00 | 195 | 0.000000 | OFFSHORE | 31 | 6 | G2 |
| 197 | 3.56 | Nacelle derigging (remove lifting equipment) | manual | 0.75eh | 2030-05-10 06:00 | 2030-05-10 06:45 | 196 | 0.000000 | OFFSHORE | 32 | 6 | G2 |
| 198 | 3.57 | Blade yoke rigging and attachement to Blade #1 | manual | 0.75eh | 2030-05-10 06:45 | 2030-05-10 07:30 | 197 | 0.000000 | OFFSHORE | 33 | 6 | G3 |
| 199 | 3.58 | Blade #1 Lifting (safe-to-safe) | manual | 2.62eh | 2030-05-10 07:30 | 2030-05-10 10:15 | 198 | 0.000000 | OFFSHORE | 34 | 6 | G3 |
| 200 | 3.59 | Blade #1 completion work, re-locate blade yoke to next blade | manual | 2.25eh | 2030-05-10 10:15 | 2030-05-10 12:30 | 199 | 0.000000 | OFFSHORE | 35 | 6 | G3 |
| 201 | 3.60 | Blade #2 Lifting (safe-to-safe) | manual | 2.62eh | 2030-05-10 12:30 | 2030-05-10 15:15 | 200 | 0.000000 | OFFSHORE | 36 | 6 | G4 |
| 202 | 3.61 | Balde #2 completion work, re-locate blade yoke to next blade | manual | 2.25eh | 2030-05-10 15:15 | 2030-05-10 17:30 | 201 | 0.000000 | OFFSHORE | 37 | 6 | G4 |
| 203 | 3.62 | Blade #3 Lifting (safe-to-safe) | manual | 2.62eh | 2030-05-10 17:30 | 2030-05-10 20:15 | 202 | 0.000000 | OFFSHORE | 38 | 6 | G5 |
| 204 | 3.63 | Blade #3 completion work, blade yoke de-rigging | manual | 2.25eh | 2030-05-10 20:15 | 2030-05-10 22:30 | 203 | 0.000000 | OFFSHORE | 39 | 6 | G5 |
| 205 | 3.64 | Handling HSBM and lifting tools | manual | 1.5eh | 2030-05-10 22:30 | 2030-05-11 00:00 | 204 | 0.000000 | OFFSHORE | 40 | 6 |  |
| 206 | 3.65 | Lifting HSBM and lifting tools from Nacelle | manual | 1.5eh | 2030-05-11 00:00 | 2030-05-11 01:30 | 205 | 0.000000 | OFFSHORE | 41 | 6 |  |
| 207 | 3.66 | Turbine general completion works | manual | 4.5eh | 2030-05-11 01:30 | 2030-05-11 06:00 | 206 | 0.000000 | OFFSHORE | 42 | 6 |  |
| 208 | 3.67 | Secure of crane, gangway etc. Preparation for jacking down and sailing | manual | 3eh | 2030-05-11 06:00 | 2030-05-11 09:00 | 207 | 0.000000 | OFFSHORE | 43 | 6 |  |
| 209 | 3.68 | Jacking down at site | manual | 2eh | 2030-05-11 09:00 | 2030-05-11 11:00 | 208 | 0.000000 | OFFSHORE | 44 | 6 |  |
| 210 | 3.69 | Transit from site to port | manual | 5.2eh | 2030-05-11 11:00 | 2030-05-11 16:15 | 209 | 0.000000 | OFFSHORE | 45 |  |  |

Notes:
- 141: P50 representative hindcast year 1984; cycle 3; baseline duration 6.683 days; downtime 6.854 days; elapsed duration 13.604 days.
- 142: Scenario: P50; P50 representative hindcast year 1984; cycle: 3; activity ID: 1; location: OFFSHORE; position: n/a; safe-to-safe group: none; baseline duration: 1.000 h; weather/operational downtime: 0.000 h; elapsed duration: 1.000 h.
- 143: Scenario: P50; P50 representative hindcast year 1984; cycle: 3; activity ID: 2; location: OFFSHORE; position: n/a; safe-to-safe group: none; baseline duration: 2.000 h; weather/operational downtime: 0.000 h; elapsed duration: 2.000 h.
- 144: Scenario: P50; P50 representative hindcast year 1984; cycle: 3; activity ID: 3; location: OFFSHORE; position: n/a; safe-to-safe group: none; baseline duration: 3.000 h; weather/operational downtime: 0.000 h; elapsed duration: 3.000 h.
- 145: Scenario: P50; P50 representative hindcast year 1984; cycle: 3; activity ID: 4; location: OFFSHORE; position: n/a; safe-to-safe group: none; baseline duration: 1.500 h; weather/operational downtime: 0.000 h; elapsed duration: 1.500 h.
- 146: Scenario: P50; P50 representative hindcast year 1984; cycle: 3; activity ID: 5; location: OFFSHORE; position: n/a; safe-to-safe group: none; baseline duration: 3.375 h; weather/operational downtime: 0.000 h; elapsed duration: 3.500 h.
- 147: Scenario: P50; P50 representative hindcast year 1984; cycle: 3; activity ID: 6; location: OFFSHORE; position: n/a; safe-to-safe group: none; baseline duration: 3.375 h; weather/operational downtime: 57.250 h; elapsed duration: 60.750 h.
- 148: Scenario: P50; P50 representative hindcast year 1984; cycle: 3; activity ID: 7; location: OFFSHORE; position: n/a; safe-to-safe group: none; baseline duration: 2.250 h; weather/operational downtime: 0.000 h; elapsed duration: 2.250 h.
- 149: Scenario: P50; P50 representative hindcast year 1984; cycle: 3; activity ID: 8; location: OFFSHORE; position: n/a; safe-to-safe group: none; baseline duration: 2.250 h; weather/operational downtime: 0.000 h; elapsed duration: 2.250 h.
- 150: Scenario: P50; P50 representative hindcast year 1984; cycle: 3; activity ID: 9; location: OFFSHORE; position: n/a; safe-to-safe group: none; baseline duration: 2.250 h; weather/operational downtime: 5.000 h; elapsed duration: 7.250 h.
- 151: Scenario: P50; P50 representative hindcast year 1984; cycle: 3; activity ID: 10; location: OFFSHORE; position: n/a; safe-to-safe group: none; baseline duration: 1.500 h; weather/operational downtime: 0.000 h; elapsed duration: 1.500 h.
- 152: Scenario: P50; P50 representative hindcast year 1984; cycle: 3; activity ID: 11; location: OFFSHORE; position: n/a; safe-to-safe group: none; baseline duration: 3.375 h; weather/operational downtime: 0.000 h; elapsed duration: 3.500 h.
- 153: Scenario: P50; P50 representative hindcast year 1984; cycle: 3; activity ID: 12; location: OFFSHORE; position: n/a; safe-to-safe group: none; baseline duration: 3.375 h; weather/operational downtime: 0.000 h; elapsed duration: 3.500 h.
- 154: Scenario: P50; P50 representative hindcast year 1984; cycle: 3; activity ID: 13; location: OFFSHORE; position: n/a; safe-to-safe group: none; baseline duration: 2.250 h; weather/operational downtime: 41.250 h; elapsed duration: 43.500 h.
- 155: Scenario: P50; P50 representative hindcast year 1984; cycle: 3; activity ID: 14; location: OFFSHORE; position: n/a; safe-to-safe group: none; baseline duration: 2.250 h; weather/operational downtime: 0.000 h; elapsed duration: 2.250 h.
- 156: Scenario: P50; P50 representative hindcast year 1984; cycle: 3; activity ID: 15; location: OFFSHORE; position: n/a; safe-to-safe group: none; baseline duration: 2.250 h; weather/operational downtime: 0.000 h; elapsed duration: 2.250 h.
- 157: Scenario: P50; P50 representative hindcast year 1984; cycle: 3; activity ID: 16; location: OFFSHORE; position: n/a; safe-to-safe group: none; baseline duration: 3.000 h; weather/operational downtime: 0.000 h; elapsed duration: 3.000 h.
- 158: Scenario: P50; P50 representative hindcast year 1984; cycle: 3; activity ID: 17; location: OFFSHORE; position: n/a; safe-to-safe group: none; baseline duration: 2.000 h; weather/operational downtime: 0.000 h; elapsed duration: 2.000 h.
- 159: Scenario: P50; P50 representative hindcast year 1984; cycle: 3; activity ID: 18; location: OFFSHORE; position: n/a; safe-to-safe group: none; baseline duration: 1.000 h; weather/operational downtime: 0.000 h; elapsed duration: 1.000 h.
- 160: Scenario: P50; P50 representative hindcast year 1984; cycle: 3; activity ID: 19; location: OFFSHORE; position: n/a; safe-to-safe group: none; baseline duration: 5.200 h; weather/operational downtime: 0.000 h; elapsed duration: 5.250 h.
- 161: Scenario: P50; P50 representative hindcast year 1984; cycle: 3; activity ID: 20; location: OFFSHORE; position: n/a; safe-to-safe group: none; baseline duration: 0.500 h; weather/operational downtime: 0.000 h; elapsed duration: 0.500 h.
- 162: Scenario: P50; P50 representative hindcast year 1984; cycle: 3; activity ID: 21; location: OFFSHORE; position: 5; safe-to-safe group: none; baseline duration: 1.000 h; weather/operational downtime: 0.000 h; elapsed duration: 1.000 h.
- 163: Scenario: P50; P50 representative hindcast year 1984; cycle: 3; activity ID: 22; location: OFFSHORE; position: 5; safe-to-safe group: none; baseline duration: 1.000 h; weather/operational downtime: 0.000 h; elapsed duration: 1.000 h.
- 164: Scenario: P50; P50 representative hindcast year 1984; cycle: 3; activity ID: 23; location: OFFSHORE; position: 5; safe-to-safe group: none; baseline duration: 4.000 h; weather/operational downtime: 0.000 h; elapsed duration: 4.000 h.
- 165: Scenario: P50; P50 representative hindcast year 1984; cycle: 3; activity ID: 24; location: OFFSHORE; position: 5; safe-to-safe group: none; baseline duration: 3.000 h; weather/operational downtime: 0.000 h; elapsed duration: 3.000 h.
- 166: Scenario: P50; P50 representative hindcast year 1984; cycle: 3; activity ID: 25; location: OFFSHORE; position: 5; safe-to-safe group: none; baseline duration: 1.500 h; weather/operational downtime: 0.000 h; elapsed duration: 1.500 h.
- 167: Scenario: P50; P50 representative hindcast year 1984; cycle: 3; activity ID: 26; location: OFFSHORE; position: 5; safe-to-safe group: none; baseline duration: 3.000 h; weather/operational downtime: 0.000 h; elapsed duration: 3.000 h.
- 168: Scenario: P50; P50 representative hindcast year 1984; cycle: 3; activity ID: 27; location: OFFSHORE; position: 5; safe-to-safe group: G1; baseline duration: 1.500 h; weather/operational downtime: 61.000 h; elapsed duration: 62.500 h.
- 169: Scenario: P50; P50 representative hindcast year 1984; cycle: 3; activity ID: 28; location: OFFSHORE; position: 5; safe-to-safe group: G1; baseline duration: 5.250 h; weather/operational downtime: 0.000 h; elapsed duration: 5.250 h.
- 170: Scenario: P50; P50 representative hindcast year 1984; cycle: 3; activity ID: 29; location: OFFSHORE; position: 5; safe-to-safe group: G1; baseline duration: 0.750 h; weather/operational downtime: 0.000 h; elapsed duration: 0.750 h.
- 171: Scenario: P50; P50 representative hindcast year 1984; cycle: 3; activity ID: 30; location: OFFSHORE; position: 5; safe-to-safe group: G2; baseline duration: 0.750 h; weather/operational downtime: 0.000 h; elapsed duration: 0.750 h.
- 172: Scenario: P50; P50 representative hindcast year 1984; cycle: 3; activity ID: 31; location: OFFSHORE; position: 5; safe-to-safe group: G2; baseline duration: 3.375 h; weather/operational downtime: 0.000 h; elapsed duration: 3.500 h.
- 173: Scenario: P50; P50 representative hindcast year 1984; cycle: 3; activity ID: 32; location: OFFSHORE; position: 5; safe-to-safe group: G2; baseline duration: 0.750 h; weather/operational downtime: 0.000 h; elapsed duration: 0.750 h.
- 174: Scenario: P50; P50 representative hindcast year 1984; cycle: 3; activity ID: 33; location: OFFSHORE; position: 5; safe-to-safe group: G3; baseline duration: 0.750 h; weather/operational downtime: 0.000 h; elapsed duration: 0.750 h.
- 175: Scenario: P50; P50 representative hindcast year 1984; cycle: 3; activity ID: 34; location: OFFSHORE; position: 5; safe-to-safe group: G3; baseline duration: 2.625 h; weather/operational downtime: 0.000 h; elapsed duration: 2.750 h.
- 176: Scenario: P50; P50 representative hindcast year 1984; cycle: 3; activity ID: 35; location: OFFSHORE; position: 5; safe-to-safe group: G3; baseline duration: 2.250 h; weather/operational downtime: 0.000 h; elapsed duration: 2.250 h.
- 177: Scenario: P50; P50 representative hindcast year 1984; cycle: 3; activity ID: 36; location: OFFSHORE; position: 5; safe-to-safe group: G4; baseline duration: 2.625 h; weather/operational downtime: 0.000 h; elapsed duration: 2.750 h.
- 178: Scenario: P50; P50 representative hindcast year 1984; cycle: 3; activity ID: 37; location: OFFSHORE; position: 5; safe-to-safe group: G4; baseline duration: 2.250 h; weather/operational downtime: 0.000 h; elapsed duration: 2.250 h.
- 179: Scenario: P50; P50 representative hindcast year 1984; cycle: 3; activity ID: 38; location: OFFSHORE; position: 5; safe-to-safe group: G5; baseline duration: 2.625 h; weather/operational downtime: 0.000 h; elapsed duration: 2.750 h.
- 180: Scenario: P50; P50 representative hindcast year 1984; cycle: 3; activity ID: 39; location: OFFSHORE; position: 5; safe-to-safe group: G5; baseline duration: 2.250 h; weather/operational downtime: 0.000 h; elapsed duration: 2.250 h.
- 181: Scenario: P50; P50 representative hindcast year 1984; cycle: 3; activity ID: 40; location: OFFSHORE; position: 5; safe-to-safe group: none; baseline duration: 1.500 h; weather/operational downtime: 0.000 h; elapsed duration: 1.500 h.
- 182: Scenario: P50; P50 representative hindcast year 1984; cycle: 3; activity ID: 41; location: OFFSHORE; position: 5; safe-to-safe group: none; baseline duration: 1.500 h; weather/operational downtime: 0.000 h; elapsed duration: 1.500 h.
- 183: Scenario: P50; P50 representative hindcast year 1984; cycle: 3; activity ID: 42; location: OFFSHORE; position: 5; safe-to-safe group: none; baseline duration: 4.500 h; weather/operational downtime: 0.000 h; elapsed duration: 4.500 h.
- 184: Scenario: P50; P50 representative hindcast year 1984; cycle: 3; activity ID: 43; location: OFFSHORE; position: 5; safe-to-safe group: none; baseline duration: 3.000 h; weather/operational downtime: 0.000 h; elapsed duration: 3.000 h.
- 185: Scenario: P50; P50 representative hindcast year 1984; cycle: 3; activity ID: 44; location: OFFSHORE; position: 5; safe-to-safe group: none; baseline duration: 2.000 h; weather/operational downtime: 0.000 h; elapsed duration: 2.000 h.
- 186: Scenario: P50; P50 representative hindcast year 1984; cycle: 3; activity ID: 21; location: OFFSHORE; position: 6; safe-to-safe group: none; baseline duration: 1.000 h; weather/operational downtime: 0.000 h; elapsed duration: 1.000 h.
- 187: Scenario: P50; P50 representative hindcast year 1984; cycle: 3; activity ID: 22; location: OFFSHORE; position: 6; safe-to-safe group: none; baseline duration: 1.000 h; weather/operational downtime: 0.000 h; elapsed duration: 1.000 h.
- 188: Scenario: P50; P50 representative hindcast year 1984; cycle: 3; activity ID: 23; location: OFFSHORE; position: 6; safe-to-safe group: none; baseline duration: 4.000 h; weather/operational downtime: 0.000 h; elapsed duration: 4.000 h.
- 189: Scenario: P50; P50 representative hindcast year 1984; cycle: 3; activity ID: 24; location: OFFSHORE; position: 6; safe-to-safe group: none; baseline duration: 3.000 h; weather/operational downtime: 0.000 h; elapsed duration: 3.000 h.
- 190: Scenario: P50; P50 representative hindcast year 1984; cycle: 3; activity ID: 25; location: OFFSHORE; position: 6; safe-to-safe group: none; baseline duration: 1.500 h; weather/operational downtime: 0.000 h; elapsed duration: 1.500 h.
- 191: Scenario: P50; P50 representative hindcast year 1984; cycle: 3; activity ID: 26; location: OFFSHORE; position: 6; safe-to-safe group: none; baseline duration: 3.000 h; weather/operational downtime: 0.000 h; elapsed duration: 3.000 h.
- 192: Scenario: P50; P50 representative hindcast year 1984; cycle: 3; activity ID: 27; location: OFFSHORE; position: 6; safe-to-safe group: G1; baseline duration: 1.500 h; weather/operational downtime: 0.000 h; elapsed duration: 1.500 h.
- 193: Scenario: P50; P50 representative hindcast year 1984; cycle: 3; activity ID: 28; location: OFFSHORE; position: 6; safe-to-safe group: G1; baseline duration: 5.250 h; weather/operational downtime: 0.000 h; elapsed duration: 5.250 h.
- 194: Scenario: P50; P50 representative hindcast year 1984; cycle: 3; activity ID: 29; location: OFFSHORE; position: 6; safe-to-safe group: G1; baseline duration: 0.750 h; weather/operational downtime: 0.000 h; elapsed duration: 0.750 h.
- 195: Scenario: P50; P50 representative hindcast year 1984; cycle: 3; activity ID: 30; location: OFFSHORE; position: 6; safe-to-safe group: G2; baseline duration: 0.750 h; weather/operational downtime: 0.000 h; elapsed duration: 0.750 h.
- 196: Scenario: P50; P50 representative hindcast year 1984; cycle: 3; activity ID: 31; location: OFFSHORE; position: 6; safe-to-safe group: G2; baseline duration: 3.375 h; weather/operational downtime: 0.000 h; elapsed duration: 3.500 h.
- 197: Scenario: P50; P50 representative hindcast year 1984; cycle: 3; activity ID: 32; location: OFFSHORE; position: 6; safe-to-safe group: G2; baseline duration: 0.750 h; weather/operational downtime: 0.000 h; elapsed duration: 0.750 h.
- 198: Scenario: P50; P50 representative hindcast year 1984; cycle: 3; activity ID: 33; location: OFFSHORE; position: 6; safe-to-safe group: G3; baseline duration: 0.750 h; weather/operational downtime: 0.000 h; elapsed duration: 0.750 h.
- 199: Scenario: P50; P50 representative hindcast year 1984; cycle: 3; activity ID: 34; location: OFFSHORE; position: 6; safe-to-safe group: G3; baseline duration: 2.625 h; weather/operational downtime: 0.000 h; elapsed duration: 2.750 h.
- 200: Scenario: P50; P50 representative hindcast year 1984; cycle: 3; activity ID: 35; location: OFFSHORE; position: 6; safe-to-safe group: G3; baseline duration: 2.250 h; weather/operational downtime: 0.000 h; elapsed duration: 2.250 h.
- 201: Scenario: P50; P50 representative hindcast year 1984; cycle: 3; activity ID: 36; location: OFFSHORE; position: 6; safe-to-safe group: G4; baseline duration: 2.625 h; weather/operational downtime: 0.000 h; elapsed duration: 2.750 h.
- 202: Scenario: P50; P50 representative hindcast year 1984; cycle: 3; activity ID: 37; location: OFFSHORE; position: 6; safe-to-safe group: G4; baseline duration: 2.250 h; weather/operational downtime: 0.000 h; elapsed duration: 2.250 h.
- 203: Scenario: P50; P50 representative hindcast year 1984; cycle: 3; activity ID: 38; location: OFFSHORE; position: 6; safe-to-safe group: G5; baseline duration: 2.625 h; weather/operational downtime: 0.000 h; elapsed duration: 2.750 h.
- 204: Scenario: P50; P50 representative hindcast year 1984; cycle: 3; activity ID: 39; location: OFFSHORE; position: 6; safe-to-safe group: G5; baseline duration: 2.250 h; weather/operational downtime: 0.000 h; elapsed duration: 2.250 h.
- 205: Scenario: P50; P50 representative hindcast year 1984; cycle: 3; activity ID: 40; location: OFFSHORE; position: 6; safe-to-safe group: none; baseline duration: 1.500 h; weather/operational downtime: 0.000 h; elapsed duration: 1.500 h.
- 206: Scenario: P50; P50 representative hindcast year 1984; cycle: 3; activity ID: 41; location: OFFSHORE; position: 6; safe-to-safe group: none; baseline duration: 1.500 h; weather/operational downtime: 0.000 h; elapsed duration: 1.500 h.
- 207: Scenario: P50; P50 representative hindcast year 1984; cycle: 3; activity ID: 42; location: OFFSHORE; position: 6; safe-to-safe group: none; baseline duration: 4.500 h; weather/operational downtime: 0.000 h; elapsed duration: 4.500 h.
- 208: Scenario: P50; P50 representative hindcast year 1984; cycle: 3; activity ID: 43; location: OFFSHORE; position: 6; safe-to-safe group: none; baseline duration: 3.000 h; weather/operational downtime: 0.000 h; elapsed duration: 3.000 h.
- 209: Scenario: P50; P50 representative hindcast year 1984; cycle: 3; activity ID: 44; location: OFFSHORE; position: 6; safe-to-safe group: none; baseline duration: 2.000 h; weather/operational downtime: 0.000 h; elapsed duration: 2.000 h.
- 210: Scenario: P50; P50 representative hindcast year 1984; cycle: 3; activity ID: 45; location: OFFSHORE; position: n/a; safe-to-safe group: none; baseline duration: 5.200 h; weather/operational downtime: 0.000 h; elapsed duration: 5.250 h.

| ID | WBS | Task | Type | Duration | Start | Finish | Predecessors | Duration WDT [days] | Location | Activity ID | Position | Safe-to-safe group |
| --- | --- | --- | --- | --- | --- | --- | --- | --- | --- | --- | --- | --- |
| 211 | 4 | **Cycle 04 — Positions 7–8** |  | 160.4eh | 2030-05-11 16:15 | 2030-05-23 20:15 |  | 5.416667 |  |  |  |  |
| 212 | 4.1 | Port maneuvering | manual | 1eh | 2030-05-11 16:15 | 2030-05-11 17:15 | 210 | 0.000000 | OFFSHORE | 1 |  |  |
| 213 | 4.2 | Preload and jacking up at port | manual | 2eh | 2030-05-11 17:15 | 2030-05-11 19:15 | 212 | 0.000000 | OFFSHORE | 2 |  |  |
| 214 | 4.3 | Release crane, gangway etc and prep for lifting | manual | 3eh | 2030-05-11 19:15 | 2030-05-11 22:15 | 213 | 0.000000 | OFFSHORE | 3 |  |  |
| 215 | 4.4 | Load in/out WTG supplier equipment | manual | 1.5eh | 2030-05-11 22:15 | 2030-05-11 23:45 | 214 | 0.000000 | OFFSHORE | 4 |  |  |
| 216 | 4.5 | Loadout Nacelle #1 | manual | 3.38eh | 2030-05-11 23:45 | 2030-05-12 03:15 | 215 | 0.000000 | OFFSHORE | 5 |  |  |
| 217 | 4.6 | Loadout Tower #1 | manual | 3.38eh | 2030-05-12 03:15 | 2030-05-12 06:45 | 216 | 0.000000 | OFFSHORE | 6 |  |  |
| 218 | 4.7 | Loadout Blade 1 | manual | 2.25eh | 2030-05-12 06:45 | 2030-05-12 09:00 | 217 | 0.000000 | OFFSHORE | 7 |  |  |
| 219 | 4.8 | Loadout Blade 2 | manual | 2.25eh | 2030-05-12 09:00 | 2030-05-12 11:15 | 218 | 0.000000 | OFFSHORE | 8 |  |  |
| 220 | 4.9 | Loadout Blade 3 | manual | 2.25eh | 2030-05-12 11:15 | 2030-05-12 13:30 | 219 | 0.000000 | OFFSHORE | 9 |  |  |
| 221 | 4.10 | Load in/out WTG supplier equipment | manual | 1.5eh | 2030-05-12 13:30 | 2030-05-12 15:00 | 220 | 0.000000 | OFFSHORE | 10 |  |  |
| 222 | 4.11 | Loadout Nacelle #2 | manual | 3.38eh | 2030-05-12 15:00 | 2030-05-12 18:30 | 221 | 0.000000 | OFFSHORE | 11 |  |  |
| 223 | 4.12 | Loadout Tower #2 | manual | 3.38eh | 2030-05-12 18:30 | 2030-05-12 22:00 | 222 | 0.000000 | OFFSHORE | 12 |  |  |
| 224 | 4.13 | Loadout Blade 1 | manual | 2.25eh | 2030-05-12 22:00 | 2030-05-13 00:15 | 223 | 0.000000 | OFFSHORE | 13 |  |  |
| 225 | 4.14 | Loadout Blade 2 | manual | 2.25eh | 2030-05-13 00:15 | 2030-05-13 02:30 | 224 | 0.000000 | OFFSHORE | 14 |  |  |
| 226 | 4.15 | Loadout Blade 3 | manual | 2.25eh | 2030-05-13 02:30 | 2030-05-13 04:45 | 225 | 0.000000 | OFFSHORE | 15 |  |  |
| 227 | 4.16 | Secure of crane, gangway (at port)) | manual | 3eh | 2030-05-13 04:45 | 2030-05-13 07:45 | 226 | 0.000000 | OFFSHORE | 16 |  |  |
| 228 | 4.17 | Jacking down at port | manual | 2eh | 2030-05-13 07:45 | 2030-05-13 09:45 | 227 | 0.000000 | OFFSHORE | 17 |  |  |
| 229 | 4.18 | Port maneuvering | manual | 1eh | 2030-05-13 09:45 | 2030-05-13 10:45 | 228 | 0.000000 | OFFSHORE | 18 |  |  |
| 230 | 4.19 | Transit from port to site | manual | 5.2eh | 2030-05-13 10:45 | 2030-05-13 16:00 | 229 | 0.000000 | OFFSHORE | 19 |  |  |
| 231 | 4.20 | DP field check | manual | 0.5eh | 2030-05-13 16:00 | 2030-05-13 16:30 | 230 | 0.000000 | OFFSHORE | 20 |  |  |
| 232 | 4.21 | Transit to next foundation | manual | 1eh | 2030-05-13 16:30 | 2030-05-13 17:30 | 231 | 0.000000 | OFFSHORE | 21 | 7 |  |
| 233 | 4.22 | Positioning at WTG location | manual | 1eh | 2030-05-13 17:30 | 2030-05-13 18:30 | 232 | 0.000000 | OFFSHORE | 22 | 7 |  |
| 234 | 4.23 | Preload and jacking up at site | manual | 4eh | 2030-05-13 18:30 | 2030-05-13 22:30 | 233 | 0.000000 | OFFSHORE | 23 | 7 |  |
| 235 | 4.24 | Release crane, gangway and prep for lifting | manual | 3eh | 2030-05-13 22:30 | 2030-05-14 01:30 | 234 | 0.000000 | OFFSHORE | 24 | 7 |  |
| 236 | 4.25 | Remove TP cover and Preparation of TP | manual | 1.5eh | 2030-05-14 01:30 | 2030-05-14 03:00 | 235 | 0.000000 | OFFSHORE | 25 | 7 |  |
| 237 | 4.26 | Tower preparation, removal of seafastening bolts | manual | 3eh | 2030-05-14 03:00 | 2030-05-14 06:00 | 236 | 0.000000 | OFFSHORE | 26 | 7 |  |
| 238 | 4.27 | Tower rigging-up (attached lifting equipment) | manual | 1.5eh | 2030-05-14 06:00 | 2030-05-14 07:30 | 237 | 0.000000 | OFFSHORE | 27 | 7 | G1 |
| 239 | 4.28 | Tower Lifting (safe-to-safe) | manual | 5.25eh | 2030-05-14 07:30 | 2030-05-14 12:45 | 238 | 0.000000 | OFFSHORE | 28 | 7 | G1 |
| 240 | 4.29 | Tower derigging (remove lifting equipment) | manual | 0.75eh | 2030-05-14 12:45 | 2030-05-14 13:30 | 239 | 0.000000 | OFFSHORE | 29 | 7 | G1 |
| 241 | 4.30 | Nacelle preparation and rigging | manual | 0.75eh | 2030-05-14 13:30 | 2030-05-14 14:15 | 240 | 0.000000 | OFFSHORE | 30 | 7 | G2 |
| 242 | 4.31 | Nacelle Lifting (safe-to-safe) | manual | 3.38eh | 2030-05-14 14:15 | 2030-05-14 17:45 | 241 | 0.000000 | OFFSHORE | 31 | 7 | G2 |
| 243 | 4.32 | Nacelle derigging (remove lifting equipment) | manual | 0.75eh | 2030-05-14 17:45 | 2030-05-14 18:30 | 242 | 0.000000 | OFFSHORE | 32 | 7 | G2 |
| 244 | 4.33 | Blade yoke rigging and attachement to Blade #1 | manual | 0.75eh | 2030-05-14 18:30 | 2030-05-14 19:15 | 243 | 0.000000 | OFFSHORE | 33 | 7 | G3 |
| 245 | 4.34 | Blade #1 Lifting (safe-to-safe) | manual | 2.62eh | 2030-05-14 19:15 | 2030-05-14 22:00 | 244 | 0.000000 | OFFSHORE | 34 | 7 | G3 |
| 246 | 4.35 | Blade #1 completion work, re-locate blade yoke to next blade | manual | 2.25eh | 2030-05-14 22:00 | 2030-05-15 00:15 | 245 | 0.000000 | OFFSHORE | 35 | 7 | G3 |
| 247 | 4.36 | Blade #2 Lifting (safe-to-safe) | manual | 2.62eh | 2030-05-15 00:15 | 2030-05-15 03:00 | 246 | 0.000000 | OFFSHORE | 36 | 7 | G4 |
| 248 | 4.37 | Balde #2 completion work, re-locate blade yoke to next blade | manual | 2.25eh | 2030-05-15 03:00 | 2030-05-15 05:15 | 247 | 0.000000 | OFFSHORE | 37 | 7 | G4 |
| 249 | 4.38 | Blade #3 Lifting (safe-to-safe) | manual | 2.62eh | 2030-05-15 05:15 | 2030-05-15 08:00 | 248 | 0.000000 | OFFSHORE | 38 | 7 | G5 |
| 250 | 4.39 | Blade #3 completion work, blade yoke de-rigging | manual | 2.25eh | 2030-05-15 08:00 | 2030-05-15 10:15 | 249 | 0.000000 | OFFSHORE | 39 | 7 | G5 |
| 251 | 4.40 | Handling HSBM and lifting tools | manual | 1.5eh | 2030-05-15 10:15 | 2030-05-15 11:45 | 250 | 0.000000 | OFFSHORE | 40 | 7 |  |
| 252 | 4.41 | Lifting HSBM and lifting tools from Nacelle | manual | 1.5eh | 2030-05-15 11:45 | 2030-05-15 13:15 | 251 | 0.000000 | OFFSHORE | 41 | 7 |  |
| 253 | 4.42 | Turbine general completion works | manual | 4.5eh | 2030-05-15 13:15 | 2030-05-15 17:45 | 252 | 0.000000 | OFFSHORE | 42 | 7 |  |
| 254 | 4.43 | Secure of crane, gangway etc. Preparation for jacking down and sailing | manual | 3eh | 2030-05-15 17:45 | 2030-05-15 20:45 | 253 | 0.000000 | OFFSHORE | 43 | 7 |  |
| 255 | 4.44 | Jacking down at site | manual | 2eh | 2030-05-15 20:45 | 2030-05-15 22:45 | 254 | 0.000000 | OFFSHORE | 44 | 7 |  |
| 256 | 4.45 | Transit to next foundation | manual | 1eh | 2030-05-15 22:45 | 2030-05-15 23:45 | 255 | 0.000000 | OFFSHORE | 21 | 8 |  |
| 257 | 4.46 | Positioning at WTG location | manual | 1eh | 2030-05-15 23:45 | 2030-05-16 00:45 | 256 | 0.000000 | OFFSHORE | 22 | 8 |  |
| 258 | 4.47 | Preload and jacking up at site | manual | 4eh | 2030-05-16 00:45 | 2030-05-16 04:45 | 257 | 0.000000 | OFFSHORE | 23 | 8 |  |
| 259 | 4.48 | Release crane, gangway and prep for lifting | manual | 3eh | 2030-05-16 04:45 | 2030-05-16 07:45 | 258 | 0.000000 | OFFSHORE | 24 | 8 |  |
| 260 | 4.49 | Remove TP cover and Preparation of TP | manual | 1.5eh | 2030-05-16 07:45 | 2030-05-17 02:15 | 259 | 0.708333 | OFFSHORE | 25 | 8 |  |
| 261 | 4.50 | Tower preparation, removal of seafastening bolts | manual | 3eh | 2030-05-17 02:15 | 2030-05-17 05:15 | 260 | 0.000000 | OFFSHORE | 26 | 8 |  |
| 262 | 4.51 | Tower rigging-up (attached lifting equipment) | manual | 1.5eh | 2030-05-17 05:15 | 2030-05-17 06:45 | 261 | 0.000000 | OFFSHORE | 27 | 8 | G1 |
| 263 | 4.52 | Tower Lifting (safe-to-safe) | manual | 5.25eh | 2030-05-17 06:45 | 2030-05-17 12:00 | 262 | 0.000000 | OFFSHORE | 28 | 8 | G1 |
| 264 | 4.53 | Tower derigging (remove lifting equipment) | manual | 0.75eh | 2030-05-17 12:00 | 2030-05-17 12:45 | 263 | 0.000000 | OFFSHORE | 29 | 8 | G1 |
| 265 | 4.54 | Nacelle preparation and rigging | manual | 0.75eh | 2030-05-17 12:45 | 2030-05-17 13:30 | 264 | 0.000000 | OFFSHORE | 30 | 8 | G2 |
| 266 | 4.55 | Nacelle Lifting (safe-to-safe) | manual | 3.38eh | 2030-05-17 13:30 | 2030-05-17 17:00 | 265 | 0.000000 | OFFSHORE | 31 | 8 | G2 |
| 267 | 4.56 | Nacelle derigging (remove lifting equipment) | manual | 0.75eh | 2030-05-17 17:00 | 2030-05-17 17:45 | 266 | 0.000000 | OFFSHORE | 32 | 8 | G2 |
| 268 | 4.57 | Blade yoke rigging and attachement to Blade #1 | manual | 0.75eh | 2030-05-17 17:45 | 2030-05-17 18:30 | 267 | 0.000000 | OFFSHORE | 33 | 8 | G3 |
| 269 | 4.58 | Blade #1 Lifting (safe-to-safe) | manual | 2.62eh | 2030-05-17 18:30 | 2030-05-17 21:15 | 268 | 0.000000 | OFFSHORE | 34 | 8 | G3 |
| 270 | 4.59 | Blade #1 completion work, re-locate blade yoke to next blade | manual | 2.25eh | 2030-05-17 21:15 | 2030-05-17 23:30 | 269 | 0.000000 | OFFSHORE | 35 | 8 | G3 |
| 271 | 4.60 | Blade #2 Lifting (safe-to-safe) | manual | 2.62eh | 2030-05-17 23:30 | 2030-05-20 15:45 | 270 | 2.562500 | OFFSHORE | 36 | 8 | G4 |
| 272 | 4.61 | Balde #2 completion work, re-locate blade yoke to next blade | manual | 2.25eh | 2030-05-20 15:45 | 2030-05-20 18:00 | 271 | 0.000000 | OFFSHORE | 37 | 8 | G4 |
| 273 | 4.62 | Blade #3 Lifting (safe-to-safe) | manual | 2.62eh | 2030-05-20 18:00 | 2030-05-20 23:45 | 272 | 0.125000 | OFFSHORE | 38 | 8 | G5 |
| 274 | 4.63 | Blade #3 completion work, blade yoke de-rigging | manual | 2.25eh | 2030-05-20 23:45 | 2030-05-21 02:00 | 273 | 0.000000 | OFFSHORE | 39 | 8 | G5 |
| 275 | 4.64 | Handling HSBM and lifting tools | manual | 1.5eh | 2030-05-21 02:00 | 2030-05-21 03:30 | 274 | 0.000000 | OFFSHORE | 40 | 8 |  |
| 276 | 4.65 | Lifting HSBM and lifting tools from Nacelle | manual | 1.5eh | 2030-05-21 03:30 | 2030-05-22 23:30 | 275 | 1.770833 | OFFSHORE | 41 | 8 |  |
| 277 | 4.66 | Turbine general completion works | manual | 4.5eh | 2030-05-22 23:30 | 2030-05-23 04:00 | 276 | 0.000000 | OFFSHORE | 42 | 8 |  |
| 278 | 4.67 | Secure of crane, gangway etc. Preparation for jacking down and sailing | manual | 3eh | 2030-05-23 04:00 | 2030-05-23 07:00 | 277 | 0.000000 | OFFSHORE | 43 | 8 |  |
| 279 | 4.68 | Jacking down at site | manual | 2eh | 2030-05-23 07:00 | 2030-05-23 15:00 | 278 | 0.250000 | OFFSHORE | 44 | 8 |  |
| 280 | 4.69 | Transit from site to port | manual | 5.2eh | 2030-05-23 15:00 | 2030-05-23 20:15 | 279 | 0.000000 | OFFSHORE | 45 |  |  |

Notes:
- 211: P50 representative hindcast year 1984; cycle 4; baseline duration 6.683 days; downtime 5.417 days; elapsed duration 12.167 days.
- 212: Scenario: P50; P50 representative hindcast year 1984; cycle: 4; activity ID: 1; location: OFFSHORE; position: n/a; safe-to-safe group: none; baseline duration: 1.000 h; weather/operational downtime: 0.000 h; elapsed duration: 1.000 h.
- 213: Scenario: P50; P50 representative hindcast year 1984; cycle: 4; activity ID: 2; location: OFFSHORE; position: n/a; safe-to-safe group: none; baseline duration: 2.000 h; weather/operational downtime: 0.000 h; elapsed duration: 2.000 h.
- 214: Scenario: P50; P50 representative hindcast year 1984; cycle: 4; activity ID: 3; location: OFFSHORE; position: n/a; safe-to-safe group: none; baseline duration: 3.000 h; weather/operational downtime: 0.000 h; elapsed duration: 3.000 h.
- 215: Scenario: P50; P50 representative hindcast year 1984; cycle: 4; activity ID: 4; location: OFFSHORE; position: n/a; safe-to-safe group: none; baseline duration: 1.500 h; weather/operational downtime: 0.000 h; elapsed duration: 1.500 h.
- 216: Scenario: P50; P50 representative hindcast year 1984; cycle: 4; activity ID: 5; location: OFFSHORE; position: n/a; safe-to-safe group: none; baseline duration: 3.375 h; weather/operational downtime: 0.000 h; elapsed duration: 3.500 h.
- 217: Scenario: P50; P50 representative hindcast year 1984; cycle: 4; activity ID: 6; location: OFFSHORE; position: n/a; safe-to-safe group: none; baseline duration: 3.375 h; weather/operational downtime: 0.000 h; elapsed duration: 3.500 h.
- 218: Scenario: P50; P50 representative hindcast year 1984; cycle: 4; activity ID: 7; location: OFFSHORE; position: n/a; safe-to-safe group: none; baseline duration: 2.250 h; weather/operational downtime: 0.000 h; elapsed duration: 2.250 h.
- 219: Scenario: P50; P50 representative hindcast year 1984; cycle: 4; activity ID: 8; location: OFFSHORE; position: n/a; safe-to-safe group: none; baseline duration: 2.250 h; weather/operational downtime: 0.000 h; elapsed duration: 2.250 h.
- 220: Scenario: P50; P50 representative hindcast year 1984; cycle: 4; activity ID: 9; location: OFFSHORE; position: n/a; safe-to-safe group: none; baseline duration: 2.250 h; weather/operational downtime: 0.000 h; elapsed duration: 2.250 h.
- 221: Scenario: P50; P50 representative hindcast year 1984; cycle: 4; activity ID: 10; location: OFFSHORE; position: n/a; safe-to-safe group: none; baseline duration: 1.500 h; weather/operational downtime: 0.000 h; elapsed duration: 1.500 h.
- 222: Scenario: P50; P50 representative hindcast year 1984; cycle: 4; activity ID: 11; location: OFFSHORE; position: n/a; safe-to-safe group: none; baseline duration: 3.375 h; weather/operational downtime: 0.000 h; elapsed duration: 3.500 h.
- 223: Scenario: P50; P50 representative hindcast year 1984; cycle: 4; activity ID: 12; location: OFFSHORE; position: n/a; safe-to-safe group: none; baseline duration: 3.375 h; weather/operational downtime: 0.000 h; elapsed duration: 3.500 h.
- 224: Scenario: P50; P50 representative hindcast year 1984; cycle: 4; activity ID: 13; location: OFFSHORE; position: n/a; safe-to-safe group: none; baseline duration: 2.250 h; weather/operational downtime: 0.000 h; elapsed duration: 2.250 h.
- 225: Scenario: P50; P50 representative hindcast year 1984; cycle: 4; activity ID: 14; location: OFFSHORE; position: n/a; safe-to-safe group: none; baseline duration: 2.250 h; weather/operational downtime: 0.000 h; elapsed duration: 2.250 h.
- 226: Scenario: P50; P50 representative hindcast year 1984; cycle: 4; activity ID: 15; location: OFFSHORE; position: n/a; safe-to-safe group: none; baseline duration: 2.250 h; weather/operational downtime: 0.000 h; elapsed duration: 2.250 h.
- 227: Scenario: P50; P50 representative hindcast year 1984; cycle: 4; activity ID: 16; location: OFFSHORE; position: n/a; safe-to-safe group: none; baseline duration: 3.000 h; weather/operational downtime: 0.000 h; elapsed duration: 3.000 h.
- 228: Scenario: P50; P50 representative hindcast year 1984; cycle: 4; activity ID: 17; location: OFFSHORE; position: n/a; safe-to-safe group: none; baseline duration: 2.000 h; weather/operational downtime: 0.000 h; elapsed duration: 2.000 h.
- 229: Scenario: P50; P50 representative hindcast year 1984; cycle: 4; activity ID: 18; location: OFFSHORE; position: n/a; safe-to-safe group: none; baseline duration: 1.000 h; weather/operational downtime: 0.000 h; elapsed duration: 1.000 h.
- 230: Scenario: P50; P50 representative hindcast year 1984; cycle: 4; activity ID: 19; location: OFFSHORE; position: n/a; safe-to-safe group: none; baseline duration: 5.200 h; weather/operational downtime: 0.000 h; elapsed duration: 5.250 h.
- 231: Scenario: P50; P50 representative hindcast year 1984; cycle: 4; activity ID: 20; location: OFFSHORE; position: n/a; safe-to-safe group: none; baseline duration: 0.500 h; weather/operational downtime: 0.000 h; elapsed duration: 0.500 h.
- 232: Scenario: P50; P50 representative hindcast year 1984; cycle: 4; activity ID: 21; location: OFFSHORE; position: 7; safe-to-safe group: none; baseline duration: 1.000 h; weather/operational downtime: 0.000 h; elapsed duration: 1.000 h.
- 233: Scenario: P50; P50 representative hindcast year 1984; cycle: 4; activity ID: 22; location: OFFSHORE; position: 7; safe-to-safe group: none; baseline duration: 1.000 h; weather/operational downtime: 0.000 h; elapsed duration: 1.000 h.
- 234: Scenario: P50; P50 representative hindcast year 1984; cycle: 4; activity ID: 23; location: OFFSHORE; position: 7; safe-to-safe group: none; baseline duration: 4.000 h; weather/operational downtime: 0.000 h; elapsed duration: 4.000 h.
- 235: Scenario: P50; P50 representative hindcast year 1984; cycle: 4; activity ID: 24; location: OFFSHORE; position: 7; safe-to-safe group: none; baseline duration: 3.000 h; weather/operational downtime: 0.000 h; elapsed duration: 3.000 h.
- 236: Scenario: P50; P50 representative hindcast year 1984; cycle: 4; activity ID: 25; location: OFFSHORE; position: 7; safe-to-safe group: none; baseline duration: 1.500 h; weather/operational downtime: 0.000 h; elapsed duration: 1.500 h.
- 237: Scenario: P50; P50 representative hindcast year 1984; cycle: 4; activity ID: 26; location: OFFSHORE; position: 7; safe-to-safe group: none; baseline duration: 3.000 h; weather/operational downtime: 0.000 h; elapsed duration: 3.000 h.
- 238: Scenario: P50; P50 representative hindcast year 1984; cycle: 4; activity ID: 27; location: OFFSHORE; position: 7; safe-to-safe group: G1; baseline duration: 1.500 h; weather/operational downtime: 0.000 h; elapsed duration: 1.500 h.
- 239: Scenario: P50; P50 representative hindcast year 1984; cycle: 4; activity ID: 28; location: OFFSHORE; position: 7; safe-to-safe group: G1; baseline duration: 5.250 h; weather/operational downtime: 0.000 h; elapsed duration: 5.250 h.
- 240: Scenario: P50; P50 representative hindcast year 1984; cycle: 4; activity ID: 29; location: OFFSHORE; position: 7; safe-to-safe group: G1; baseline duration: 0.750 h; weather/operational downtime: 0.000 h; elapsed duration: 0.750 h.
- 241: Scenario: P50; P50 representative hindcast year 1984; cycle: 4; activity ID: 30; location: OFFSHORE; position: 7; safe-to-safe group: G2; baseline duration: 0.750 h; weather/operational downtime: 0.000 h; elapsed duration: 0.750 h.
- 242: Scenario: P50; P50 representative hindcast year 1984; cycle: 4; activity ID: 31; location: OFFSHORE; position: 7; safe-to-safe group: G2; baseline duration: 3.375 h; weather/operational downtime: 0.000 h; elapsed duration: 3.500 h.
- 243: Scenario: P50; P50 representative hindcast year 1984; cycle: 4; activity ID: 32; location: OFFSHORE; position: 7; safe-to-safe group: G2; baseline duration: 0.750 h; weather/operational downtime: 0.000 h; elapsed duration: 0.750 h.
- 244: Scenario: P50; P50 representative hindcast year 1984; cycle: 4; activity ID: 33; location: OFFSHORE; position: 7; safe-to-safe group: G3; baseline duration: 0.750 h; weather/operational downtime: 0.000 h; elapsed duration: 0.750 h.
- 245: Scenario: P50; P50 representative hindcast year 1984; cycle: 4; activity ID: 34; location: OFFSHORE; position: 7; safe-to-safe group: G3; baseline duration: 2.625 h; weather/operational downtime: 0.000 h; elapsed duration: 2.750 h.
- 246: Scenario: P50; P50 representative hindcast year 1984; cycle: 4; activity ID: 35; location: OFFSHORE; position: 7; safe-to-safe group: G3; baseline duration: 2.250 h; weather/operational downtime: 0.000 h; elapsed duration: 2.250 h.
- 247: Scenario: P50; P50 representative hindcast year 1984; cycle: 4; activity ID: 36; location: OFFSHORE; position: 7; safe-to-safe group: G4; baseline duration: 2.625 h; weather/operational downtime: 0.000 h; elapsed duration: 2.750 h.
- 248: Scenario: P50; P50 representative hindcast year 1984; cycle: 4; activity ID: 37; location: OFFSHORE; position: 7; safe-to-safe group: G4; baseline duration: 2.250 h; weather/operational downtime: 0.000 h; elapsed duration: 2.250 h.
- 249: Scenario: P50; P50 representative hindcast year 1984; cycle: 4; activity ID: 38; location: OFFSHORE; position: 7; safe-to-safe group: G5; baseline duration: 2.625 h; weather/operational downtime: 0.000 h; elapsed duration: 2.750 h.
- 250: Scenario: P50; P50 representative hindcast year 1984; cycle: 4; activity ID: 39; location: OFFSHORE; position: 7; safe-to-safe group: G5; baseline duration: 2.250 h; weather/operational downtime: 0.000 h; elapsed duration: 2.250 h.
- 251: Scenario: P50; P50 representative hindcast year 1984; cycle: 4; activity ID: 40; location: OFFSHORE; position: 7; safe-to-safe group: none; baseline duration: 1.500 h; weather/operational downtime: 0.000 h; elapsed duration: 1.500 h.
- 252: Scenario: P50; P50 representative hindcast year 1984; cycle: 4; activity ID: 41; location: OFFSHORE; position: 7; safe-to-safe group: none; baseline duration: 1.500 h; weather/operational downtime: 0.000 h; elapsed duration: 1.500 h.
- 253: Scenario: P50; P50 representative hindcast year 1984; cycle: 4; activity ID: 42; location: OFFSHORE; position: 7; safe-to-safe group: none; baseline duration: 4.500 h; weather/operational downtime: 0.000 h; elapsed duration: 4.500 h.
- 254: Scenario: P50; P50 representative hindcast year 1984; cycle: 4; activity ID: 43; location: OFFSHORE; position: 7; safe-to-safe group: none; baseline duration: 3.000 h; weather/operational downtime: 0.000 h; elapsed duration: 3.000 h.
- 255: Scenario: P50; P50 representative hindcast year 1984; cycle: 4; activity ID: 44; location: OFFSHORE; position: 7; safe-to-safe group: none; baseline duration: 2.000 h; weather/operational downtime: 0.000 h; elapsed duration: 2.000 h.
- 256: Scenario: P50; P50 representative hindcast year 1984; cycle: 4; activity ID: 21; location: OFFSHORE; position: 8; safe-to-safe group: none; baseline duration: 1.000 h; weather/operational downtime: 0.000 h; elapsed duration: 1.000 h.
- 257: Scenario: P50; P50 representative hindcast year 1984; cycle: 4; activity ID: 22; location: OFFSHORE; position: 8; safe-to-safe group: none; baseline duration: 1.000 h; weather/operational downtime: 0.000 h; elapsed duration: 1.000 h.
- 258: Scenario: P50; P50 representative hindcast year 1984; cycle: 4; activity ID: 23; location: OFFSHORE; position: 8; safe-to-safe group: none; baseline duration: 4.000 h; weather/operational downtime: 0.000 h; elapsed duration: 4.000 h.
- 259: Scenario: P50; P50 representative hindcast year 1984; cycle: 4; activity ID: 24; location: OFFSHORE; position: 8; safe-to-safe group: none; baseline duration: 3.000 h; weather/operational downtime: 0.000 h; elapsed duration: 3.000 h.
- 260: Scenario: P50; P50 representative hindcast year 1984; cycle: 4; activity ID: 25; location: OFFSHORE; position: 8; safe-to-safe group: none; baseline duration: 1.500 h; weather/operational downtime: 17.000 h; elapsed duration: 18.500 h.
- 261: Scenario: P50; P50 representative hindcast year 1984; cycle: 4; activity ID: 26; location: OFFSHORE; position: 8; safe-to-safe group: none; baseline duration: 3.000 h; weather/operational downtime: 0.000 h; elapsed duration: 3.000 h.
- 262: Scenario: P50; P50 representative hindcast year 1984; cycle: 4; activity ID: 27; location: OFFSHORE; position: 8; safe-to-safe group: G1; baseline duration: 1.500 h; weather/operational downtime: 0.000 h; elapsed duration: 1.500 h.
- 263: Scenario: P50; P50 representative hindcast year 1984; cycle: 4; activity ID: 28; location: OFFSHORE; position: 8; safe-to-safe group: G1; baseline duration: 5.250 h; weather/operational downtime: 0.000 h; elapsed duration: 5.250 h.
- 264: Scenario: P50; P50 representative hindcast year 1984; cycle: 4; activity ID: 29; location: OFFSHORE; position: 8; safe-to-safe group: G1; baseline duration: 0.750 h; weather/operational downtime: 0.000 h; elapsed duration: 0.750 h.
- 265: Scenario: P50; P50 representative hindcast year 1984; cycle: 4; activity ID: 30; location: OFFSHORE; position: 8; safe-to-safe group: G2; baseline duration: 0.750 h; weather/operational downtime: 0.000 h; elapsed duration: 0.750 h.
- 266: Scenario: P50; P50 representative hindcast year 1984; cycle: 4; activity ID: 31; location: OFFSHORE; position: 8; safe-to-safe group: G2; baseline duration: 3.375 h; weather/operational downtime: 0.000 h; elapsed duration: 3.500 h.
- 267: Scenario: P50; P50 representative hindcast year 1984; cycle: 4; activity ID: 32; location: OFFSHORE; position: 8; safe-to-safe group: G2; baseline duration: 0.750 h; weather/operational downtime: 0.000 h; elapsed duration: 0.750 h.
- 268: Scenario: P50; P50 representative hindcast year 1984; cycle: 4; activity ID: 33; location: OFFSHORE; position: 8; safe-to-safe group: G3; baseline duration: 0.750 h; weather/operational downtime: 0.000 h; elapsed duration: 0.750 h.
- 269: Scenario: P50; P50 representative hindcast year 1984; cycle: 4; activity ID: 34; location: OFFSHORE; position: 8; safe-to-safe group: G3; baseline duration: 2.625 h; weather/operational downtime: 0.000 h; elapsed duration: 2.750 h.
- 270: Scenario: P50; P50 representative hindcast year 1984; cycle: 4; activity ID: 35; location: OFFSHORE; position: 8; safe-to-safe group: G3; baseline duration: 2.250 h; weather/operational downtime: 0.000 h; elapsed duration: 2.250 h.
- 271: Scenario: P50; P50 representative hindcast year 1984; cycle: 4; activity ID: 36; location: OFFSHORE; position: 8; safe-to-safe group: G4; baseline duration: 2.625 h; weather/operational downtime: 61.500 h; elapsed duration: 64.250 h.
- 272: Scenario: P50; P50 representative hindcast year 1984; cycle: 4; activity ID: 37; location: OFFSHORE; position: 8; safe-to-safe group: G4; baseline duration: 2.250 h; weather/operational downtime: 0.000 h; elapsed duration: 2.250 h.
- 273: Scenario: P50; P50 representative hindcast year 1984; cycle: 4; activity ID: 38; location: OFFSHORE; position: 8; safe-to-safe group: G5; baseline duration: 2.625 h; weather/operational downtime: 3.000 h; elapsed duration: 5.750 h.
- 274: Scenario: P50; P50 representative hindcast year 1984; cycle: 4; activity ID: 39; location: OFFSHORE; position: 8; safe-to-safe group: G5; baseline duration: 2.250 h; weather/operational downtime: 0.000 h; elapsed duration: 2.250 h.
- 275: Scenario: P50; P50 representative hindcast year 1984; cycle: 4; activity ID: 40; location: OFFSHORE; position: 8; safe-to-safe group: none; baseline duration: 1.500 h; weather/operational downtime: 0.000 h; elapsed duration: 1.500 h.
- 276: Scenario: P50; P50 representative hindcast year 1984; cycle: 4; activity ID: 41; location: OFFSHORE; position: 8; safe-to-safe group: none; baseline duration: 1.500 h; weather/operational downtime: 42.500 h; elapsed duration: 44.000 h.
- 277: Scenario: P50; P50 representative hindcast year 1984; cycle: 4; activity ID: 42; location: OFFSHORE; position: 8; safe-to-safe group: none; baseline duration: 4.500 h; weather/operational downtime: 0.000 h; elapsed duration: 4.500 h.
- 278: Scenario: P50; P50 representative hindcast year 1984; cycle: 4; activity ID: 43; location: OFFSHORE; position: 8; safe-to-safe group: none; baseline duration: 3.000 h; weather/operational downtime: 0.000 h; elapsed duration: 3.000 h.
- 279: Scenario: P50; P50 representative hindcast year 1984; cycle: 4; activity ID: 44; location: OFFSHORE; position: 8; safe-to-safe group: none; baseline duration: 2.000 h; weather/operational downtime: 6.000 h; elapsed duration: 8.000 h.
- 280: Scenario: P50; P50 representative hindcast year 1984; cycle: 4; activity ID: 45; location: OFFSHORE; position: n/a; safe-to-safe group: none; baseline duration: 5.200 h; weather/operational downtime: 0.000 h; elapsed duration: 5.250 h.

| ID | WBS | Task | Type | Duration | Start | Finish | Predecessors | Duration WDT [days] | Location | Activity ID | Position | Safe-to-safe group |
| --- | --- | --- | --- | --- | --- | --- | --- | --- | --- | --- | --- | --- |
| 281 | 5 | **Cycle 05 — Positions 9–10** |  | 123.9eh | 2030-05-23 20:15 | 2030-05-30 07:30 |  | 1.302083 |  |  |  |  |
| 282 | 5.1 | Port maneuvering | manual | 1eh | 2030-05-23 20:15 | 2030-05-23 21:15 | 280 | 0.000000 | OFFSHORE | 1 |  |  |
| 283 | 5.2 | Preload and jacking up at port | manual | 2eh | 2030-05-23 21:15 | 2030-05-23 23:15 | 282 | 0.000000 | OFFSHORE | 2 |  |  |
| 284 | 5.3 | Release crane, gangway etc and prep for lifting | manual | 3eh | 2030-05-23 23:15 | 2030-05-24 02:15 | 283 | 0.000000 | OFFSHORE | 3 |  |  |
| 285 | 5.4 | Load in/out WTG supplier equipment | manual | 1eh | 2030-05-24 02:15 | 2030-05-24 03:15 | 284 | 0.000000 | OFFSHORE | 4 |  |  |
| 286 | 5.5 | Loadout Nacelle #1 | manual | 2.25eh | 2030-05-24 03:15 | 2030-05-24 05:30 | 285 | 0.000000 | OFFSHORE | 5 |  |  |
| 287 | 5.6 | Loadout Tower #1 | manual | 2.25eh | 2030-05-24 05:30 | 2030-05-24 07:45 | 286 | 0.000000 | OFFSHORE | 6 |  |  |
| 288 | 5.7 | Loadout Blade 1 | manual | 1.5eh | 2030-05-24 07:45 | 2030-05-24 14:30 | 287 | 0.218750 | OFFSHORE | 7 |  |  |
| 289 | 5.8 | Loadout Blade 2 | manual | 1.5eh | 2030-05-24 14:30 | 2030-05-24 16:00 | 288 | 0.000000 | OFFSHORE | 8 |  |  |
| 290 | 5.9 | Loadout Blade 3 | manual | 1.5eh | 2030-05-24 16:00 | 2030-05-24 17:30 | 289 | 0.000000 | OFFSHORE | 9 |  |  |
| 291 | 5.10 | Load in/out WTG supplier equipment | manual | 1eh | 2030-05-24 17:30 | 2030-05-24 18:30 | 290 | 0.000000 | OFFSHORE | 10 |  |  |
| 292 | 5.11 | Loadout Nacelle #2 | manual | 2.25eh | 2030-05-24 18:30 | 2030-05-24 20:45 | 291 | 0.000000 | OFFSHORE | 11 |  |  |
| 293 | 5.12 | Loadout Tower #2 | manual | 2.25eh | 2030-05-24 20:45 | 2030-05-24 23:00 | 292 | 0.000000 | OFFSHORE | 12 |  |  |
| 294 | 5.13 | Loadout Blade 1 | manual | 1.5eh | 2030-05-24 23:00 | 2030-05-26 02:30 | 293 | 1.083333 | OFFSHORE | 13 |  |  |
| 295 | 5.14 | Loadout Blade 2 | manual | 1.5eh | 2030-05-26 02:30 | 2030-05-26 04:00 | 294 | 0.000000 | OFFSHORE | 14 |  |  |
| 296 | 5.15 | Loadout Blade 3 | manual | 1.5eh | 2030-05-26 04:00 | 2030-05-26 05:30 | 295 | 0.000000 | OFFSHORE | 15 |  |  |
| 297 | 5.16 | Secure of crane, gangway (at port)) | manual | 3eh | 2030-05-26 05:30 | 2030-05-26 08:30 | 296 | 0.000000 | OFFSHORE | 16 |  |  |
| 298 | 5.17 | Jacking down at port | manual | 2eh | 2030-05-26 08:30 | 2030-05-26 10:30 | 297 | 0.000000 | OFFSHORE | 17 |  |  |
| 299 | 5.18 | Port maneuvering | manual | 1eh | 2030-05-26 10:30 | 2030-05-26 11:30 | 298 | 0.000000 | OFFSHORE | 18 |  |  |
| 300 | 5.19 | Transit from port to site | manual | 5.2eh | 2030-05-26 11:30 | 2030-05-26 16:45 | 299 | 0.000000 | OFFSHORE | 19 |  |  |
| 301 | 5.20 | DP field check | manual | 0.5eh | 2030-05-26 16:45 | 2030-05-26 17:15 | 300 | 0.000000 | OFFSHORE | 20 |  |  |
| 302 | 5.21 | Transit to next foundation | manual | 1eh | 2030-05-26 17:15 | 2030-05-26 18:15 | 301 | 0.000000 | OFFSHORE | 21 | 9 |  |
| 303 | 5.22 | Positioning at WTG location | manual | 1eh | 2030-05-26 18:15 | 2030-05-26 19:15 | 302 | 0.000000 | OFFSHORE | 22 | 9 |  |
| 304 | 5.23 | Preload and jacking up at site | manual | 4eh | 2030-05-26 19:15 | 2030-05-26 23:15 | 303 | 0.000000 | OFFSHORE | 23 | 9 |  |
| 305 | 5.24 | Release crane, gangway and prep for lifting | manual | 3eh | 2030-05-26 23:15 | 2030-05-27 02:15 | 304 | 0.000000 | OFFSHORE | 24 | 9 |  |
| 306 | 5.25 | Remove TP cover and Preparation of TP | manual | 1eh | 2030-05-27 02:15 | 2030-05-27 03:15 | 305 | 0.000000 | OFFSHORE | 25 | 9 |  |
| 307 | 5.26 | Tower preparation, removal of seafastening bolts | manual | 2eh | 2030-05-27 03:15 | 2030-05-27 05:15 | 306 | 0.000000 | OFFSHORE | 26 | 9 |  |
| 308 | 5.27 | Tower rigging-up (attached lifting equipment) | manual | 1eh | 2030-05-27 05:15 | 2030-05-27 06:15 | 307 | 0.000000 | OFFSHORE | 27 | 9 | G1 |
| 309 | 5.28 | Tower Lifting (safe-to-safe) | manual | 3.5eh | 2030-05-27 06:15 | 2030-05-27 09:45 | 308 | 0.000000 | OFFSHORE | 28 | 9 | G1 |
| 310 | 5.29 | Tower derigging (remove lifting equipment) | manual | 0.5eh | 2030-05-27 09:45 | 2030-05-27 10:15 | 309 | 0.000000 | OFFSHORE | 29 | 9 | G1 |
| 311 | 5.30 | Nacelle preparation and rigging | manual | 0.5eh | 2030-05-27 10:15 | 2030-05-27 10:45 | 310 | 0.000000 | OFFSHORE | 30 | 9 | G2 |
| 312 | 5.31 | Nacelle Lifting (safe-to-safe) | manual | 2.25eh | 2030-05-27 10:45 | 2030-05-27 13:00 | 311 | 0.000000 | OFFSHORE | 31 | 9 | G2 |
| 313 | 5.32 | Nacelle derigging (remove lifting equipment) | manual | 0.5eh | 2030-05-27 13:00 | 2030-05-27 13:30 | 312 | 0.000000 | OFFSHORE | 32 | 9 | G2 |
| 314 | 5.33 | Blade yoke rigging and attachement to Blade #1 | manual | 0.5eh | 2030-05-27 13:30 | 2030-05-27 14:00 | 313 | 0.000000 | OFFSHORE | 33 | 9 | G3 |
| 315 | 5.34 | Blade #1 Lifting (safe-to-safe) | manual | 1.75eh | 2030-05-27 14:00 | 2030-05-27 15:45 | 314 | 0.000000 | OFFSHORE | 34 | 9 | G3 |
| 316 | 5.35 | Blade #1 completion work, re-locate blade yoke to next blade | manual | 1.5eh | 2030-05-27 15:45 | 2030-05-27 17:15 | 315 | 0.000000 | OFFSHORE | 35 | 9 | G3 |
| 317 | 5.36 | Blade #2 Lifting (safe-to-safe) | manual | 1.75eh | 2030-05-27 17:15 | 2030-05-27 19:00 | 316 | 0.000000 | OFFSHORE | 36 | 9 | G4 |
| 318 | 5.37 | Balde #2 completion work, re-locate blade yoke to next blade | manual | 1.5eh | 2030-05-27 19:00 | 2030-05-27 20:30 | 317 | 0.000000 | OFFSHORE | 37 | 9 | G4 |
| 319 | 5.38 | Blade #3 Lifting (safe-to-safe) | manual | 1.75eh | 2030-05-27 20:30 | 2030-05-27 22:15 | 318 | 0.000000 | OFFSHORE | 38 | 9 | G5 |
| 320 | 5.39 | Blade #3 completion work, blade yoke de-rigging | manual | 1.5eh | 2030-05-27 22:15 | 2030-05-27 23:45 | 319 | 0.000000 | OFFSHORE | 39 | 9 | G5 |
| 321 | 5.40 | Handling HSBM and lifting tools | manual | 1eh | 2030-05-27 23:45 | 2030-05-28 00:45 | 320 | 0.000000 | OFFSHORE | 40 | 9 |  |
| 322 | 5.41 | Lifting HSBM and lifting tools from Nacelle | manual | 1eh | 2030-05-28 00:45 | 2030-05-28 01:45 | 321 | 0.000000 | OFFSHORE | 41 | 9 |  |
| 323 | 5.42 | Turbine general completion works | manual | 3eh | 2030-05-28 01:45 | 2030-05-28 04:45 | 322 | 0.000000 | OFFSHORE | 42 | 9 |  |
| 324 | 5.43 | Secure of crane, gangway etc. Preparation for jacking down and sailing | manual | 3eh | 2030-05-28 04:45 | 2030-05-28 07:45 | 323 | 0.000000 | OFFSHORE | 43 | 9 |  |
| 325 | 5.44 | Jacking down at site | manual | 2eh | 2030-05-28 07:45 | 2030-05-28 09:45 | 324 | 0.000000 | OFFSHORE | 44 | 9 |  |
| 326 | 5.45 | Transit to next foundation | manual | 1eh | 2030-05-28 09:45 | 2030-05-28 10:45 | 325 | 0.000000 | OFFSHORE | 21 | 10 |  |
| 327 | 5.46 | Positioning at WTG location | manual | 1eh | 2030-05-28 10:45 | 2030-05-28 11:45 | 326 | 0.000000 | OFFSHORE | 22 | 10 |  |
| 328 | 5.47 | Preload and jacking up at site | manual | 4eh | 2030-05-28 11:45 | 2030-05-28 15:45 | 327 | 0.000000 | OFFSHORE | 23 | 10 |  |
| 329 | 5.48 | Release crane, gangway and prep for lifting | manual | 3eh | 2030-05-28 15:45 | 2030-05-28 18:45 | 328 | 0.000000 | OFFSHORE | 24 | 10 |  |
| 330 | 5.49 | Remove TP cover and Preparation of TP | manual | 1eh | 2030-05-28 18:45 | 2030-05-28 19:45 | 329 | 0.000000 | OFFSHORE | 25 | 10 |  |
| 331 | 5.50 | Tower preparation, removal of seafastening bolts | manual | 2eh | 2030-05-28 19:45 | 2030-05-28 21:45 | 330 | 0.000000 | OFFSHORE | 26 | 10 |  |
| 332 | 5.51 | Tower rigging-up (attached lifting equipment) | manual | 1eh | 2030-05-28 21:45 | 2030-05-28 22:45 | 331 | 0.000000 | OFFSHORE | 27 | 10 | G1 |
| 333 | 5.52 | Tower Lifting (safe-to-safe) | manual | 3.5eh | 2030-05-28 22:45 | 2030-05-29 02:15 | 332 | 0.000000 | OFFSHORE | 28 | 10 | G1 |
| 334 | 5.53 | Tower derigging (remove lifting equipment) | manual | 0.5eh | 2030-05-29 02:15 | 2030-05-29 02:45 | 333 | 0.000000 | OFFSHORE | 29 | 10 | G1 |
| 335 | 5.54 | Nacelle preparation and rigging | manual | 0.5eh | 2030-05-29 02:45 | 2030-05-29 03:15 | 334 | 0.000000 | OFFSHORE | 30 | 10 | G2 |
| 336 | 5.55 | Nacelle Lifting (safe-to-safe) | manual | 2.25eh | 2030-05-29 03:15 | 2030-05-29 05:30 | 335 | 0.000000 | OFFSHORE | 31 | 10 | G2 |
| 337 | 5.56 | Nacelle derigging (remove lifting equipment) | manual | 0.5eh | 2030-05-29 05:30 | 2030-05-29 06:00 | 336 | 0.000000 | OFFSHORE | 32 | 10 | G2 |
| 338 | 5.57 | Blade yoke rigging and attachement to Blade #1 | manual | 0.5eh | 2030-05-29 06:00 | 2030-05-29 06:30 | 337 | 0.000000 | OFFSHORE | 33 | 10 | G3 |
| 339 | 5.58 | Blade #1 Lifting (safe-to-safe) | manual | 1.75eh | 2030-05-29 06:30 | 2030-05-29 08:15 | 338 | 0.000000 | OFFSHORE | 34 | 10 | G3 |
| 340 | 5.59 | Blade #1 completion work, re-locate blade yoke to next blade | manual | 1.5eh | 2030-05-29 08:15 | 2030-05-29 09:45 | 339 | 0.000000 | OFFSHORE | 35 | 10 | G3 |
| 341 | 5.60 | Blade #2 Lifting (safe-to-safe) | manual | 1.75eh | 2030-05-29 09:45 | 2030-05-29 11:30 | 340 | 0.000000 | OFFSHORE | 36 | 10 | G4 |
| 342 | 5.61 | Balde #2 completion work, re-locate blade yoke to next blade | manual | 1.5eh | 2030-05-29 11:30 | 2030-05-29 13:00 | 341 | 0.000000 | OFFSHORE | 37 | 10 | G4 |
| 343 | 5.62 | Blade #3 Lifting (safe-to-safe) | manual | 1.75eh | 2030-05-29 13:00 | 2030-05-29 14:45 | 342 | 0.000000 | OFFSHORE | 38 | 10 | G5 |
| 344 | 5.63 | Blade #3 completion work, blade yoke de-rigging | manual | 1.5eh | 2030-05-29 14:45 | 2030-05-29 16:15 | 343 | 0.000000 | OFFSHORE | 39 | 10 | G5 |
| 345 | 5.64 | Handling HSBM and lifting tools | manual | 1eh | 2030-05-29 16:15 | 2030-05-29 17:15 | 344 | 0.000000 | OFFSHORE | 40 | 10 |  |
| 346 | 5.65 | Lifting HSBM and lifting tools from Nacelle | manual | 1eh | 2030-05-29 17:15 | 2030-05-29 18:15 | 345 | 0.000000 | OFFSHORE | 41 | 10 |  |
| 347 | 5.66 | Turbine general completion works | manual | 3eh | 2030-05-29 18:15 | 2030-05-29 21:15 | 346 | 0.000000 | OFFSHORE | 42 | 10 |  |
| 348 | 5.67 | Secure of crane, gangway etc. Preparation for jacking down and sailing | manual | 3eh | 2030-05-29 21:15 | 2030-05-30 00:15 | 347 | 0.000000 | OFFSHORE | 43 | 10 |  |
| 349 | 5.68 | Jacking down at site | manual | 2eh | 2030-05-30 00:15 | 2030-05-30 02:15 | 348 | 0.000000 | OFFSHORE | 44 | 10 |  |
| 350 | 5.69 | Transit from site to port | manual | 5.2eh | 2030-05-30 02:15 | 2030-05-30 07:30 | 349 | 0.000000 | OFFSHORE | 45 |  |  |

Notes:
- 281: P50 representative hindcast year 1984; cycle 5; baseline duration 5.163 days; downtime 1.302 days; elapsed duration 6.469 days.
- 282: Scenario: P50; P50 representative hindcast year 1984; cycle: 5; activity ID: 1; location: OFFSHORE; position: n/a; safe-to-safe group: none; baseline duration: 1.000 h; weather/operational downtime: 0.000 h; elapsed duration: 1.000 h.
- 283: Scenario: P50; P50 representative hindcast year 1984; cycle: 5; activity ID: 2; location: OFFSHORE; position: n/a; safe-to-safe group: none; baseline duration: 2.000 h; weather/operational downtime: 0.000 h; elapsed duration: 2.000 h.
- 284: Scenario: P50; P50 representative hindcast year 1984; cycle: 5; activity ID: 3; location: OFFSHORE; position: n/a; safe-to-safe group: none; baseline duration: 3.000 h; weather/operational downtime: 0.000 h; elapsed duration: 3.000 h.
- 285: Scenario: P50; P50 representative hindcast year 1984; cycle: 5; activity ID: 4; location: OFFSHORE; position: n/a; safe-to-safe group: none; baseline duration: 1.000 h; weather/operational downtime: 0.000 h; elapsed duration: 1.000 h.
- 286: Scenario: P50; P50 representative hindcast year 1984; cycle: 5; activity ID: 5; location: OFFSHORE; position: n/a; safe-to-safe group: none; baseline duration: 2.250 h; weather/operational downtime: 0.000 h; elapsed duration: 2.250 h.
- 287: Scenario: P50; P50 representative hindcast year 1984; cycle: 5; activity ID: 6; location: OFFSHORE; position: n/a; safe-to-safe group: none; baseline duration: 2.250 h; weather/operational downtime: 0.000 h; elapsed duration: 2.250 h.
- 288: Scenario: P50; P50 representative hindcast year 1984; cycle: 5; activity ID: 7; location: OFFSHORE; position: n/a; safe-to-safe group: none; baseline duration: 1.500 h; weather/operational downtime: 5.250 h; elapsed duration: 6.750 h.
- 289: Scenario: P50; P50 representative hindcast year 1984; cycle: 5; activity ID: 8; location: OFFSHORE; position: n/a; safe-to-safe group: none; baseline duration: 1.500 h; weather/operational downtime: 0.000 h; elapsed duration: 1.500 h.
- 290: Scenario: P50; P50 representative hindcast year 1984; cycle: 5; activity ID: 9; location: OFFSHORE; position: n/a; safe-to-safe group: none; baseline duration: 1.500 h; weather/operational downtime: 0.000 h; elapsed duration: 1.500 h.
- 291: Scenario: P50; P50 representative hindcast year 1984; cycle: 5; activity ID: 10; location: OFFSHORE; position: n/a; safe-to-safe group: none; baseline duration: 1.000 h; weather/operational downtime: 0.000 h; elapsed duration: 1.000 h.
- 292: Scenario: P50; P50 representative hindcast year 1984; cycle: 5; activity ID: 11; location: OFFSHORE; position: n/a; safe-to-safe group: none; baseline duration: 2.250 h; weather/operational downtime: 0.000 h; elapsed duration: 2.250 h.
- 293: Scenario: P50; P50 representative hindcast year 1984; cycle: 5; activity ID: 12; location: OFFSHORE; position: n/a; safe-to-safe group: none; baseline duration: 2.250 h; weather/operational downtime: 0.000 h; elapsed duration: 2.250 h.
- 294: Scenario: P50; P50 representative hindcast year 1984; cycle: 5; activity ID: 13; location: OFFSHORE; position: n/a; safe-to-safe group: none; baseline duration: 1.500 h; weather/operational downtime: 26.000 h; elapsed duration: 27.500 h.
- 295: Scenario: P50; P50 representative hindcast year 1984; cycle: 5; activity ID: 14; location: OFFSHORE; position: n/a; safe-to-safe group: none; baseline duration: 1.500 h; weather/operational downtime: 0.000 h; elapsed duration: 1.500 h.
- 296: Scenario: P50; P50 representative hindcast year 1984; cycle: 5; activity ID: 15; location: OFFSHORE; position: n/a; safe-to-safe group: none; baseline duration: 1.500 h; weather/operational downtime: 0.000 h; elapsed duration: 1.500 h.
- 297: Scenario: P50; P50 representative hindcast year 1984; cycle: 5; activity ID: 16; location: OFFSHORE; position: n/a; safe-to-safe group: none; baseline duration: 3.000 h; weather/operational downtime: 0.000 h; elapsed duration: 3.000 h.
- 298: Scenario: P50; P50 representative hindcast year 1984; cycle: 5; activity ID: 17; location: OFFSHORE; position: n/a; safe-to-safe group: none; baseline duration: 2.000 h; weather/operational downtime: 0.000 h; elapsed duration: 2.000 h.
- 299: Scenario: P50; P50 representative hindcast year 1984; cycle: 5; activity ID: 18; location: OFFSHORE; position: n/a; safe-to-safe group: none; baseline duration: 1.000 h; weather/operational downtime: 0.000 h; elapsed duration: 1.000 h.
- 300: Scenario: P50; P50 representative hindcast year 1984; cycle: 5; activity ID: 19; location: OFFSHORE; position: n/a; safe-to-safe group: none; baseline duration: 5.200 h; weather/operational downtime: 0.000 h; elapsed duration: 5.250 h.
- 301: Scenario: P50; P50 representative hindcast year 1984; cycle: 5; activity ID: 20; location: OFFSHORE; position: n/a; safe-to-safe group: none; baseline duration: 0.500 h; weather/operational downtime: 0.000 h; elapsed duration: 0.500 h.
- 302: Scenario: P50; P50 representative hindcast year 1984; cycle: 5; activity ID: 21; location: OFFSHORE; position: 9; safe-to-safe group: none; baseline duration: 1.000 h; weather/operational downtime: 0.000 h; elapsed duration: 1.000 h.
- 303: Scenario: P50; P50 representative hindcast year 1984; cycle: 5; activity ID: 22; location: OFFSHORE; position: 9; safe-to-safe group: none; baseline duration: 1.000 h; weather/operational downtime: 0.000 h; elapsed duration: 1.000 h.
- 304: Scenario: P50; P50 representative hindcast year 1984; cycle: 5; activity ID: 23; location: OFFSHORE; position: 9; safe-to-safe group: none; baseline duration: 4.000 h; weather/operational downtime: 0.000 h; elapsed duration: 4.000 h.
- 305: Scenario: P50; P50 representative hindcast year 1984; cycle: 5; activity ID: 24; location: OFFSHORE; position: 9; safe-to-safe group: none; baseline duration: 3.000 h; weather/operational downtime: 0.000 h; elapsed duration: 3.000 h.
- 306: Scenario: P50; P50 representative hindcast year 1984; cycle: 5; activity ID: 25; location: OFFSHORE; position: 9; safe-to-safe group: none; baseline duration: 1.000 h; weather/operational downtime: 0.000 h; elapsed duration: 1.000 h.
- 307: Scenario: P50; P50 representative hindcast year 1984; cycle: 5; activity ID: 26; location: OFFSHORE; position: 9; safe-to-safe group: none; baseline duration: 2.000 h; weather/operational downtime: 0.000 h; elapsed duration: 2.000 h.
- 308: Scenario: P50; P50 representative hindcast year 1984; cycle: 5; activity ID: 27; location: OFFSHORE; position: 9; safe-to-safe group: G1; baseline duration: 1.000 h; weather/operational downtime: 0.000 h; elapsed duration: 1.000 h.
- 309: Scenario: P50; P50 representative hindcast year 1984; cycle: 5; activity ID: 28; location: OFFSHORE; position: 9; safe-to-safe group: G1; baseline duration: 3.500 h; weather/operational downtime: 0.000 h; elapsed duration: 3.500 h.
- 310: Scenario: P50; P50 representative hindcast year 1984; cycle: 5; activity ID: 29; location: OFFSHORE; position: 9; safe-to-safe group: G1; baseline duration: 0.500 h; weather/operational downtime: 0.000 h; elapsed duration: 0.500 h.
- 311: Scenario: P50; P50 representative hindcast year 1984; cycle: 5; activity ID: 30; location: OFFSHORE; position: 9; safe-to-safe group: G2; baseline duration: 0.500 h; weather/operational downtime: 0.000 h; elapsed duration: 0.500 h.
- 312: Scenario: P50; P50 representative hindcast year 1984; cycle: 5; activity ID: 31; location: OFFSHORE; position: 9; safe-to-safe group: G2; baseline duration: 2.250 h; weather/operational downtime: 0.000 h; elapsed duration: 2.250 h.
- 313: Scenario: P50; P50 representative hindcast year 1984; cycle: 5; activity ID: 32; location: OFFSHORE; position: 9; safe-to-safe group: G2; baseline duration: 0.500 h; weather/operational downtime: 0.000 h; elapsed duration: 0.500 h.
- 314: Scenario: P50; P50 representative hindcast year 1984; cycle: 5; activity ID: 33; location: OFFSHORE; position: 9; safe-to-safe group: G3; baseline duration: 0.500 h; weather/operational downtime: 0.000 h; elapsed duration: 0.500 h.
- 315: Scenario: P50; P50 representative hindcast year 1984; cycle: 5; activity ID: 34; location: OFFSHORE; position: 9; safe-to-safe group: G3; baseline duration: 1.750 h; weather/operational downtime: 0.000 h; elapsed duration: 1.750 h.
- 316: Scenario: P50; P50 representative hindcast year 1984; cycle: 5; activity ID: 35; location: OFFSHORE; position: 9; safe-to-safe group: G3; baseline duration: 1.500 h; weather/operational downtime: 0.000 h; elapsed duration: 1.500 h.
- 317: Scenario: P50; P50 representative hindcast year 1984; cycle: 5; activity ID: 36; location: OFFSHORE; position: 9; safe-to-safe group: G4; baseline duration: 1.750 h; weather/operational downtime: 0.000 h; elapsed duration: 1.750 h.
- 318: Scenario: P50; P50 representative hindcast year 1984; cycle: 5; activity ID: 37; location: OFFSHORE; position: 9; safe-to-safe group: G4; baseline duration: 1.500 h; weather/operational downtime: 0.000 h; elapsed duration: 1.500 h.
- 319: Scenario: P50; P50 representative hindcast year 1984; cycle: 5; activity ID: 38; location: OFFSHORE; position: 9; safe-to-safe group: G5; baseline duration: 1.750 h; weather/operational downtime: 0.000 h; elapsed duration: 1.750 h.
- 320: Scenario: P50; P50 representative hindcast year 1984; cycle: 5; activity ID: 39; location: OFFSHORE; position: 9; safe-to-safe group: G5; baseline duration: 1.500 h; weather/operational downtime: 0.000 h; elapsed duration: 1.500 h.
- 321: Scenario: P50; P50 representative hindcast year 1984; cycle: 5; activity ID: 40; location: OFFSHORE; position: 9; safe-to-safe group: none; baseline duration: 1.000 h; weather/operational downtime: 0.000 h; elapsed duration: 1.000 h.
- 322: Scenario: P50; P50 representative hindcast year 1984; cycle: 5; activity ID: 41; location: OFFSHORE; position: 9; safe-to-safe group: none; baseline duration: 1.000 h; weather/operational downtime: 0.000 h; elapsed duration: 1.000 h.
- 323: Scenario: P50; P50 representative hindcast year 1984; cycle: 5; activity ID: 42; location: OFFSHORE; position: 9; safe-to-safe group: none; baseline duration: 3.000 h; weather/operational downtime: 0.000 h; elapsed duration: 3.000 h.
- 324: Scenario: P50; P50 representative hindcast year 1984; cycle: 5; activity ID: 43; location: OFFSHORE; position: 9; safe-to-safe group: none; baseline duration: 3.000 h; weather/operational downtime: 0.000 h; elapsed duration: 3.000 h.
- 325: Scenario: P50; P50 representative hindcast year 1984; cycle: 5; activity ID: 44; location: OFFSHORE; position: 9; safe-to-safe group: none; baseline duration: 2.000 h; weather/operational downtime: 0.000 h; elapsed duration: 2.000 h.
- 326: Scenario: P50; P50 representative hindcast year 1984; cycle: 5; activity ID: 21; location: OFFSHORE; position: 10; safe-to-safe group: none; baseline duration: 1.000 h; weather/operational downtime: 0.000 h; elapsed duration: 1.000 h.
- 327: Scenario: P50; P50 representative hindcast year 1984; cycle: 5; activity ID: 22; location: OFFSHORE; position: 10; safe-to-safe group: none; baseline duration: 1.000 h; weather/operational downtime: 0.000 h; elapsed duration: 1.000 h.
- 328: Scenario: P50; P50 representative hindcast year 1984; cycle: 5; activity ID: 23; location: OFFSHORE; position: 10; safe-to-safe group: none; baseline duration: 4.000 h; weather/operational downtime: 0.000 h; elapsed duration: 4.000 h.
- 329: Scenario: P50; P50 representative hindcast year 1984; cycle: 5; activity ID: 24; location: OFFSHORE; position: 10; safe-to-safe group: none; baseline duration: 3.000 h; weather/operational downtime: 0.000 h; elapsed duration: 3.000 h.
- 330: Scenario: P50; P50 representative hindcast year 1984; cycle: 5; activity ID: 25; location: OFFSHORE; position: 10; safe-to-safe group: none; baseline duration: 1.000 h; weather/operational downtime: 0.000 h; elapsed duration: 1.000 h.
- 331: Scenario: P50; P50 representative hindcast year 1984; cycle: 5; activity ID: 26; location: OFFSHORE; position: 10; safe-to-safe group: none; baseline duration: 2.000 h; weather/operational downtime: 0.000 h; elapsed duration: 2.000 h.
- 332: Scenario: P50; P50 representative hindcast year 1984; cycle: 5; activity ID: 27; location: OFFSHORE; position: 10; safe-to-safe group: G1; baseline duration: 1.000 h; weather/operational downtime: 0.000 h; elapsed duration: 1.000 h.
- 333: Scenario: P50; P50 representative hindcast year 1984; cycle: 5; activity ID: 28; location: OFFSHORE; position: 10; safe-to-safe group: G1; baseline duration: 3.500 h; weather/operational downtime: 0.000 h; elapsed duration: 3.500 h.
- 334: Scenario: P50; P50 representative hindcast year 1984; cycle: 5; activity ID: 29; location: OFFSHORE; position: 10; safe-to-safe group: G1; baseline duration: 0.500 h; weather/operational downtime: 0.000 h; elapsed duration: 0.500 h.
- 335: Scenario: P50; P50 representative hindcast year 1984; cycle: 5; activity ID: 30; location: OFFSHORE; position: 10; safe-to-safe group: G2; baseline duration: 0.500 h; weather/operational downtime: 0.000 h; elapsed duration: 0.500 h.
- 336: Scenario: P50; P50 representative hindcast year 1984; cycle: 5; activity ID: 31; location: OFFSHORE; position: 10; safe-to-safe group: G2; baseline duration: 2.250 h; weather/operational downtime: 0.000 h; elapsed duration: 2.250 h.
- 337: Scenario: P50; P50 representative hindcast year 1984; cycle: 5; activity ID: 32; location: OFFSHORE; position: 10; safe-to-safe group: G2; baseline duration: 0.500 h; weather/operational downtime: 0.000 h; elapsed duration: 0.500 h.
- 338: Scenario: P50; P50 representative hindcast year 1984; cycle: 5; activity ID: 33; location: OFFSHORE; position: 10; safe-to-safe group: G3; baseline duration: 0.500 h; weather/operational downtime: 0.000 h; elapsed duration: 0.500 h.
- 339: Scenario: P50; P50 representative hindcast year 1984; cycle: 5; activity ID: 34; location: OFFSHORE; position: 10; safe-to-safe group: G3; baseline duration: 1.750 h; weather/operational downtime: 0.000 h; elapsed duration: 1.750 h.
- 340: Scenario: P50; P50 representative hindcast year 1984; cycle: 5; activity ID: 35; location: OFFSHORE; position: 10; safe-to-safe group: G3; baseline duration: 1.500 h; weather/operational downtime: 0.000 h; elapsed duration: 1.500 h.
- 341: Scenario: P50; P50 representative hindcast year 1984; cycle: 5; activity ID: 36; location: OFFSHORE; position: 10; safe-to-safe group: G4; baseline duration: 1.750 h; weather/operational downtime: 0.000 h; elapsed duration: 1.750 h.
- 342: Scenario: P50; P50 representative hindcast year 1984; cycle: 5; activity ID: 37; location: OFFSHORE; position: 10; safe-to-safe group: G4; baseline duration: 1.500 h; weather/operational downtime: 0.000 h; elapsed duration: 1.500 h.
- 343: Scenario: P50; P50 representative hindcast year 1984; cycle: 5; activity ID: 38; location: OFFSHORE; position: 10; safe-to-safe group: G5; baseline duration: 1.750 h; weather/operational downtime: 0.000 h; elapsed duration: 1.750 h.
- 344: Scenario: P50; P50 representative hindcast year 1984; cycle: 5; activity ID: 39; location: OFFSHORE; position: 10; safe-to-safe group: G5; baseline duration: 1.500 h; weather/operational downtime: 0.000 h; elapsed duration: 1.500 h.
- 345: Scenario: P50; P50 representative hindcast year 1984; cycle: 5; activity ID: 40; location: OFFSHORE; position: 10; safe-to-safe group: none; baseline duration: 1.000 h; weather/operational downtime: 0.000 h; elapsed duration: 1.000 h.
- 346: Scenario: P50; P50 representative hindcast year 1984; cycle: 5; activity ID: 41; location: OFFSHORE; position: 10; safe-to-safe group: none; baseline duration: 1.000 h; weather/operational downtime: 0.000 h; elapsed duration: 1.000 h.
- 347: Scenario: P50; P50 representative hindcast year 1984; cycle: 5; activity ID: 42; location: OFFSHORE; position: 10; safe-to-safe group: none; baseline duration: 3.000 h; weather/operational downtime: 0.000 h; elapsed duration: 3.000 h.
- 348: Scenario: P50; P50 representative hindcast year 1984; cycle: 5; activity ID: 43; location: OFFSHORE; position: 10; safe-to-safe group: none; baseline duration: 3.000 h; weather/operational downtime: 0.000 h; elapsed duration: 3.000 h.
- 349: Scenario: P50; P50 representative hindcast year 1984; cycle: 5; activity ID: 44; location: OFFSHORE; position: 10; safe-to-safe group: none; baseline duration: 2.000 h; weather/operational downtime: 0.000 h; elapsed duration: 2.000 h.
- 350: Scenario: P50; P50 representative hindcast year 1984; cycle: 5; activity ID: 45; location: OFFSHORE; position: n/a; safe-to-safe group: none; baseline duration: 5.200 h; weather/operational downtime: 0.000 h; elapsed duration: 5.250 h.

| ID | WBS | Task | Type | Duration | Start | Finish | Predecessors | Duration WDT [days] | Location | Activity ID | Position | Safe-to-safe group |
| --- | --- | --- | --- | --- | --- | --- | --- | --- | --- | --- | --- | --- |
| 351 | 6 | **Cycle 06 — Positions 11–12** |  | 123.9eh | 2030-05-30 07:30 | 2030-06-05 21:15 |  | 1.406250 |  |  |  |  |
| 352 | 6.1 | Port maneuvering | manual | 1eh | 2030-05-30 07:30 | 2030-05-30 08:30 | 350 | 0.000000 | OFFSHORE | 1 |  |  |
| 353 | 6.2 | Preload and jacking up at port | manual | 2eh | 2030-05-30 08:30 | 2030-05-30 10:30 | 352 | 0.000000 | OFFSHORE | 2 |  |  |
| 354 | 6.3 | Release crane, gangway etc and prep for lifting | manual | 3eh | 2030-05-30 10:30 | 2030-05-30 13:30 | 353 | 0.000000 | OFFSHORE | 3 |  |  |
| 355 | 6.4 | Load in/out WTG supplier equipment | manual | 1eh | 2030-05-30 13:30 | 2030-05-30 14:30 | 354 | 0.000000 | OFFSHORE | 4 |  |  |
| 356 | 6.5 | Loadout Nacelle #1 | manual | 2.25eh | 2030-05-30 14:30 | 2030-05-30 16:45 | 355 | 0.000000 | OFFSHORE | 5 |  |  |
| 357 | 6.6 | Loadout Tower #1 | manual | 2.25eh | 2030-05-30 16:45 | 2030-05-30 19:00 | 356 | 0.000000 | OFFSHORE | 6 |  |  |
| 358 | 6.7 | Loadout Blade 1 | manual | 1.5eh | 2030-05-30 19:00 | 2030-05-30 20:30 | 357 | 0.000000 | OFFSHORE | 7 |  |  |
| 359 | 6.8 | Loadout Blade 2 | manual | 1.5eh | 2030-05-30 20:30 | 2030-05-30 22:00 | 358 | 0.000000 | OFFSHORE | 8 |  |  |
| 360 | 6.9 | Loadout Blade 3 | manual | 1.5eh | 2030-05-30 22:00 | 2030-05-31 02:30 | 359 | 0.125000 | OFFSHORE | 9 |  |  |
| 361 | 6.10 | Load in/out WTG supplier equipment | manual | 1eh | 2030-05-31 02:30 | 2030-05-31 03:30 | 360 | 0.000000 | OFFSHORE | 10 |  |  |
| 362 | 6.11 | Loadout Nacelle #2 | manual | 2.25eh | 2030-05-31 03:30 | 2030-05-31 05:45 | 361 | 0.000000 | OFFSHORE | 11 |  |  |
| 363 | 6.12 | Loadout Tower #2 | manual | 2.25eh | 2030-05-31 05:45 | 2030-05-31 08:00 | 362 | 0.000000 | OFFSHORE | 12 |  |  |
| 364 | 6.13 | Loadout Blade 1 | manual | 1.5eh | 2030-05-31 08:00 | 2030-05-31 09:30 | 363 | 0.000000 | OFFSHORE | 13 |  |  |
| 365 | 6.14 | Loadout Blade 2 | manual | 1.5eh | 2030-05-31 09:30 | 2030-05-31 11:00 | 364 | 0.000000 | OFFSHORE | 14 |  |  |
| 366 | 6.15 | Loadout Blade 3 | manual | 1.5eh | 2030-05-31 11:00 | 2030-05-31 12:30 | 365 | 0.000000 | OFFSHORE | 15 |  |  |
| 367 | 6.16 | Secure of crane, gangway (at port)) | manual | 3eh | 2030-05-31 12:30 | 2030-05-31 15:30 | 366 | 0.000000 | OFFSHORE | 16 |  |  |
| 368 | 6.17 | Jacking down at port | manual | 2eh | 2030-05-31 15:30 | 2030-05-31 17:30 | 367 | 0.000000 | OFFSHORE | 17 |  |  |
| 369 | 6.18 | Port maneuvering | manual | 1eh | 2030-05-31 17:30 | 2030-05-31 18:30 | 368 | 0.000000 | OFFSHORE | 18 |  |  |
| 370 | 6.19 | Transit from port to site | manual | 5.2eh | 2030-05-31 18:30 | 2030-05-31 23:45 | 369 | 0.000000 | OFFSHORE | 19 |  |  |
| 371 | 6.20 | DP field check | manual | 0.5eh | 2030-05-31 23:45 | 2030-06-01 00:15 | 370 | 0.000000 | OFFSHORE | 20 |  |  |
| 372 | 6.21 | Transit to next foundation | manual | 1eh | 2030-06-01 00:15 | 2030-06-01 01:15 | 371 | 0.000000 | OFFSHORE | 21 | 11 |  |
| 373 | 6.22 | Positioning at WTG location | manual | 1eh | 2030-06-01 01:15 | 2030-06-01 02:15 | 372 | 0.000000 | OFFSHORE | 22 | 11 |  |
| 374 | 6.23 | Preload and jacking up at site | manual | 4eh | 2030-06-01 02:15 | 2030-06-01 06:15 | 373 | 0.000000 | OFFSHORE | 23 | 11 |  |
| 375 | 6.24 | Release crane, gangway and prep for lifting | manual | 3eh | 2030-06-01 06:15 | 2030-06-01 09:15 | 374 | 0.000000 | OFFSHORE | 24 | 11 |  |
| 376 | 6.25 | Remove TP cover and Preparation of TP | manual | 1eh | 2030-06-01 09:15 | 2030-06-02 13:00 | 375 | 1.114583 | OFFSHORE | 25 | 11 |  |
| 377 | 6.26 | Tower preparation, removal of seafastening bolts | manual | 2eh | 2030-06-02 13:00 | 2030-06-02 15:00 | 376 | 0.000000 | OFFSHORE | 26 | 11 |  |
| 378 | 6.27 | Tower rigging-up (attached lifting equipment) | manual | 1eh | 2030-06-02 15:00 | 2030-06-02 16:00 | 377 | 0.000000 | OFFSHORE | 27 | 11 | G1 |
| 379 | 6.28 | Tower Lifting (safe-to-safe) | manual | 3.5eh | 2030-06-02 16:00 | 2030-06-02 19:30 | 378 | 0.000000 | OFFSHORE | 28 | 11 | G1 |
| 380 | 6.29 | Tower derigging (remove lifting equipment) | manual | 0.5eh | 2030-06-02 19:30 | 2030-06-02 20:00 | 379 | 0.000000 | OFFSHORE | 29 | 11 | G1 |
| 381 | 6.30 | Nacelle preparation and rigging | manual | 0.5eh | 2030-06-02 20:00 | 2030-06-02 20:30 | 380 | 0.000000 | OFFSHORE | 30 | 11 | G2 |
| 382 | 6.31 | Nacelle Lifting (safe-to-safe) | manual | 2.25eh | 2030-06-02 20:30 | 2030-06-02 22:45 | 381 | 0.000000 | OFFSHORE | 31 | 11 | G2 |
| 383 | 6.32 | Nacelle derigging (remove lifting equipment) | manual | 0.5eh | 2030-06-02 22:45 | 2030-06-02 23:15 | 382 | 0.000000 | OFFSHORE | 32 | 11 | G2 |
| 384 | 6.33 | Blade yoke rigging and attachement to Blade #1 | manual | 0.5eh | 2030-06-02 23:15 | 2030-06-02 23:45 | 383 | 0.000000 | OFFSHORE | 33 | 11 | G3 |
| 385 | 6.34 | Blade #1 Lifting (safe-to-safe) | manual | 1.75eh | 2030-06-02 23:45 | 2030-06-03 01:30 | 384 | 0.000000 | OFFSHORE | 34 | 11 | G3 |
| 386 | 6.35 | Blade #1 completion work, re-locate blade yoke to next blade | manual | 1.5eh | 2030-06-03 01:30 | 2030-06-03 03:00 | 385 | 0.000000 | OFFSHORE | 35 | 11 | G3 |
| 387 | 6.36 | Blade #2 Lifting (safe-to-safe) | manual | 1.75eh | 2030-06-03 03:00 | 2030-06-03 04:45 | 386 | 0.000000 | OFFSHORE | 36 | 11 | G4 |
| 388 | 6.37 | Balde #2 completion work, re-locate blade yoke to next blade | manual | 1.5eh | 2030-06-03 04:45 | 2030-06-03 06:15 | 387 | 0.000000 | OFFSHORE | 37 | 11 | G4 |
| 389 | 6.38 | Blade #3 Lifting (safe-to-safe) | manual | 1.75eh | 2030-06-03 06:15 | 2030-06-03 08:00 | 388 | 0.000000 | OFFSHORE | 38 | 11 | G5 |
| 390 | 6.39 | Blade #3 completion work, blade yoke de-rigging | manual | 1.5eh | 2030-06-03 08:00 | 2030-06-03 09:30 | 389 | 0.000000 | OFFSHORE | 39 | 11 | G5 |
| 391 | 6.40 | Handling HSBM and lifting tools | manual | 1eh | 2030-06-03 09:30 | 2030-06-03 10:30 | 390 | 0.000000 | OFFSHORE | 40 | 11 |  |
| 392 | 6.41 | Lifting HSBM and lifting tools from Nacelle | manual | 1eh | 2030-06-03 10:30 | 2030-06-03 11:30 | 391 | 0.000000 | OFFSHORE | 41 | 11 |  |
| 393 | 6.42 | Turbine general completion works | manual | 3eh | 2030-06-03 11:30 | 2030-06-03 14:30 | 392 | 0.000000 | OFFSHORE | 42 | 11 |  |
| 394 | 6.43 | Secure of crane, gangway etc. Preparation for jacking down and sailing | manual | 3eh | 2030-06-03 14:30 | 2030-06-03 17:30 | 393 | 0.000000 | OFFSHORE | 43 | 11 |  |
| 395 | 6.44 | Jacking down at site | manual | 2eh | 2030-06-03 17:30 | 2030-06-03 19:30 | 394 | 0.000000 | OFFSHORE | 44 | 11 |  |
| 396 | 6.45 | Transit to next foundation | manual | 1eh | 2030-06-03 19:30 | 2030-06-03 20:30 | 395 | 0.000000 | OFFSHORE | 21 | 12 |  |
| 397 | 6.46 | Positioning at WTG location | manual | 1eh | 2030-06-03 20:30 | 2030-06-03 21:30 | 396 | 0.000000 | OFFSHORE | 22 | 12 |  |
| 398 | 6.47 | Preload and jacking up at site | manual | 4eh | 2030-06-03 21:30 | 2030-06-04 01:30 | 397 | 0.000000 | OFFSHORE | 23 | 12 |  |
| 399 | 6.48 | Release crane, gangway and prep for lifting | manual | 3eh | 2030-06-04 01:30 | 2030-06-04 04:30 | 398 | 0.000000 | OFFSHORE | 24 | 12 |  |
| 400 | 6.49 | Remove TP cover and Preparation of TP | manual | 1eh | 2030-06-04 04:30 | 2030-06-04 05:30 | 399 | 0.000000 | OFFSHORE | 25 | 12 |  |
| 401 | 6.50 | Tower preparation, removal of seafastening bolts | manual | 2eh | 2030-06-04 05:30 | 2030-06-04 07:30 | 400 | 0.000000 | OFFSHORE | 26 | 12 |  |
| 402 | 6.51 | Tower rigging-up (attached lifting equipment) | manual | 1eh | 2030-06-04 07:30 | 2030-06-04 08:30 | 401 | 0.000000 | OFFSHORE | 27 | 12 | G1 |
| 403 | 6.52 | Tower Lifting (safe-to-safe) | manual | 3.5eh | 2030-06-04 08:30 | 2030-06-04 12:00 | 402 | 0.000000 | OFFSHORE | 28 | 12 | G1 |
| 404 | 6.53 | Tower derigging (remove lifting equipment) | manual | 0.5eh | 2030-06-04 12:00 | 2030-06-04 12:30 | 403 | 0.000000 | OFFSHORE | 29 | 12 | G1 |
| 405 | 6.54 | Nacelle preparation and rigging | manual | 0.5eh | 2030-06-04 12:30 | 2030-06-04 13:00 | 404 | 0.000000 | OFFSHORE | 30 | 12 | G2 |
| 406 | 6.55 | Nacelle Lifting (safe-to-safe) | manual | 2.25eh | 2030-06-04 13:00 | 2030-06-04 15:15 | 405 | 0.000000 | OFFSHORE | 31 | 12 | G2 |
| 407 | 6.56 | Nacelle derigging (remove lifting equipment) | manual | 0.5eh | 2030-06-04 15:15 | 2030-06-04 15:45 | 406 | 0.000000 | OFFSHORE | 32 | 12 | G2 |
| 408 | 6.57 | Blade yoke rigging and attachement to Blade #1 | manual | 0.5eh | 2030-06-04 15:45 | 2030-06-04 16:15 | 407 | 0.000000 | OFFSHORE | 33 | 12 | G3 |
| 409 | 6.58 | Blade #1 Lifting (safe-to-safe) | manual | 1.75eh | 2030-06-04 16:15 | 2030-06-04 18:00 | 408 | 0.000000 | OFFSHORE | 34 | 12 | G3 |
| 410 | 6.59 | Blade #1 completion work, re-locate blade yoke to next blade | manual | 1.5eh | 2030-06-04 18:00 | 2030-06-04 19:30 | 409 | 0.000000 | OFFSHORE | 35 | 12 | G3 |
| 411 | 6.60 | Blade #2 Lifting (safe-to-safe) | manual | 1.75eh | 2030-06-04 19:30 | 2030-06-04 21:15 | 410 | 0.000000 | OFFSHORE | 36 | 12 | G4 |
| 412 | 6.61 | Balde #2 completion work, re-locate blade yoke to next blade | manual | 1.5eh | 2030-06-04 21:15 | 2030-06-04 22:45 | 411 | 0.000000 | OFFSHORE | 37 | 12 | G4 |
| 413 | 6.62 | Blade #3 Lifting (safe-to-safe) | manual | 1.75eh | 2030-06-04 22:45 | 2030-06-05 00:30 | 412 | 0.000000 | OFFSHORE | 38 | 12 | G5 |
| 414 | 6.63 | Blade #3 completion work, blade yoke de-rigging | manual | 1.5eh | 2030-06-05 00:30 | 2030-06-05 02:00 | 413 | 0.000000 | OFFSHORE | 39 | 12 | G5 |
| 415 | 6.64 | Handling HSBM and lifting tools | manual | 1eh | 2030-06-05 02:00 | 2030-06-05 03:00 | 414 | 0.000000 | OFFSHORE | 40 | 12 |  |
| 416 | 6.65 | Lifting HSBM and lifting tools from Nacelle | manual | 1eh | 2030-06-05 03:00 | 2030-06-05 04:00 | 415 | 0.000000 | OFFSHORE | 41 | 12 |  |
| 417 | 6.66 | Turbine general completion works | manual | 3eh | 2030-06-05 04:00 | 2030-06-05 07:00 | 416 | 0.000000 | OFFSHORE | 42 | 12 |  |
| 418 | 6.67 | Secure of crane, gangway etc. Preparation for jacking down and sailing | manual | 3eh | 2030-06-05 07:00 | 2030-06-05 10:00 | 417 | 0.000000 | OFFSHORE | 43 | 12 |  |
| 419 | 6.68 | Jacking down at site | manual | 2eh | 2030-06-05 10:00 | 2030-06-05 16:00 | 418 | 0.166667 | OFFSHORE | 44 | 12 |  |
| 420 | 6.69 | Transit from site to port | manual | 5.2eh | 2030-06-05 16:00 | 2030-06-05 21:15 | 419 | 0.000000 | OFFSHORE | 45 |  |  |

Notes:
- 351: P50 representative hindcast year 1984; cycle 6; baseline duration 5.163 days; downtime 1.406 days; elapsed duration 6.573 days.
- 352: Scenario: P50; P50 representative hindcast year 1984; cycle: 6; activity ID: 1; location: OFFSHORE; position: n/a; safe-to-safe group: none; baseline duration: 1.000 h; weather/operational downtime: 0.000 h; elapsed duration: 1.000 h.
- 353: Scenario: P50; P50 representative hindcast year 1984; cycle: 6; activity ID: 2; location: OFFSHORE; position: n/a; safe-to-safe group: none; baseline duration: 2.000 h; weather/operational downtime: 0.000 h; elapsed duration: 2.000 h.
- 354: Scenario: P50; P50 representative hindcast year 1984; cycle: 6; activity ID: 3; location: OFFSHORE; position: n/a; safe-to-safe group: none; baseline duration: 3.000 h; weather/operational downtime: 0.000 h; elapsed duration: 3.000 h.
- 355: Scenario: P50; P50 representative hindcast year 1984; cycle: 6; activity ID: 4; location: OFFSHORE; position: n/a; safe-to-safe group: none; baseline duration: 1.000 h; weather/operational downtime: 0.000 h; elapsed duration: 1.000 h.
- 356: Scenario: P50; P50 representative hindcast year 1984; cycle: 6; activity ID: 5; location: OFFSHORE; position: n/a; safe-to-safe group: none; baseline duration: 2.250 h; weather/operational downtime: 0.000 h; elapsed duration: 2.250 h.
- 357: Scenario: P50; P50 representative hindcast year 1984; cycle: 6; activity ID: 6; location: OFFSHORE; position: n/a; safe-to-safe group: none; baseline duration: 2.250 h; weather/operational downtime: 0.000 h; elapsed duration: 2.250 h.
- 358: Scenario: P50; P50 representative hindcast year 1984; cycle: 6; activity ID: 7; location: OFFSHORE; position: n/a; safe-to-safe group: none; baseline duration: 1.500 h; weather/operational downtime: 0.000 h; elapsed duration: 1.500 h.
- 359: Scenario: P50; P50 representative hindcast year 1984; cycle: 6; activity ID: 8; location: OFFSHORE; position: n/a; safe-to-safe group: none; baseline duration: 1.500 h; weather/operational downtime: 0.000 h; elapsed duration: 1.500 h.
- 360: Scenario: P50; P50 representative hindcast year 1984; cycle: 6; activity ID: 9; location: OFFSHORE; position: n/a; safe-to-safe group: none; baseline duration: 1.500 h; weather/operational downtime: 3.000 h; elapsed duration: 4.500 h.
- 361: Scenario: P50; P50 representative hindcast year 1984; cycle: 6; activity ID: 10; location: OFFSHORE; position: n/a; safe-to-safe group: none; baseline duration: 1.000 h; weather/operational downtime: 0.000 h; elapsed duration: 1.000 h.
- 362: Scenario: P50; P50 representative hindcast year 1984; cycle: 6; activity ID: 11; location: OFFSHORE; position: n/a; safe-to-safe group: none; baseline duration: 2.250 h; weather/operational downtime: 0.000 h; elapsed duration: 2.250 h.
- 363: Scenario: P50; P50 representative hindcast year 1984; cycle: 6; activity ID: 12; location: OFFSHORE; position: n/a; safe-to-safe group: none; baseline duration: 2.250 h; weather/operational downtime: 0.000 h; elapsed duration: 2.250 h.
- 364: Scenario: P50; P50 representative hindcast year 1984; cycle: 6; activity ID: 13; location: OFFSHORE; position: n/a; safe-to-safe group: none; baseline duration: 1.500 h; weather/operational downtime: 0.000 h; elapsed duration: 1.500 h.
- 365: Scenario: P50; P50 representative hindcast year 1984; cycle: 6; activity ID: 14; location: OFFSHORE; position: n/a; safe-to-safe group: none; baseline duration: 1.500 h; weather/operational downtime: 0.000 h; elapsed duration: 1.500 h.
- 366: Scenario: P50; P50 representative hindcast year 1984; cycle: 6; activity ID: 15; location: OFFSHORE; position: n/a; safe-to-safe group: none; baseline duration: 1.500 h; weather/operational downtime: 0.000 h; elapsed duration: 1.500 h.
- 367: Scenario: P50; P50 representative hindcast year 1984; cycle: 6; activity ID: 16; location: OFFSHORE; position: n/a; safe-to-safe group: none; baseline duration: 3.000 h; weather/operational downtime: 0.000 h; elapsed duration: 3.000 h.
- 368: Scenario: P50; P50 representative hindcast year 1984; cycle: 6; activity ID: 17; location: OFFSHORE; position: n/a; safe-to-safe group: none; baseline duration: 2.000 h; weather/operational downtime: 0.000 h; elapsed duration: 2.000 h.
- 369: Scenario: P50; P50 representative hindcast year 1984; cycle: 6; activity ID: 18; location: OFFSHORE; position: n/a; safe-to-safe group: none; baseline duration: 1.000 h; weather/operational downtime: 0.000 h; elapsed duration: 1.000 h.
- 370: Scenario: P50; P50 representative hindcast year 1984; cycle: 6; activity ID: 19; location: OFFSHORE; position: n/a; safe-to-safe group: none; baseline duration: 5.200 h; weather/operational downtime: 0.000 h; elapsed duration: 5.250 h.
- 371: Scenario: P50; P50 representative hindcast year 1984; cycle: 6; activity ID: 20; location: OFFSHORE; position: n/a; safe-to-safe group: none; baseline duration: 0.500 h; weather/operational downtime: 0.000 h; elapsed duration: 0.500 h.
- 372: Scenario: P50; P50 representative hindcast year 1984; cycle: 6; activity ID: 21; location: OFFSHORE; position: 11; safe-to-safe group: none; baseline duration: 1.000 h; weather/operational downtime: 0.000 h; elapsed duration: 1.000 h.
- 373: Scenario: P50; P50 representative hindcast year 1984; cycle: 6; activity ID: 22; location: OFFSHORE; position: 11; safe-to-safe group: none; baseline duration: 1.000 h; weather/operational downtime: 0.000 h; elapsed duration: 1.000 h.
- 374: Scenario: P50; P50 representative hindcast year 1984; cycle: 6; activity ID: 23; location: OFFSHORE; position: 11; safe-to-safe group: none; baseline duration: 4.000 h; weather/operational downtime: 0.000 h; elapsed duration: 4.000 h.
- 375: Scenario: P50; P50 representative hindcast year 1984; cycle: 6; activity ID: 24; location: OFFSHORE; position: 11; safe-to-safe group: none; baseline duration: 3.000 h; weather/operational downtime: 0.000 h; elapsed duration: 3.000 h.
- 376: Scenario: P50; P50 representative hindcast year 1984; cycle: 6; activity ID: 25; location: OFFSHORE; position: 11; safe-to-safe group: none; baseline duration: 1.000 h; weather/operational downtime: 26.750 h; elapsed duration: 27.750 h.
- 377: Scenario: P50; P50 representative hindcast year 1984; cycle: 6; activity ID: 26; location: OFFSHORE; position: 11; safe-to-safe group: none; baseline duration: 2.000 h; weather/operational downtime: 0.000 h; elapsed duration: 2.000 h.
- 378: Scenario: P50; P50 representative hindcast year 1984; cycle: 6; activity ID: 27; location: OFFSHORE; position: 11; safe-to-safe group: G1; baseline duration: 1.000 h; weather/operational downtime: 0.000 h; elapsed duration: 1.000 h.
- 379: Scenario: P50; P50 representative hindcast year 1984; cycle: 6; activity ID: 28; location: OFFSHORE; position: 11; safe-to-safe group: G1; baseline duration: 3.500 h; weather/operational downtime: 0.000 h; elapsed duration: 3.500 h.
- 380: Scenario: P50; P50 representative hindcast year 1984; cycle: 6; activity ID: 29; location: OFFSHORE; position: 11; safe-to-safe group: G1; baseline duration: 0.500 h; weather/operational downtime: 0.000 h; elapsed duration: 0.500 h.
- 381: Scenario: P50; P50 representative hindcast year 1984; cycle: 6; activity ID: 30; location: OFFSHORE; position: 11; safe-to-safe group: G2; baseline duration: 0.500 h; weather/operational downtime: 0.000 h; elapsed duration: 0.500 h.
- 382: Scenario: P50; P50 representative hindcast year 1984; cycle: 6; activity ID: 31; location: OFFSHORE; position: 11; safe-to-safe group: G2; baseline duration: 2.250 h; weather/operational downtime: 0.000 h; elapsed duration: 2.250 h.
- 383: Scenario: P50; P50 representative hindcast year 1984; cycle: 6; activity ID: 32; location: OFFSHORE; position: 11; safe-to-safe group: G2; baseline duration: 0.500 h; weather/operational downtime: 0.000 h; elapsed duration: 0.500 h.
- 384: Scenario: P50; P50 representative hindcast year 1984; cycle: 6; activity ID: 33; location: OFFSHORE; position: 11; safe-to-safe group: G3; baseline duration: 0.500 h; weather/operational downtime: 0.000 h; elapsed duration: 0.500 h.
- 385: Scenario: P50; P50 representative hindcast year 1984; cycle: 6; activity ID: 34; location: OFFSHORE; position: 11; safe-to-safe group: G3; baseline duration: 1.750 h; weather/operational downtime: 0.000 h; elapsed duration: 1.750 h.
- 386: Scenario: P50; P50 representative hindcast year 1984; cycle: 6; activity ID: 35; location: OFFSHORE; position: 11; safe-to-safe group: G3; baseline duration: 1.500 h; weather/operational downtime: 0.000 h; elapsed duration: 1.500 h.
- 387: Scenario: P50; P50 representative hindcast year 1984; cycle: 6; activity ID: 36; location: OFFSHORE; position: 11; safe-to-safe group: G4; baseline duration: 1.750 h; weather/operational downtime: 0.000 h; elapsed duration: 1.750 h.
- 388: Scenario: P50; P50 representative hindcast year 1984; cycle: 6; activity ID: 37; location: OFFSHORE; position: 11; safe-to-safe group: G4; baseline duration: 1.500 h; weather/operational downtime: 0.000 h; elapsed duration: 1.500 h.
- 389: Scenario: P50; P50 representative hindcast year 1984; cycle: 6; activity ID: 38; location: OFFSHORE; position: 11; safe-to-safe group: G5; baseline duration: 1.750 h; weather/operational downtime: 0.000 h; elapsed duration: 1.750 h.
- 390: Scenario: P50; P50 representative hindcast year 1984; cycle: 6; activity ID: 39; location: OFFSHORE; position: 11; safe-to-safe group: G5; baseline duration: 1.500 h; weather/operational downtime: 0.000 h; elapsed duration: 1.500 h.
- 391: Scenario: P50; P50 representative hindcast year 1984; cycle: 6; activity ID: 40; location: OFFSHORE; position: 11; safe-to-safe group: none; baseline duration: 1.000 h; weather/operational downtime: 0.000 h; elapsed duration: 1.000 h.
- 392: Scenario: P50; P50 representative hindcast year 1984; cycle: 6; activity ID: 41; location: OFFSHORE; position: 11; safe-to-safe group: none; baseline duration: 1.000 h; weather/operational downtime: 0.000 h; elapsed duration: 1.000 h.
- 393: Scenario: P50; P50 representative hindcast year 1984; cycle: 6; activity ID: 42; location: OFFSHORE; position: 11; safe-to-safe group: none; baseline duration: 3.000 h; weather/operational downtime: 0.000 h; elapsed duration: 3.000 h.
- 394: Scenario: P50; P50 representative hindcast year 1984; cycle: 6; activity ID: 43; location: OFFSHORE; position: 11; safe-to-safe group: none; baseline duration: 3.000 h; weather/operational downtime: 0.000 h; elapsed duration: 3.000 h.
- 395: Scenario: P50; P50 representative hindcast year 1984; cycle: 6; activity ID: 44; location: OFFSHORE; position: 11; safe-to-safe group: none; baseline duration: 2.000 h; weather/operational downtime: 0.000 h; elapsed duration: 2.000 h.
- 396: Scenario: P50; P50 representative hindcast year 1984; cycle: 6; activity ID: 21; location: OFFSHORE; position: 12; safe-to-safe group: none; baseline duration: 1.000 h; weather/operational downtime: 0.000 h; elapsed duration: 1.000 h.
- 397: Scenario: P50; P50 representative hindcast year 1984; cycle: 6; activity ID: 22; location: OFFSHORE; position: 12; safe-to-safe group: none; baseline duration: 1.000 h; weather/operational downtime: 0.000 h; elapsed duration: 1.000 h.
- 398: Scenario: P50; P50 representative hindcast year 1984; cycle: 6; activity ID: 23; location: OFFSHORE; position: 12; safe-to-safe group: none; baseline duration: 4.000 h; weather/operational downtime: 0.000 h; elapsed duration: 4.000 h.
- 399: Scenario: P50; P50 representative hindcast year 1984; cycle: 6; activity ID: 24; location: OFFSHORE; position: 12; safe-to-safe group: none; baseline duration: 3.000 h; weather/operational downtime: 0.000 h; elapsed duration: 3.000 h.
- 400: Scenario: P50; P50 representative hindcast year 1984; cycle: 6; activity ID: 25; location: OFFSHORE; position: 12; safe-to-safe group: none; baseline duration: 1.000 h; weather/operational downtime: 0.000 h; elapsed duration: 1.000 h.
- 401: Scenario: P50; P50 representative hindcast year 1984; cycle: 6; activity ID: 26; location: OFFSHORE; position: 12; safe-to-safe group: none; baseline duration: 2.000 h; weather/operational downtime: 0.000 h; elapsed duration: 2.000 h.
- 402: Scenario: P50; P50 representative hindcast year 1984; cycle: 6; activity ID: 27; location: OFFSHORE; position: 12; safe-to-safe group: G1; baseline duration: 1.000 h; weather/operational downtime: 0.000 h; elapsed duration: 1.000 h.
- 403: Scenario: P50; P50 representative hindcast year 1984; cycle: 6; activity ID: 28; location: OFFSHORE; position: 12; safe-to-safe group: G1; baseline duration: 3.500 h; weather/operational downtime: 0.000 h; elapsed duration: 3.500 h.
- 404: Scenario: P50; P50 representative hindcast year 1984; cycle: 6; activity ID: 29; location: OFFSHORE; position: 12; safe-to-safe group: G1; baseline duration: 0.500 h; weather/operational downtime: 0.000 h; elapsed duration: 0.500 h.
- 405: Scenario: P50; P50 representative hindcast year 1984; cycle: 6; activity ID: 30; location: OFFSHORE; position: 12; safe-to-safe group: G2; baseline duration: 0.500 h; weather/operational downtime: 0.000 h; elapsed duration: 0.500 h.
- 406: Scenario: P50; P50 representative hindcast year 1984; cycle: 6; activity ID: 31; location: OFFSHORE; position: 12; safe-to-safe group: G2; baseline duration: 2.250 h; weather/operational downtime: 0.000 h; elapsed duration: 2.250 h.
- 407: Scenario: P50; P50 representative hindcast year 1984; cycle: 6; activity ID: 32; location: OFFSHORE; position: 12; safe-to-safe group: G2; baseline duration: 0.500 h; weather/operational downtime: 0.000 h; elapsed duration: 0.500 h.
- 408: Scenario: P50; P50 representative hindcast year 1984; cycle: 6; activity ID: 33; location: OFFSHORE; position: 12; safe-to-safe group: G3; baseline duration: 0.500 h; weather/operational downtime: 0.000 h; elapsed duration: 0.500 h.
- 409: Scenario: P50; P50 representative hindcast year 1984; cycle: 6; activity ID: 34; location: OFFSHORE; position: 12; safe-to-safe group: G3; baseline duration: 1.750 h; weather/operational downtime: 0.000 h; elapsed duration: 1.750 h.
- 410: Scenario: P50; P50 representative hindcast year 1984; cycle: 6; activity ID: 35; location: OFFSHORE; position: 12; safe-to-safe group: G3; baseline duration: 1.500 h; weather/operational downtime: 0.000 h; elapsed duration: 1.500 h.
- 411: Scenario: P50; P50 representative hindcast year 1984; cycle: 6; activity ID: 36; location: OFFSHORE; position: 12; safe-to-safe group: G4; baseline duration: 1.750 h; weather/operational downtime: 0.000 h; elapsed duration: 1.750 h.
- 412: Scenario: P50; P50 representative hindcast year 1984; cycle: 6; activity ID: 37; location: OFFSHORE; position: 12; safe-to-safe group: G4; baseline duration: 1.500 h; weather/operational downtime: 0.000 h; elapsed duration: 1.500 h.
- 413: Scenario: P50; P50 representative hindcast year 1984; cycle: 6; activity ID: 38; location: OFFSHORE; position: 12; safe-to-safe group: G5; baseline duration: 1.750 h; weather/operational downtime: 0.000 h; elapsed duration: 1.750 h.
- 414: Scenario: P50; P50 representative hindcast year 1984; cycle: 6; activity ID: 39; location: OFFSHORE; position: 12; safe-to-safe group: G5; baseline duration: 1.500 h; weather/operational downtime: 0.000 h; elapsed duration: 1.500 h.
- 415: Scenario: P50; P50 representative hindcast year 1984; cycle: 6; activity ID: 40; location: OFFSHORE; position: 12; safe-to-safe group: none; baseline duration: 1.000 h; weather/operational downtime: 0.000 h; elapsed duration: 1.000 h.
- 416: Scenario: P50; P50 representative hindcast year 1984; cycle: 6; activity ID: 41; location: OFFSHORE; position: 12; safe-to-safe group: none; baseline duration: 1.000 h; weather/operational downtime: 0.000 h; elapsed duration: 1.000 h.
- 417: Scenario: P50; P50 representative hindcast year 1984; cycle: 6; activity ID: 42; location: OFFSHORE; position: 12; safe-to-safe group: none; baseline duration: 3.000 h; weather/operational downtime: 0.000 h; elapsed duration: 3.000 h.
- 418: Scenario: P50; P50 representative hindcast year 1984; cycle: 6; activity ID: 43; location: OFFSHORE; position: 12; safe-to-safe group: none; baseline duration: 3.000 h; weather/operational downtime: 0.000 h; elapsed duration: 3.000 h.
- 419: Scenario: P50; P50 representative hindcast year 1984; cycle: 6; activity ID: 44; location: OFFSHORE; position: 12; safe-to-safe group: none; baseline duration: 2.000 h; weather/operational downtime: 4.000 h; elapsed duration: 6.000 h.
- 420: Scenario: P50; P50 representative hindcast year 1984; cycle: 6; activity ID: 45; location: OFFSHORE; position: n/a; safe-to-safe group: none; baseline duration: 5.200 h; weather/operational downtime: 0.000 h; elapsed duration: 5.250 h.

| ID | WBS | Task | Type | Duration | Start | Finish | Predecessors | Duration WDT [days] | Location | Activity ID | Position | Safe-to-safe group |
| --- | --- | --- | --- | --- | --- | --- | --- | --- | --- | --- | --- | --- |
| 421 | 7 | **Cycle 07 — Positions 13–14** |  | 123.9eh | 2030-06-05 21:15 | 2030-06-11 08:45 |  | 0.312500 |  |  |  |  |
| 422 | 7.1 | Port maneuvering | manual | 1eh | 2030-06-05 21:15 | 2030-06-05 22:15 | 420 | 0.000000 | OFFSHORE | 1 |  |  |
| 423 | 7.2 | Preload and jacking up at port | manual | 2eh | 2030-06-05 22:15 | 2030-06-06 00:15 | 422 | 0.000000 | OFFSHORE | 2 |  |  |
| 424 | 7.3 | Release crane, gangway etc and prep for lifting | manual | 3eh | 2030-06-06 00:15 | 2030-06-06 03:15 | 423 | 0.000000 | OFFSHORE | 3 |  |  |
| 425 | 7.4 | Load in/out WTG supplier equipment | manual | 1eh | 2030-06-06 03:15 | 2030-06-06 04:15 | 424 | 0.000000 | OFFSHORE | 4 |  |  |
| 426 | 7.5 | Loadout Nacelle #1 | manual | 2.25eh | 2030-06-06 04:15 | 2030-06-06 06:30 | 425 | 0.000000 | OFFSHORE | 5 |  |  |
| 427 | 7.6 | Loadout Tower #1 | manual | 2.25eh | 2030-06-06 06:30 | 2030-06-06 08:45 | 426 | 0.000000 | OFFSHORE | 6 |  |  |
| 428 | 7.7 | Loadout Blade 1 | manual | 1.5eh | 2030-06-06 08:45 | 2030-06-06 10:15 | 427 | 0.000000 | OFFSHORE | 7 |  |  |
| 429 | 7.8 | Loadout Blade 2 | manual | 1.5eh | 2030-06-06 10:15 | 2030-06-06 11:45 | 428 | 0.000000 | OFFSHORE | 8 |  |  |
| 430 | 7.9 | Loadout Blade 3 | manual | 1.5eh | 2030-06-06 11:45 | 2030-06-06 13:15 | 429 | 0.000000 | OFFSHORE | 9 |  |  |
| 431 | 7.10 | Load in/out WTG supplier equipment | manual | 1eh | 2030-06-06 13:15 | 2030-06-06 14:15 | 430 | 0.000000 | OFFSHORE | 10 |  |  |
| 432 | 7.11 | Loadout Nacelle #2 | manual | 2.25eh | 2030-06-06 14:15 | 2030-06-06 16:30 | 431 | 0.000000 | OFFSHORE | 11 |  |  |
| 433 | 7.12 | Loadout Tower #2 | manual | 2.25eh | 2030-06-06 16:30 | 2030-06-06 18:45 | 432 | 0.000000 | OFFSHORE | 12 |  |  |
| 434 | 7.13 | Loadout Blade 1 | manual | 1.5eh | 2030-06-06 18:45 | 2030-06-06 20:15 | 433 | 0.000000 | OFFSHORE | 13 |  |  |
| 435 | 7.14 | Loadout Blade 2 | manual | 1.5eh | 2030-06-06 20:15 | 2030-06-06 21:45 | 434 | 0.000000 | OFFSHORE | 14 |  |  |
| 436 | 7.15 | Loadout Blade 3 | manual | 1.5eh | 2030-06-06 21:45 | 2030-06-06 23:15 | 435 | 0.000000 | OFFSHORE | 15 |  |  |
| 437 | 7.16 | Secure of crane, gangway (at port)) | manual | 3eh | 2030-06-06 23:15 | 2030-06-07 02:15 | 436 | 0.000000 | OFFSHORE | 16 |  |  |
| 438 | 7.17 | Jacking down at port | manual | 2eh | 2030-06-07 02:15 | 2030-06-07 04:15 | 437 | 0.000000 | OFFSHORE | 17 |  |  |
| 439 | 7.18 | Port maneuvering | manual | 1eh | 2030-06-07 04:15 | 2030-06-07 05:15 | 438 | 0.000000 | OFFSHORE | 18 |  |  |
| 440 | 7.19 | Transit from port to site | manual | 5.2eh | 2030-06-07 05:15 | 2030-06-07 10:30 | 439 | 0.000000 | OFFSHORE | 19 |  |  |
| 441 | 7.20 | DP field check | manual | 0.5eh | 2030-06-07 10:30 | 2030-06-07 11:00 | 440 | 0.000000 | OFFSHORE | 20 |  |  |
| 442 | 7.21 | Transit to next foundation | manual | 1eh | 2030-06-07 11:00 | 2030-06-07 12:00 | 441 | 0.000000 | OFFSHORE | 21 | 13 |  |
| 443 | 7.22 | Positioning at WTG location | manual | 1eh | 2030-06-07 12:00 | 2030-06-07 13:00 | 442 | 0.000000 | OFFSHORE | 22 | 13 |  |
| 444 | 7.23 | Preload and jacking up at site | manual | 4eh | 2030-06-07 13:00 | 2030-06-07 17:00 | 443 | 0.000000 | OFFSHORE | 23 | 13 |  |
| 445 | 7.24 | Release crane, gangway and prep for lifting | manual | 3eh | 2030-06-07 17:00 | 2030-06-07 20:00 | 444 | 0.000000 | OFFSHORE | 24 | 13 |  |
| 446 | 7.25 | Remove TP cover and Preparation of TP | manual | 1eh | 2030-06-07 20:00 | 2030-06-07 21:00 | 445 | 0.000000 | OFFSHORE | 25 | 13 |  |
| 447 | 7.26 | Tower preparation, removal of seafastening bolts | manual | 2eh | 2030-06-07 21:00 | 2030-06-07 23:00 | 446 | 0.000000 | OFFSHORE | 26 | 13 |  |
| 448 | 7.27 | Tower rigging-up (attached lifting equipment) | manual | 1eh | 2030-06-07 23:00 | 2030-06-08 00:00 | 447 | 0.000000 | OFFSHORE | 27 | 13 | G1 |
| 449 | 7.28 | Tower Lifting (safe-to-safe) | manual | 3.5eh | 2030-06-08 00:00 | 2030-06-08 03:30 | 448 | 0.000000 | OFFSHORE | 28 | 13 | G1 |
| 450 | 7.29 | Tower derigging (remove lifting equipment) | manual | 0.5eh | 2030-06-08 03:30 | 2030-06-08 04:00 | 449 | 0.000000 | OFFSHORE | 29 | 13 | G1 |
| 451 | 7.30 | Nacelle preparation and rigging | manual | 0.5eh | 2030-06-08 04:00 | 2030-06-08 04:30 | 450 | 0.000000 | OFFSHORE | 30 | 13 | G2 |
| 452 | 7.31 | Nacelle Lifting (safe-to-safe) | manual | 2.25eh | 2030-06-08 04:30 | 2030-06-08 06:45 | 451 | 0.000000 | OFFSHORE | 31 | 13 | G2 |
| 453 | 7.32 | Nacelle derigging (remove lifting equipment) | manual | 0.5eh | 2030-06-08 06:45 | 2030-06-08 07:15 | 452 | 0.000000 | OFFSHORE | 32 | 13 | G2 |
| 454 | 7.33 | Blade yoke rigging and attachement to Blade #1 | manual | 0.5eh | 2030-06-08 07:15 | 2030-06-08 07:45 | 453 | 0.000000 | OFFSHORE | 33 | 13 | G3 |
| 455 | 7.34 | Blade #1 Lifting (safe-to-safe) | manual | 1.75eh | 2030-06-08 07:45 | 2030-06-08 09:30 | 454 | 0.000000 | OFFSHORE | 34 | 13 | G3 |
| 456 | 7.35 | Blade #1 completion work, re-locate blade yoke to next blade | manual | 1.5eh | 2030-06-08 09:30 | 2030-06-08 11:00 | 455 | 0.000000 | OFFSHORE | 35 | 13 | G3 |
| 457 | 7.36 | Blade #2 Lifting (safe-to-safe) | manual | 1.75eh | 2030-06-08 11:00 | 2030-06-08 12:45 | 456 | 0.000000 | OFFSHORE | 36 | 13 | G4 |
| 458 | 7.37 | Balde #2 completion work, re-locate blade yoke to next blade | manual | 1.5eh | 2030-06-08 12:45 | 2030-06-08 14:15 | 457 | 0.000000 | OFFSHORE | 37 | 13 | G4 |
| 459 | 7.38 | Blade #3 Lifting (safe-to-safe) | manual | 1.75eh | 2030-06-08 14:15 | 2030-06-08 16:00 | 458 | 0.000000 | OFFSHORE | 38 | 13 | G5 |
| 460 | 7.39 | Blade #3 completion work, blade yoke de-rigging | manual | 1.5eh | 2030-06-08 16:00 | 2030-06-08 17:30 | 459 | 0.000000 | OFFSHORE | 39 | 13 | G5 |
| 461 | 7.40 | Handling HSBM and lifting tools | manual | 1eh | 2030-06-08 17:30 | 2030-06-08 18:30 | 460 | 0.000000 | OFFSHORE | 40 | 13 |  |
| 462 | 7.41 | Lifting HSBM and lifting tools from Nacelle | manual | 1eh | 2030-06-08 18:30 | 2030-06-08 19:30 | 461 | 0.000000 | OFFSHORE | 41 | 13 |  |
| 463 | 7.42 | Turbine general completion works | manual | 3eh | 2030-06-08 19:30 | 2030-06-08 22:30 | 462 | 0.000000 | OFFSHORE | 42 | 13 |  |
| 464 | 7.43 | Secure of crane, gangway etc. Preparation for jacking down and sailing | manual | 3eh | 2030-06-08 22:30 | 2030-06-09 01:30 | 463 | 0.000000 | OFFSHORE | 43 | 13 |  |
| 465 | 7.44 | Jacking down at site | manual | 2eh | 2030-06-09 01:30 | 2030-06-09 03:30 | 464 | 0.000000 | OFFSHORE | 44 | 13 |  |
| 466 | 7.45 | Transit to next foundation | manual | 1eh | 2030-06-09 03:30 | 2030-06-09 04:30 | 465 | 0.000000 | OFFSHORE | 21 | 14 |  |
| 467 | 7.46 | Positioning at WTG location | manual | 1eh | 2030-06-09 04:30 | 2030-06-09 05:30 | 466 | 0.000000 | OFFSHORE | 22 | 14 |  |
| 468 | 7.47 | Preload and jacking up at site | manual | 4eh | 2030-06-09 05:30 | 2030-06-09 09:30 | 467 | 0.000000 | OFFSHORE | 23 | 14 |  |
| 469 | 7.48 | Release crane, gangway and prep for lifting | manual | 3eh | 2030-06-09 09:30 | 2030-06-09 12:30 | 468 | 0.000000 | OFFSHORE | 24 | 14 |  |
| 470 | 7.49 | Remove TP cover and Preparation of TP | manual | 1eh | 2030-06-09 12:30 | 2030-06-09 13:30 | 469 | 0.000000 | OFFSHORE | 25 | 14 |  |
| 471 | 7.50 | Tower preparation, removal of seafastening bolts | manual | 2eh | 2030-06-09 13:30 | 2030-06-09 15:30 | 470 | 0.000000 | OFFSHORE | 26 | 14 |  |
| 472 | 7.51 | Tower rigging-up (attached lifting equipment) | manual | 1eh | 2030-06-09 15:30 | 2030-06-09 16:30 | 471 | 0.000000 | OFFSHORE | 27 | 14 | G1 |
| 473 | 7.52 | Tower Lifting (safe-to-safe) | manual | 3.5eh | 2030-06-09 16:30 | 2030-06-09 20:00 | 472 | 0.000000 | OFFSHORE | 28 | 14 | G1 |
| 474 | 7.53 | Tower derigging (remove lifting equipment) | manual | 0.5eh | 2030-06-09 20:00 | 2030-06-09 20:30 | 473 | 0.000000 | OFFSHORE | 29 | 14 | G1 |
| 475 | 7.54 | Nacelle preparation and rigging | manual | 0.5eh | 2030-06-09 20:30 | 2030-06-09 21:00 | 474 | 0.000000 | OFFSHORE | 30 | 14 | G2 |
| 476 | 7.55 | Nacelle Lifting (safe-to-safe) | manual | 2.25eh | 2030-06-09 21:00 | 2030-06-09 23:15 | 475 | 0.000000 | OFFSHORE | 31 | 14 | G2 |
| 477 | 7.56 | Nacelle derigging (remove lifting equipment) | manual | 0.5eh | 2030-06-09 23:15 | 2030-06-09 23:45 | 476 | 0.000000 | OFFSHORE | 32 | 14 | G2 |
| 478 | 7.57 | Blade yoke rigging and attachement to Blade #1 | manual | 0.5eh | 2030-06-09 23:45 | 2030-06-10 00:15 | 477 | 0.000000 | OFFSHORE | 33 | 14 | G3 |
| 479 | 7.58 | Blade #1 Lifting (safe-to-safe) | manual | 1.75eh | 2030-06-10 00:15 | 2030-06-10 02:00 | 478 | 0.000000 | OFFSHORE | 34 | 14 | G3 |
| 480 | 7.59 | Blade #1 completion work, re-locate blade yoke to next blade | manual | 1.5eh | 2030-06-10 02:00 | 2030-06-10 03:30 | 479 | 0.000000 | OFFSHORE | 35 | 14 | G3 |
| 481 | 7.60 | Blade #2 Lifting (safe-to-safe) | manual | 1.75eh | 2030-06-10 03:30 | 2030-06-10 12:45 | 480 | 0.312500 | OFFSHORE | 36 | 14 | G4 |
| 482 | 7.61 | Balde #2 completion work, re-locate blade yoke to next blade | manual | 1.5eh | 2030-06-10 12:45 | 2030-06-10 14:15 | 481 | 0.000000 | OFFSHORE | 37 | 14 | G4 |
| 483 | 7.62 | Blade #3 Lifting (safe-to-safe) | manual | 1.75eh | 2030-06-10 14:15 | 2030-06-10 16:00 | 482 | 0.000000 | OFFSHORE | 38 | 14 | G5 |
| 484 | 7.63 | Blade #3 completion work, blade yoke de-rigging | manual | 1.5eh | 2030-06-10 16:00 | 2030-06-10 17:30 | 483 | 0.000000 | OFFSHORE | 39 | 14 | G5 |
| 485 | 7.64 | Handling HSBM and lifting tools | manual | 1eh | 2030-06-10 17:30 | 2030-06-10 18:30 | 484 | 0.000000 | OFFSHORE | 40 | 14 |  |
| 486 | 7.65 | Lifting HSBM and lifting tools from Nacelle | manual | 1eh | 2030-06-10 18:30 | 2030-06-10 19:30 | 485 | 0.000000 | OFFSHORE | 41 | 14 |  |
| 487 | 7.66 | Turbine general completion works | manual | 3eh | 2030-06-10 19:30 | 2030-06-10 22:30 | 486 | 0.000000 | OFFSHORE | 42 | 14 |  |
| 488 | 7.67 | Secure of crane, gangway etc. Preparation for jacking down and sailing | manual | 3eh | 2030-06-10 22:30 | 2030-06-11 01:30 | 487 | 0.000000 | OFFSHORE | 43 | 14 |  |
| 489 | 7.68 | Jacking down at site | manual | 2eh | 2030-06-11 01:30 | 2030-06-11 03:30 | 488 | 0.000000 | OFFSHORE | 44 | 14 |  |
| 490 | 7.69 | Transit from site to port | manual | 5.2eh | 2030-06-11 03:30 | 2030-06-11 08:45 | 489 | 0.000000 | OFFSHORE | 45 |  |  |

Notes:
- 421: P50 representative hindcast year 1984; cycle 7; baseline duration 5.163 days; downtime 0.312 days; elapsed duration 5.479 days.
- 422: Scenario: P50; P50 representative hindcast year 1984; cycle: 7; activity ID: 1; location: OFFSHORE; position: n/a; safe-to-safe group: none; baseline duration: 1.000 h; weather/operational downtime: 0.000 h; elapsed duration: 1.000 h.
- 423: Scenario: P50; P50 representative hindcast year 1984; cycle: 7; activity ID: 2; location: OFFSHORE; position: n/a; safe-to-safe group: none; baseline duration: 2.000 h; weather/operational downtime: 0.000 h; elapsed duration: 2.000 h.
- 424: Scenario: P50; P50 representative hindcast year 1984; cycle: 7; activity ID: 3; location: OFFSHORE; position: n/a; safe-to-safe group: none; baseline duration: 3.000 h; weather/operational downtime: 0.000 h; elapsed duration: 3.000 h.
- 425: Scenario: P50; P50 representative hindcast year 1984; cycle: 7; activity ID: 4; location: OFFSHORE; position: n/a; safe-to-safe group: none; baseline duration: 1.000 h; weather/operational downtime: 0.000 h; elapsed duration: 1.000 h.
- 426: Scenario: P50; P50 representative hindcast year 1984; cycle: 7; activity ID: 5; location: OFFSHORE; position: n/a; safe-to-safe group: none; baseline duration: 2.250 h; weather/operational downtime: 0.000 h; elapsed duration: 2.250 h.
- 427: Scenario: P50; P50 representative hindcast year 1984; cycle: 7; activity ID: 6; location: OFFSHORE; position: n/a; safe-to-safe group: none; baseline duration: 2.250 h; weather/operational downtime: 0.000 h; elapsed duration: 2.250 h.
- 428: Scenario: P50; P50 representative hindcast year 1984; cycle: 7; activity ID: 7; location: OFFSHORE; position: n/a; safe-to-safe group: none; baseline duration: 1.500 h; weather/operational downtime: 0.000 h; elapsed duration: 1.500 h.
- 429: Scenario: P50; P50 representative hindcast year 1984; cycle: 7; activity ID: 8; location: OFFSHORE; position: n/a; safe-to-safe group: none; baseline duration: 1.500 h; weather/operational downtime: 0.000 h; elapsed duration: 1.500 h.
- 430: Scenario: P50; P50 representative hindcast year 1984; cycle: 7; activity ID: 9; location: OFFSHORE; position: n/a; safe-to-safe group: none; baseline duration: 1.500 h; weather/operational downtime: 0.000 h; elapsed duration: 1.500 h.
- 431: Scenario: P50; P50 representative hindcast year 1984; cycle: 7; activity ID: 10; location: OFFSHORE; position: n/a; safe-to-safe group: none; baseline duration: 1.000 h; weather/operational downtime: 0.000 h; elapsed duration: 1.000 h.
- 432: Scenario: P50; P50 representative hindcast year 1984; cycle: 7; activity ID: 11; location: OFFSHORE; position: n/a; safe-to-safe group: none; baseline duration: 2.250 h; weather/operational downtime: 0.000 h; elapsed duration: 2.250 h.
- 433: Scenario: P50; P50 representative hindcast year 1984; cycle: 7; activity ID: 12; location: OFFSHORE; position: n/a; safe-to-safe group: none; baseline duration: 2.250 h; weather/operational downtime: 0.000 h; elapsed duration: 2.250 h.
- 434: Scenario: P50; P50 representative hindcast year 1984; cycle: 7; activity ID: 13; location: OFFSHORE; position: n/a; safe-to-safe group: none; baseline duration: 1.500 h; weather/operational downtime: 0.000 h; elapsed duration: 1.500 h.
- 435: Scenario: P50; P50 representative hindcast year 1984; cycle: 7; activity ID: 14; location: OFFSHORE; position: n/a; safe-to-safe group: none; baseline duration: 1.500 h; weather/operational downtime: 0.000 h; elapsed duration: 1.500 h.
- 436: Scenario: P50; P50 representative hindcast year 1984; cycle: 7; activity ID: 15; location: OFFSHORE; position: n/a; safe-to-safe group: none; baseline duration: 1.500 h; weather/operational downtime: 0.000 h; elapsed duration: 1.500 h.
- 437: Scenario: P50; P50 representative hindcast year 1984; cycle: 7; activity ID: 16; location: OFFSHORE; position: n/a; safe-to-safe group: none; baseline duration: 3.000 h; weather/operational downtime: 0.000 h; elapsed duration: 3.000 h.
- 438: Scenario: P50; P50 representative hindcast year 1984; cycle: 7; activity ID: 17; location: OFFSHORE; position: n/a; safe-to-safe group: none; baseline duration: 2.000 h; weather/operational downtime: 0.000 h; elapsed duration: 2.000 h.
- 439: Scenario: P50; P50 representative hindcast year 1984; cycle: 7; activity ID: 18; location: OFFSHORE; position: n/a; safe-to-safe group: none; baseline duration: 1.000 h; weather/operational downtime: 0.000 h; elapsed duration: 1.000 h.
- 440: Scenario: P50; P50 representative hindcast year 1984; cycle: 7; activity ID: 19; location: OFFSHORE; position: n/a; safe-to-safe group: none; baseline duration: 5.200 h; weather/operational downtime: 0.000 h; elapsed duration: 5.250 h.
- 441: Scenario: P50; P50 representative hindcast year 1984; cycle: 7; activity ID: 20; location: OFFSHORE; position: n/a; safe-to-safe group: none; baseline duration: 0.500 h; weather/operational downtime: 0.000 h; elapsed duration: 0.500 h.
- 442: Scenario: P50; P50 representative hindcast year 1984; cycle: 7; activity ID: 21; location: OFFSHORE; position: 13; safe-to-safe group: none; baseline duration: 1.000 h; weather/operational downtime: 0.000 h; elapsed duration: 1.000 h.
- 443: Scenario: P50; P50 representative hindcast year 1984; cycle: 7; activity ID: 22; location: OFFSHORE; position: 13; safe-to-safe group: none; baseline duration: 1.000 h; weather/operational downtime: 0.000 h; elapsed duration: 1.000 h.
- 444: Scenario: P50; P50 representative hindcast year 1984; cycle: 7; activity ID: 23; location: OFFSHORE; position: 13; safe-to-safe group: none; baseline duration: 4.000 h; weather/operational downtime: 0.000 h; elapsed duration: 4.000 h.
- 445: Scenario: P50; P50 representative hindcast year 1984; cycle: 7; activity ID: 24; location: OFFSHORE; position: 13; safe-to-safe group: none; baseline duration: 3.000 h; weather/operational downtime: 0.000 h; elapsed duration: 3.000 h.
- 446: Scenario: P50; P50 representative hindcast year 1984; cycle: 7; activity ID: 25; location: OFFSHORE; position: 13; safe-to-safe group: none; baseline duration: 1.000 h; weather/operational downtime: 0.000 h; elapsed duration: 1.000 h.
- 447: Scenario: P50; P50 representative hindcast year 1984; cycle: 7; activity ID: 26; location: OFFSHORE; position: 13; safe-to-safe group: none; baseline duration: 2.000 h; weather/operational downtime: 0.000 h; elapsed duration: 2.000 h.
- 448: Scenario: P50; P50 representative hindcast year 1984; cycle: 7; activity ID: 27; location: OFFSHORE; position: 13; safe-to-safe group: G1; baseline duration: 1.000 h; weather/operational downtime: 0.000 h; elapsed duration: 1.000 h.
- 449: Scenario: P50; P50 representative hindcast year 1984; cycle: 7; activity ID: 28; location: OFFSHORE; position: 13; safe-to-safe group: G1; baseline duration: 3.500 h; weather/operational downtime: 0.000 h; elapsed duration: 3.500 h.
- 450: Scenario: P50; P50 representative hindcast year 1984; cycle: 7; activity ID: 29; location: OFFSHORE; position: 13; safe-to-safe group: G1; baseline duration: 0.500 h; weather/operational downtime: 0.000 h; elapsed duration: 0.500 h.
- 451: Scenario: P50; P50 representative hindcast year 1984; cycle: 7; activity ID: 30; location: OFFSHORE; position: 13; safe-to-safe group: G2; baseline duration: 0.500 h; weather/operational downtime: 0.000 h; elapsed duration: 0.500 h.
- 452: Scenario: P50; P50 representative hindcast year 1984; cycle: 7; activity ID: 31; location: OFFSHORE; position: 13; safe-to-safe group: G2; baseline duration: 2.250 h; weather/operational downtime: 0.000 h; elapsed duration: 2.250 h.
- 453: Scenario: P50; P50 representative hindcast year 1984; cycle: 7; activity ID: 32; location: OFFSHORE; position: 13; safe-to-safe group: G2; baseline duration: 0.500 h; weather/operational downtime: 0.000 h; elapsed duration: 0.500 h.
- 454: Scenario: P50; P50 representative hindcast year 1984; cycle: 7; activity ID: 33; location: OFFSHORE; position: 13; safe-to-safe group: G3; baseline duration: 0.500 h; weather/operational downtime: 0.000 h; elapsed duration: 0.500 h.
- 455: Scenario: P50; P50 representative hindcast year 1984; cycle: 7; activity ID: 34; location: OFFSHORE; position: 13; safe-to-safe group: G3; baseline duration: 1.750 h; weather/operational downtime: 0.000 h; elapsed duration: 1.750 h.
- 456: Scenario: P50; P50 representative hindcast year 1984; cycle: 7; activity ID: 35; location: OFFSHORE; position: 13; safe-to-safe group: G3; baseline duration: 1.500 h; weather/operational downtime: 0.000 h; elapsed duration: 1.500 h.
- 457: Scenario: P50; P50 representative hindcast year 1984; cycle: 7; activity ID: 36; location: OFFSHORE; position: 13; safe-to-safe group: G4; baseline duration: 1.750 h; weather/operational downtime: 0.000 h; elapsed duration: 1.750 h.
- 458: Scenario: P50; P50 representative hindcast year 1984; cycle: 7; activity ID: 37; location: OFFSHORE; position: 13; safe-to-safe group: G4; baseline duration: 1.500 h; weather/operational downtime: 0.000 h; elapsed duration: 1.500 h.
- 459: Scenario: P50; P50 representative hindcast year 1984; cycle: 7; activity ID: 38; location: OFFSHORE; position: 13; safe-to-safe group: G5; baseline duration: 1.750 h; weather/operational downtime: 0.000 h; elapsed duration: 1.750 h.
- 460: Scenario: P50; P50 representative hindcast year 1984; cycle: 7; activity ID: 39; location: OFFSHORE; position: 13; safe-to-safe group: G5; baseline duration: 1.500 h; weather/operational downtime: 0.000 h; elapsed duration: 1.500 h.
- 461: Scenario: P50; P50 representative hindcast year 1984; cycle: 7; activity ID: 40; location: OFFSHORE; position: 13; safe-to-safe group: none; baseline duration: 1.000 h; weather/operational downtime: 0.000 h; elapsed duration: 1.000 h.
- 462: Scenario: P50; P50 representative hindcast year 1984; cycle: 7; activity ID: 41; location: OFFSHORE; position: 13; safe-to-safe group: none; baseline duration: 1.000 h; weather/operational downtime: 0.000 h; elapsed duration: 1.000 h.
- 463: Scenario: P50; P50 representative hindcast year 1984; cycle: 7; activity ID: 42; location: OFFSHORE; position: 13; safe-to-safe group: none; baseline duration: 3.000 h; weather/operational downtime: 0.000 h; elapsed duration: 3.000 h.
- 464: Scenario: P50; P50 representative hindcast year 1984; cycle: 7; activity ID: 43; location: OFFSHORE; position: 13; safe-to-safe group: none; baseline duration: 3.000 h; weather/operational downtime: 0.000 h; elapsed duration: 3.000 h.
- 465: Scenario: P50; P50 representative hindcast year 1984; cycle: 7; activity ID: 44; location: OFFSHORE; position: 13; safe-to-safe group: none; baseline duration: 2.000 h; weather/operational downtime: 0.000 h; elapsed duration: 2.000 h.
- 466: Scenario: P50; P50 representative hindcast year 1984; cycle: 7; activity ID: 21; location: OFFSHORE; position: 14; safe-to-safe group: none; baseline duration: 1.000 h; weather/operational downtime: 0.000 h; elapsed duration: 1.000 h.
- 467: Scenario: P50; P50 representative hindcast year 1984; cycle: 7; activity ID: 22; location: OFFSHORE; position: 14; safe-to-safe group: none; baseline duration: 1.000 h; weather/operational downtime: 0.000 h; elapsed duration: 1.000 h.
- 468: Scenario: P50; P50 representative hindcast year 1984; cycle: 7; activity ID: 23; location: OFFSHORE; position: 14; safe-to-safe group: none; baseline duration: 4.000 h; weather/operational downtime: 0.000 h; elapsed duration: 4.000 h.
- 469: Scenario: P50; P50 representative hindcast year 1984; cycle: 7; activity ID: 24; location: OFFSHORE; position: 14; safe-to-safe group: none; baseline duration: 3.000 h; weather/operational downtime: 0.000 h; elapsed duration: 3.000 h.
- 470: Scenario: P50; P50 representative hindcast year 1984; cycle: 7; activity ID: 25; location: OFFSHORE; position: 14; safe-to-safe group: none; baseline duration: 1.000 h; weather/operational downtime: 0.000 h; elapsed duration: 1.000 h.
- 471: Scenario: P50; P50 representative hindcast year 1984; cycle: 7; activity ID: 26; location: OFFSHORE; position: 14; safe-to-safe group: none; baseline duration: 2.000 h; weather/operational downtime: 0.000 h; elapsed duration: 2.000 h.
- 472: Scenario: P50; P50 representative hindcast year 1984; cycle: 7; activity ID: 27; location: OFFSHORE; position: 14; safe-to-safe group: G1; baseline duration: 1.000 h; weather/operational downtime: 0.000 h; elapsed duration: 1.000 h.
- 473: Scenario: P50; P50 representative hindcast year 1984; cycle: 7; activity ID: 28; location: OFFSHORE; position: 14; safe-to-safe group: G1; baseline duration: 3.500 h; weather/operational downtime: 0.000 h; elapsed duration: 3.500 h.
- 474: Scenario: P50; P50 representative hindcast year 1984; cycle: 7; activity ID: 29; location: OFFSHORE; position: 14; safe-to-safe group: G1; baseline duration: 0.500 h; weather/operational downtime: 0.000 h; elapsed duration: 0.500 h.
- 475: Scenario: P50; P50 representative hindcast year 1984; cycle: 7; activity ID: 30; location: OFFSHORE; position: 14; safe-to-safe group: G2; baseline duration: 0.500 h; weather/operational downtime: 0.000 h; elapsed duration: 0.500 h.
- 476: Scenario: P50; P50 representative hindcast year 1984; cycle: 7; activity ID: 31; location: OFFSHORE; position: 14; safe-to-safe group: G2; baseline duration: 2.250 h; weather/operational downtime: 0.000 h; elapsed duration: 2.250 h.
- 477: Scenario: P50; P50 representative hindcast year 1984; cycle: 7; activity ID: 32; location: OFFSHORE; position: 14; safe-to-safe group: G2; baseline duration: 0.500 h; weather/operational downtime: 0.000 h; elapsed duration: 0.500 h.
- 478: Scenario: P50; P50 representative hindcast year 1984; cycle: 7; activity ID: 33; location: OFFSHORE; position: 14; safe-to-safe group: G3; baseline duration: 0.500 h; weather/operational downtime: 0.000 h; elapsed duration: 0.500 h.
- 479: Scenario: P50; P50 representative hindcast year 1984; cycle: 7; activity ID: 34; location: OFFSHORE; position: 14; safe-to-safe group: G3; baseline duration: 1.750 h; weather/operational downtime: 0.000 h; elapsed duration: 1.750 h.
- 480: Scenario: P50; P50 representative hindcast year 1984; cycle: 7; activity ID: 35; location: OFFSHORE; position: 14; safe-to-safe group: G3; baseline duration: 1.500 h; weather/operational downtime: 0.000 h; elapsed duration: 1.500 h.
- 481: Scenario: P50; P50 representative hindcast year 1984; cycle: 7; activity ID: 36; location: OFFSHORE; position: 14; safe-to-safe group: G4; baseline duration: 1.750 h; weather/operational downtime: 7.500 h; elapsed duration: 9.250 h.
- 482: Scenario: P50; P50 representative hindcast year 1984; cycle: 7; activity ID: 37; location: OFFSHORE; position: 14; safe-to-safe group: G4; baseline duration: 1.500 h; weather/operational downtime: 0.000 h; elapsed duration: 1.500 h.
- 483: Scenario: P50; P50 representative hindcast year 1984; cycle: 7; activity ID: 38; location: OFFSHORE; position: 14; safe-to-safe group: G5; baseline duration: 1.750 h; weather/operational downtime: 0.000 h; elapsed duration: 1.750 h.
- 484: Scenario: P50; P50 representative hindcast year 1984; cycle: 7; activity ID: 39; location: OFFSHORE; position: 14; safe-to-safe group: G5; baseline duration: 1.500 h; weather/operational downtime: 0.000 h; elapsed duration: 1.500 h.
- 485: Scenario: P50; P50 representative hindcast year 1984; cycle: 7; activity ID: 40; location: OFFSHORE; position: 14; safe-to-safe group: none; baseline duration: 1.000 h; weather/operational downtime: 0.000 h; elapsed duration: 1.000 h.
- 486: Scenario: P50; P50 representative hindcast year 1984; cycle: 7; activity ID: 41; location: OFFSHORE; position: 14; safe-to-safe group: none; baseline duration: 1.000 h; weather/operational downtime: 0.000 h; elapsed duration: 1.000 h.
- 487: Scenario: P50; P50 representative hindcast year 1984; cycle: 7; activity ID: 42; location: OFFSHORE; position: 14; safe-to-safe group: none; baseline duration: 3.000 h; weather/operational downtime: 0.000 h; elapsed duration: 3.000 h.
- 488: Scenario: P50; P50 representative hindcast year 1984; cycle: 7; activity ID: 43; location: OFFSHORE; position: 14; safe-to-safe group: none; baseline duration: 3.000 h; weather/operational downtime: 0.000 h; elapsed duration: 3.000 h.
- 489: Scenario: P50; P50 representative hindcast year 1984; cycle: 7; activity ID: 44; location: OFFSHORE; position: 14; safe-to-safe group: none; baseline duration: 2.000 h; weather/operational downtime: 0.000 h; elapsed duration: 2.000 h.
- 490: Scenario: P50; P50 representative hindcast year 1984; cycle: 7; activity ID: 45; location: OFFSHORE; position: n/a; safe-to-safe group: none; baseline duration: 5.200 h; weather/operational downtime: 0.000 h; elapsed duration: 5.250 h.

| ID | WBS | Task | Type | Duration | Start | Finish | Predecessors | Duration WDT [days] | Location | Activity ID | Position | Safe-to-safe group |
| --- | --- | --- | --- | --- | --- | --- | --- | --- | --- | --- | --- | --- |
| 491 | 8 | **Cycle 08 — Positions 15–16** |  | 123.9eh | 2030-06-11 08:45 | 2030-06-19 01:00 |  | 2.510417 |  |  |  |  |
| 492 | 8.1 | Port maneuvering | manual | 1eh | 2030-06-11 08:45 | 2030-06-11 09:45 | 490 | 0.000000 | OFFSHORE | 1 |  |  |
| 493 | 8.2 | Preload and jacking up at port | manual | 2eh | 2030-06-11 09:45 | 2030-06-11 11:45 | 492 | 0.000000 | OFFSHORE | 2 |  |  |
| 494 | 8.3 | Release crane, gangway etc and prep for lifting | manual | 3eh | 2030-06-11 11:45 | 2030-06-11 14:45 | 493 | 0.000000 | OFFSHORE | 3 |  |  |
| 495 | 8.4 | Load in/out WTG supplier equipment | manual | 1eh | 2030-06-11 14:45 | 2030-06-11 15:45 | 494 | 0.000000 | OFFSHORE | 4 |  |  |
| 496 | 8.5 | Loadout Nacelle #1 | manual | 2.25eh | 2030-06-11 15:45 | 2030-06-11 18:00 | 495 | 0.000000 | OFFSHORE | 5 |  |  |
| 497 | 8.6 | Loadout Tower #1 | manual | 2.25eh | 2030-06-11 18:00 | 2030-06-11 20:15 | 496 | 0.000000 | OFFSHORE | 6 |  |  |
| 498 | 8.7 | Loadout Blade 1 | manual | 1.5eh | 2030-06-11 20:15 | 2030-06-11 21:45 | 497 | 0.000000 | OFFSHORE | 7 |  |  |
| 499 | 8.8 | Loadout Blade 2 | manual | 1.5eh | 2030-06-11 21:45 | 2030-06-11 23:15 | 498 | 0.000000 | OFFSHORE | 8 |  |  |
| 500 | 8.9 | Loadout Blade 3 | manual | 1.5eh | 2030-06-11 23:15 | 2030-06-12 00:45 | 499 | 0.000000 | OFFSHORE | 9 |  |  |
| 501 | 8.10 | Load in/out WTG supplier equipment | manual | 1eh | 2030-06-12 00:45 | 2030-06-12 01:45 | 500 | 0.000000 | OFFSHORE | 10 |  |  |
| 502 | 8.11 | Loadout Nacelle #2 | manual | 2.25eh | 2030-06-12 01:45 | 2030-06-12 04:00 | 501 | 0.000000 | OFFSHORE | 11 |  |  |
| 503 | 8.12 | Loadout Tower #2 | manual | 2.25eh | 2030-06-12 04:00 | 2030-06-12 06:15 | 502 | 0.000000 | OFFSHORE | 12 |  |  |
| 504 | 8.13 | Loadout Blade 1 | manual | 1.5eh | 2030-06-12 06:15 | 2030-06-12 07:45 | 503 | 0.000000 | OFFSHORE | 13 |  |  |
| 505 | 8.14 | Loadout Blade 2 | manual | 1.5eh | 2030-06-12 07:45 | 2030-06-12 09:15 | 504 | 0.000000 | OFFSHORE | 14 |  |  |
| 506 | 8.15 | Loadout Blade 3 | manual | 1.5eh | 2030-06-12 09:15 | 2030-06-12 10:45 | 505 | 0.000000 | OFFSHORE | 15 |  |  |
| 507 | 8.16 | Secure of crane, gangway (at port)) | manual | 3eh | 2030-06-12 10:45 | 2030-06-12 13:45 | 506 | 0.000000 | OFFSHORE | 16 |  |  |
| 508 | 8.17 | Jacking down at port | manual | 2eh | 2030-06-12 13:45 | 2030-06-12 15:45 | 507 | 0.000000 | OFFSHORE | 17 |  |  |
| 509 | 8.18 | Port maneuvering | manual | 1eh | 2030-06-12 15:45 | 2030-06-12 16:45 | 508 | 0.000000 | OFFSHORE | 18 |  |  |
| 510 | 8.19 | Transit from port to site | manual | 5.2eh | 2030-06-12 16:45 | 2030-06-12 22:00 | 509 | 0.000000 | OFFSHORE | 19 |  |  |
| 511 | 8.20 | DP field check | manual | 0.5eh | 2030-06-12 22:00 | 2030-06-12 22:30 | 510 | 0.000000 | OFFSHORE | 20 |  |  |
| 512 | 8.21 | Transit to next foundation | manual | 1eh | 2030-06-12 22:30 | 2030-06-12 23:30 | 511 | 0.000000 | OFFSHORE | 21 | 15 |  |
| 513 | 8.22 | Positioning at WTG location | manual | 1eh | 2030-06-12 23:30 | 2030-06-13 00:30 | 512 | 0.000000 | OFFSHORE | 22 | 15 |  |
| 514 | 8.23 | Preload and jacking up at site | manual | 4eh | 2030-06-13 00:30 | 2030-06-13 04:30 | 513 | 0.000000 | OFFSHORE | 23 | 15 |  |
| 515 | 8.24 | Release crane, gangway and prep for lifting | manual | 3eh | 2030-06-13 04:30 | 2030-06-13 07:30 | 514 | 0.000000 | OFFSHORE | 24 | 15 |  |
| 516 | 8.25 | Remove TP cover and Preparation of TP | manual | 1eh | 2030-06-13 07:30 | 2030-06-13 08:30 | 515 | 0.000000 | OFFSHORE | 25 | 15 |  |
| 517 | 8.26 | Tower preparation, removal of seafastening bolts | manual | 2eh | 2030-06-13 08:30 | 2030-06-13 10:30 | 516 | 0.000000 | OFFSHORE | 26 | 15 |  |
| 518 | 8.27 | Tower rigging-up (attached lifting equipment) | manual | 1eh | 2030-06-13 10:30 | 2030-06-13 11:30 | 517 | 0.000000 | OFFSHORE | 27 | 15 | G1 |
| 519 | 8.28 | Tower Lifting (safe-to-safe) | manual | 3.5eh | 2030-06-13 11:30 | 2030-06-13 15:00 | 518 | 0.000000 | OFFSHORE | 28 | 15 | G1 |
| 520 | 8.29 | Tower derigging (remove lifting equipment) | manual | 0.5eh | 2030-06-13 15:00 | 2030-06-13 15:30 | 519 | 0.000000 | OFFSHORE | 29 | 15 | G1 |
| 521 | 8.30 | Nacelle preparation and rigging | manual | 0.5eh | 2030-06-13 15:30 | 2030-06-13 16:00 | 520 | 0.000000 | OFFSHORE | 30 | 15 | G2 |
| 522 | 8.31 | Nacelle Lifting (safe-to-safe) | manual | 2.25eh | 2030-06-13 16:00 | 2030-06-13 18:15 | 521 | 0.000000 | OFFSHORE | 31 | 15 | G2 |
| 523 | 8.32 | Nacelle derigging (remove lifting equipment) | manual | 0.5eh | 2030-06-13 18:15 | 2030-06-13 18:45 | 522 | 0.000000 | OFFSHORE | 32 | 15 | G2 |
| 524 | 8.33 | Blade yoke rigging and attachement to Blade #1 | manual | 0.5eh | 2030-06-13 18:45 | 2030-06-16 07:30 | 523 | 2.510417 | OFFSHORE | 33 | 15 | G3 |
| 525 | 8.34 | Blade #1 Lifting (safe-to-safe) | manual | 1.75eh | 2030-06-16 07:30 | 2030-06-16 09:15 | 524 | 0.000000 | OFFSHORE | 34 | 15 | G3 |
| 526 | 8.35 | Blade #1 completion work, re-locate blade yoke to next blade | manual | 1.5eh | 2030-06-16 09:15 | 2030-06-16 10:45 | 525 | 0.000000 | OFFSHORE | 35 | 15 | G3 |
| 527 | 8.36 | Blade #2 Lifting (safe-to-safe) | manual | 1.75eh | 2030-06-16 10:45 | 2030-06-16 12:30 | 526 | 0.000000 | OFFSHORE | 36 | 15 | G4 |
| 528 | 8.37 | Balde #2 completion work, re-locate blade yoke to next blade | manual | 1.5eh | 2030-06-16 12:30 | 2030-06-16 14:00 | 527 | 0.000000 | OFFSHORE | 37 | 15 | G4 |
| 529 | 8.38 | Blade #3 Lifting (safe-to-safe) | manual | 1.75eh | 2030-06-16 14:00 | 2030-06-16 15:45 | 528 | 0.000000 | OFFSHORE | 38 | 15 | G5 |
| 530 | 8.39 | Blade #3 completion work, blade yoke de-rigging | manual | 1.5eh | 2030-06-16 15:45 | 2030-06-16 17:15 | 529 | 0.000000 | OFFSHORE | 39 | 15 | G5 |
| 531 | 8.40 | Handling HSBM and lifting tools | manual | 1eh | 2030-06-16 17:15 | 2030-06-16 18:15 | 530 | 0.000000 | OFFSHORE | 40 | 15 |  |
| 532 | 8.41 | Lifting HSBM and lifting tools from Nacelle | manual | 1eh | 2030-06-16 18:15 | 2030-06-16 19:15 | 531 | 0.000000 | OFFSHORE | 41 | 15 |  |
| 533 | 8.42 | Turbine general completion works | manual | 3eh | 2030-06-16 19:15 | 2030-06-16 22:15 | 532 | 0.000000 | OFFSHORE | 42 | 15 |  |
| 534 | 8.43 | Secure of crane, gangway etc. Preparation for jacking down and sailing | manual | 3eh | 2030-06-16 22:15 | 2030-06-17 01:15 | 533 | 0.000000 | OFFSHORE | 43 | 15 |  |
| 535 | 8.44 | Jacking down at site | manual | 2eh | 2030-06-17 01:15 | 2030-06-17 03:15 | 534 | 0.000000 | OFFSHORE | 44 | 15 |  |
| 536 | 8.45 | Transit to next foundation | manual | 1eh | 2030-06-17 03:15 | 2030-06-17 04:15 | 535 | 0.000000 | OFFSHORE | 21 | 16 |  |
| 537 | 8.46 | Positioning at WTG location | manual | 1eh | 2030-06-17 04:15 | 2030-06-17 05:15 | 536 | 0.000000 | OFFSHORE | 22 | 16 |  |
| 538 | 8.47 | Preload and jacking up at site | manual | 4eh | 2030-06-17 05:15 | 2030-06-17 09:15 | 537 | 0.000000 | OFFSHORE | 23 | 16 |  |
| 539 | 8.48 | Release crane, gangway and prep for lifting | manual | 3eh | 2030-06-17 09:15 | 2030-06-17 12:15 | 538 | 0.000000 | OFFSHORE | 24 | 16 |  |
| 540 | 8.49 | Remove TP cover and Preparation of TP | manual | 1eh | 2030-06-17 12:15 | 2030-06-17 13:15 | 539 | 0.000000 | OFFSHORE | 25 | 16 |  |
| 541 | 8.50 | Tower preparation, removal of seafastening bolts | manual | 2eh | 2030-06-17 13:15 | 2030-06-17 15:15 | 540 | 0.000000 | OFFSHORE | 26 | 16 |  |
| 542 | 8.51 | Tower rigging-up (attached lifting equipment) | manual | 1eh | 2030-06-17 15:15 | 2030-06-17 16:15 | 541 | 0.000000 | OFFSHORE | 27 | 16 | G1 |
| 543 | 8.52 | Tower Lifting (safe-to-safe) | manual | 3.5eh | 2030-06-17 16:15 | 2030-06-17 19:45 | 542 | 0.000000 | OFFSHORE | 28 | 16 | G1 |
| 544 | 8.53 | Tower derigging (remove lifting equipment) | manual | 0.5eh | 2030-06-17 19:45 | 2030-06-17 20:15 | 543 | 0.000000 | OFFSHORE | 29 | 16 | G1 |
| 545 | 8.54 | Nacelle preparation and rigging | manual | 0.5eh | 2030-06-17 20:15 | 2030-06-17 20:45 | 544 | 0.000000 | OFFSHORE | 30 | 16 | G2 |
| 546 | 8.55 | Nacelle Lifting (safe-to-safe) | manual | 2.25eh | 2030-06-17 20:45 | 2030-06-17 23:00 | 545 | 0.000000 | OFFSHORE | 31 | 16 | G2 |
| 547 | 8.56 | Nacelle derigging (remove lifting equipment) | manual | 0.5eh | 2030-06-17 23:00 | 2030-06-17 23:30 | 546 | 0.000000 | OFFSHORE | 32 | 16 | G2 |
| 548 | 8.57 | Blade yoke rigging and attachement to Blade #1 | manual | 0.5eh | 2030-06-17 23:30 | 2030-06-18 00:00 | 547 | 0.000000 | OFFSHORE | 33 | 16 | G3 |
| 549 | 8.58 | Blade #1 Lifting (safe-to-safe) | manual | 1.75eh | 2030-06-18 00:00 | 2030-06-18 01:45 | 548 | 0.000000 | OFFSHORE | 34 | 16 | G3 |
| 550 | 8.59 | Blade #1 completion work, re-locate blade yoke to next blade | manual | 1.5eh | 2030-06-18 01:45 | 2030-06-18 03:15 | 549 | 0.000000 | OFFSHORE | 35 | 16 | G3 |
| 551 | 8.60 | Blade #2 Lifting (safe-to-safe) | manual | 1.75eh | 2030-06-18 03:15 | 2030-06-18 05:00 | 550 | 0.000000 | OFFSHORE | 36 | 16 | G4 |
| 552 | 8.61 | Balde #2 completion work, re-locate blade yoke to next blade | manual | 1.5eh | 2030-06-18 05:00 | 2030-06-18 06:30 | 551 | 0.000000 | OFFSHORE | 37 | 16 | G4 |
| 553 | 8.62 | Blade #3 Lifting (safe-to-safe) | manual | 1.75eh | 2030-06-18 06:30 | 2030-06-18 08:15 | 552 | 0.000000 | OFFSHORE | 38 | 16 | G5 |
| 554 | 8.63 | Blade #3 completion work, blade yoke de-rigging | manual | 1.5eh | 2030-06-18 08:15 | 2030-06-18 09:45 | 553 | 0.000000 | OFFSHORE | 39 | 16 | G5 |
| 555 | 8.64 | Handling HSBM and lifting tools | manual | 1eh | 2030-06-18 09:45 | 2030-06-18 10:45 | 554 | 0.000000 | OFFSHORE | 40 | 16 |  |
| 556 | 8.65 | Lifting HSBM and lifting tools from Nacelle | manual | 1eh | 2030-06-18 10:45 | 2030-06-18 11:45 | 555 | 0.000000 | OFFSHORE | 41 | 16 |  |
| 557 | 8.66 | Turbine general completion works | manual | 3eh | 2030-06-18 11:45 | 2030-06-18 14:45 | 556 | 0.000000 | OFFSHORE | 42 | 16 |  |
| 558 | 8.67 | Secure of crane, gangway etc. Preparation for jacking down and sailing | manual | 3eh | 2030-06-18 14:45 | 2030-06-18 17:45 | 557 | 0.000000 | OFFSHORE | 43 | 16 |  |
| 559 | 8.68 | Jacking down at site | manual | 2eh | 2030-06-18 17:45 | 2030-06-18 19:45 | 558 | 0.000000 | OFFSHORE | 44 | 16 |  |
| 560 | 8.69 | Transit from site to port | manual | 5.2eh | 2030-06-18 19:45 | 2030-06-19 01:00 | 559 | 0.000000 | OFFSHORE | 45 |  |  |

Notes:
- 491: P50 representative hindcast year 1984; cycle 8; baseline duration 5.163 days; downtime 2.510 days; elapsed duration 7.677 days.
- 492: Scenario: P50; P50 representative hindcast year 1984; cycle: 8; activity ID: 1; location: OFFSHORE; position: n/a; safe-to-safe group: none; baseline duration: 1.000 h; weather/operational downtime: 0.000 h; elapsed duration: 1.000 h.
- 493: Scenario: P50; P50 representative hindcast year 1984; cycle: 8; activity ID: 2; location: OFFSHORE; position: n/a; safe-to-safe group: none; baseline duration: 2.000 h; weather/operational downtime: 0.000 h; elapsed duration: 2.000 h.
- 494: Scenario: P50; P50 representative hindcast year 1984; cycle: 8; activity ID: 3; location: OFFSHORE; position: n/a; safe-to-safe group: none; baseline duration: 3.000 h; weather/operational downtime: 0.000 h; elapsed duration: 3.000 h.
- 495: Scenario: P50; P50 representative hindcast year 1984; cycle: 8; activity ID: 4; location: OFFSHORE; position: n/a; safe-to-safe group: none; baseline duration: 1.000 h; weather/operational downtime: 0.000 h; elapsed duration: 1.000 h.
- 496: Scenario: P50; P50 representative hindcast year 1984; cycle: 8; activity ID: 5; location: OFFSHORE; position: n/a; safe-to-safe group: none; baseline duration: 2.250 h; weather/operational downtime: 0.000 h; elapsed duration: 2.250 h.
- 497: Scenario: P50; P50 representative hindcast year 1984; cycle: 8; activity ID: 6; location: OFFSHORE; position: n/a; safe-to-safe group: none; baseline duration: 2.250 h; weather/operational downtime: 0.000 h; elapsed duration: 2.250 h.
- 498: Scenario: P50; P50 representative hindcast year 1984; cycle: 8; activity ID: 7; location: OFFSHORE; position: n/a; safe-to-safe group: none; baseline duration: 1.500 h; weather/operational downtime: 0.000 h; elapsed duration: 1.500 h.
- 499: Scenario: P50; P50 representative hindcast year 1984; cycle: 8; activity ID: 8; location: OFFSHORE; position: n/a; safe-to-safe group: none; baseline duration: 1.500 h; weather/operational downtime: 0.000 h; elapsed duration: 1.500 h.
- 500: Scenario: P50; P50 representative hindcast year 1984; cycle: 8; activity ID: 9; location: OFFSHORE; position: n/a; safe-to-safe group: none; baseline duration: 1.500 h; weather/operational downtime: 0.000 h; elapsed duration: 1.500 h.
- 501: Scenario: P50; P50 representative hindcast year 1984; cycle: 8; activity ID: 10; location: OFFSHORE; position: n/a; safe-to-safe group: none; baseline duration: 1.000 h; weather/operational downtime: 0.000 h; elapsed duration: 1.000 h.
- 502: Scenario: P50; P50 representative hindcast year 1984; cycle: 8; activity ID: 11; location: OFFSHORE; position: n/a; safe-to-safe group: none; baseline duration: 2.250 h; weather/operational downtime: 0.000 h; elapsed duration: 2.250 h.
- 503: Scenario: P50; P50 representative hindcast year 1984; cycle: 8; activity ID: 12; location: OFFSHORE; position: n/a; safe-to-safe group: none; baseline duration: 2.250 h; weather/operational downtime: 0.000 h; elapsed duration: 2.250 h.
- 504: Scenario: P50; P50 representative hindcast year 1984; cycle: 8; activity ID: 13; location: OFFSHORE; position: n/a; safe-to-safe group: none; baseline duration: 1.500 h; weather/operational downtime: 0.000 h; elapsed duration: 1.500 h.
- 505: Scenario: P50; P50 representative hindcast year 1984; cycle: 8; activity ID: 14; location: OFFSHORE; position: n/a; safe-to-safe group: none; baseline duration: 1.500 h; weather/operational downtime: 0.000 h; elapsed duration: 1.500 h.
- 506: Scenario: P50; P50 representative hindcast year 1984; cycle: 8; activity ID: 15; location: OFFSHORE; position: n/a; safe-to-safe group: none; baseline duration: 1.500 h; weather/operational downtime: 0.000 h; elapsed duration: 1.500 h.
- 507: Scenario: P50; P50 representative hindcast year 1984; cycle: 8; activity ID: 16; location: OFFSHORE; position: n/a; safe-to-safe group: none; baseline duration: 3.000 h; weather/operational downtime: 0.000 h; elapsed duration: 3.000 h.
- 508: Scenario: P50; P50 representative hindcast year 1984; cycle: 8; activity ID: 17; location: OFFSHORE; position: n/a; safe-to-safe group: none; baseline duration: 2.000 h; weather/operational downtime: 0.000 h; elapsed duration: 2.000 h.
- 509: Scenario: P50; P50 representative hindcast year 1984; cycle: 8; activity ID: 18; location: OFFSHORE; position: n/a; safe-to-safe group: none; baseline duration: 1.000 h; weather/operational downtime: 0.000 h; elapsed duration: 1.000 h.
- 510: Scenario: P50; P50 representative hindcast year 1984; cycle: 8; activity ID: 19; location: OFFSHORE; position: n/a; safe-to-safe group: none; baseline duration: 5.200 h; weather/operational downtime: 0.000 h; elapsed duration: 5.250 h.
- 511: Scenario: P50; P50 representative hindcast year 1984; cycle: 8; activity ID: 20; location: OFFSHORE; position: n/a; safe-to-safe group: none; baseline duration: 0.500 h; weather/operational downtime: 0.000 h; elapsed duration: 0.500 h.
- 512: Scenario: P50; P50 representative hindcast year 1984; cycle: 8; activity ID: 21; location: OFFSHORE; position: 15; safe-to-safe group: none; baseline duration: 1.000 h; weather/operational downtime: 0.000 h; elapsed duration: 1.000 h.
- 513: Scenario: P50; P50 representative hindcast year 1984; cycle: 8; activity ID: 22; location: OFFSHORE; position: 15; safe-to-safe group: none; baseline duration: 1.000 h; weather/operational downtime: 0.000 h; elapsed duration: 1.000 h.
- 514: Scenario: P50; P50 representative hindcast year 1984; cycle: 8; activity ID: 23; location: OFFSHORE; position: 15; safe-to-safe group: none; baseline duration: 4.000 h; weather/operational downtime: 0.000 h; elapsed duration: 4.000 h.
- 515: Scenario: P50; P50 representative hindcast year 1984; cycle: 8; activity ID: 24; location: OFFSHORE; position: 15; safe-to-safe group: none; baseline duration: 3.000 h; weather/operational downtime: 0.000 h; elapsed duration: 3.000 h.
- 516: Scenario: P50; P50 representative hindcast year 1984; cycle: 8; activity ID: 25; location: OFFSHORE; position: 15; safe-to-safe group: none; baseline duration: 1.000 h; weather/operational downtime: 0.000 h; elapsed duration: 1.000 h.
- 517: Scenario: P50; P50 representative hindcast year 1984; cycle: 8; activity ID: 26; location: OFFSHORE; position: 15; safe-to-safe group: none; baseline duration: 2.000 h; weather/operational downtime: 0.000 h; elapsed duration: 2.000 h.
- 518: Scenario: P50; P50 representative hindcast year 1984; cycle: 8; activity ID: 27; location: OFFSHORE; position: 15; safe-to-safe group: G1; baseline duration: 1.000 h; weather/operational downtime: 0.000 h; elapsed duration: 1.000 h.
- 519: Scenario: P50; P50 representative hindcast year 1984; cycle: 8; activity ID: 28; location: OFFSHORE; position: 15; safe-to-safe group: G1; baseline duration: 3.500 h; weather/operational downtime: 0.000 h; elapsed duration: 3.500 h.
- 520: Scenario: P50; P50 representative hindcast year 1984; cycle: 8; activity ID: 29; location: OFFSHORE; position: 15; safe-to-safe group: G1; baseline duration: 0.500 h; weather/operational downtime: 0.000 h; elapsed duration: 0.500 h.
- 521: Scenario: P50; P50 representative hindcast year 1984; cycle: 8; activity ID: 30; location: OFFSHORE; position: 15; safe-to-safe group: G2; baseline duration: 0.500 h; weather/operational downtime: 0.000 h; elapsed duration: 0.500 h.
- 522: Scenario: P50; P50 representative hindcast year 1984; cycle: 8; activity ID: 31; location: OFFSHORE; position: 15; safe-to-safe group: G2; baseline duration: 2.250 h; weather/operational downtime: 0.000 h; elapsed duration: 2.250 h.
- 523: Scenario: P50; P50 representative hindcast year 1984; cycle: 8; activity ID: 32; location: OFFSHORE; position: 15; safe-to-safe group: G2; baseline duration: 0.500 h; weather/operational downtime: 0.000 h; elapsed duration: 0.500 h.
- 524: Scenario: P50; P50 representative hindcast year 1984; cycle: 8; activity ID: 33; location: OFFSHORE; position: 15; safe-to-safe group: G3; baseline duration: 0.500 h; weather/operational downtime: 60.250 h; elapsed duration: 60.750 h.
- 525: Scenario: P50; P50 representative hindcast year 1984; cycle: 8; activity ID: 34; location: OFFSHORE; position: 15; safe-to-safe group: G3; baseline duration: 1.750 h; weather/operational downtime: 0.000 h; elapsed duration: 1.750 h.
- 526: Scenario: P50; P50 representative hindcast year 1984; cycle: 8; activity ID: 35; location: OFFSHORE; position: 15; safe-to-safe group: G3; baseline duration: 1.500 h; weather/operational downtime: 0.000 h; elapsed duration: 1.500 h.
- 527: Scenario: P50; P50 representative hindcast year 1984; cycle: 8; activity ID: 36; location: OFFSHORE; position: 15; safe-to-safe group: G4; baseline duration: 1.750 h; weather/operational downtime: 0.000 h; elapsed duration: 1.750 h.
- 528: Scenario: P50; P50 representative hindcast year 1984; cycle: 8; activity ID: 37; location: OFFSHORE; position: 15; safe-to-safe group: G4; baseline duration: 1.500 h; weather/operational downtime: 0.000 h; elapsed duration: 1.500 h.
- 529: Scenario: P50; P50 representative hindcast year 1984; cycle: 8; activity ID: 38; location: OFFSHORE; position: 15; safe-to-safe group: G5; baseline duration: 1.750 h; weather/operational downtime: 0.000 h; elapsed duration: 1.750 h.
- 530: Scenario: P50; P50 representative hindcast year 1984; cycle: 8; activity ID: 39; location: OFFSHORE; position: 15; safe-to-safe group: G5; baseline duration: 1.500 h; weather/operational downtime: 0.000 h; elapsed duration: 1.500 h.
- 531: Scenario: P50; P50 representative hindcast year 1984; cycle: 8; activity ID: 40; location: OFFSHORE; position: 15; safe-to-safe group: none; baseline duration: 1.000 h; weather/operational downtime: 0.000 h; elapsed duration: 1.000 h.
- 532: Scenario: P50; P50 representative hindcast year 1984; cycle: 8; activity ID: 41; location: OFFSHORE; position: 15; safe-to-safe group: none; baseline duration: 1.000 h; weather/operational downtime: 0.000 h; elapsed duration: 1.000 h.
- 533: Scenario: P50; P50 representative hindcast year 1984; cycle: 8; activity ID: 42; location: OFFSHORE; position: 15; safe-to-safe group: none; baseline duration: 3.000 h; weather/operational downtime: 0.000 h; elapsed duration: 3.000 h.
- 534: Scenario: P50; P50 representative hindcast year 1984; cycle: 8; activity ID: 43; location: OFFSHORE; position: 15; safe-to-safe group: none; baseline duration: 3.000 h; weather/operational downtime: 0.000 h; elapsed duration: 3.000 h.
- 535: Scenario: P50; P50 representative hindcast year 1984; cycle: 8; activity ID: 44; location: OFFSHORE; position: 15; safe-to-safe group: none; baseline duration: 2.000 h; weather/operational downtime: 0.000 h; elapsed duration: 2.000 h.
- 536: Scenario: P50; P50 representative hindcast year 1984; cycle: 8; activity ID: 21; location: OFFSHORE; position: 16; safe-to-safe group: none; baseline duration: 1.000 h; weather/operational downtime: 0.000 h; elapsed duration: 1.000 h.
- 537: Scenario: P50; P50 representative hindcast year 1984; cycle: 8; activity ID: 22; location: OFFSHORE; position: 16; safe-to-safe group: none; baseline duration: 1.000 h; weather/operational downtime: 0.000 h; elapsed duration: 1.000 h.
- 538: Scenario: P50; P50 representative hindcast year 1984; cycle: 8; activity ID: 23; location: OFFSHORE; position: 16; safe-to-safe group: none; baseline duration: 4.000 h; weather/operational downtime: 0.000 h; elapsed duration: 4.000 h.
- 539: Scenario: P50; P50 representative hindcast year 1984; cycle: 8; activity ID: 24; location: OFFSHORE; position: 16; safe-to-safe group: none; baseline duration: 3.000 h; weather/operational downtime: 0.000 h; elapsed duration: 3.000 h.
- 540: Scenario: P50; P50 representative hindcast year 1984; cycle: 8; activity ID: 25; location: OFFSHORE; position: 16; safe-to-safe group: none; baseline duration: 1.000 h; weather/operational downtime: 0.000 h; elapsed duration: 1.000 h.
- 541: Scenario: P50; P50 representative hindcast year 1984; cycle: 8; activity ID: 26; location: OFFSHORE; position: 16; safe-to-safe group: none; baseline duration: 2.000 h; weather/operational downtime: 0.000 h; elapsed duration: 2.000 h.
- 542: Scenario: P50; P50 representative hindcast year 1984; cycle: 8; activity ID: 27; location: OFFSHORE; position: 16; safe-to-safe group: G1; baseline duration: 1.000 h; weather/operational downtime: 0.000 h; elapsed duration: 1.000 h.
- 543: Scenario: P50; P50 representative hindcast year 1984; cycle: 8; activity ID: 28; location: OFFSHORE; position: 16; safe-to-safe group: G1; baseline duration: 3.500 h; weather/operational downtime: 0.000 h; elapsed duration: 3.500 h.
- 544: Scenario: P50; P50 representative hindcast year 1984; cycle: 8; activity ID: 29; location: OFFSHORE; position: 16; safe-to-safe group: G1; baseline duration: 0.500 h; weather/operational downtime: 0.000 h; elapsed duration: 0.500 h.
- 545: Scenario: P50; P50 representative hindcast year 1984; cycle: 8; activity ID: 30; location: OFFSHORE; position: 16; safe-to-safe group: G2; baseline duration: 0.500 h; weather/operational downtime: 0.000 h; elapsed duration: 0.500 h.
- 546: Scenario: P50; P50 representative hindcast year 1984; cycle: 8; activity ID: 31; location: OFFSHORE; position: 16; safe-to-safe group: G2; baseline duration: 2.250 h; weather/operational downtime: 0.000 h; elapsed duration: 2.250 h.
- 547: Scenario: P50; P50 representative hindcast year 1984; cycle: 8; activity ID: 32; location: OFFSHORE; position: 16; safe-to-safe group: G2; baseline duration: 0.500 h; weather/operational downtime: 0.000 h; elapsed duration: 0.500 h.
- 548: Scenario: P50; P50 representative hindcast year 1984; cycle: 8; activity ID: 33; location: OFFSHORE; position: 16; safe-to-safe group: G3; baseline duration: 0.500 h; weather/operational downtime: 0.000 h; elapsed duration: 0.500 h.
- 549: Scenario: P50; P50 representative hindcast year 1984; cycle: 8; activity ID: 34; location: OFFSHORE; position: 16; safe-to-safe group: G3; baseline duration: 1.750 h; weather/operational downtime: 0.000 h; elapsed duration: 1.750 h.
- 550: Scenario: P50; P50 representative hindcast year 1984; cycle: 8; activity ID: 35; location: OFFSHORE; position: 16; safe-to-safe group: G3; baseline duration: 1.500 h; weather/operational downtime: 0.000 h; elapsed duration: 1.500 h.
- 551: Scenario: P50; P50 representative hindcast year 1984; cycle: 8; activity ID: 36; location: OFFSHORE; position: 16; safe-to-safe group: G4; baseline duration: 1.750 h; weather/operational downtime: 0.000 h; elapsed duration: 1.750 h.
- 552: Scenario: P50; P50 representative hindcast year 1984; cycle: 8; activity ID: 37; location: OFFSHORE; position: 16; safe-to-safe group: G4; baseline duration: 1.500 h; weather/operational downtime: 0.000 h; elapsed duration: 1.500 h.
- 553: Scenario: P50; P50 representative hindcast year 1984; cycle: 8; activity ID: 38; location: OFFSHORE; position: 16; safe-to-safe group: G5; baseline duration: 1.750 h; weather/operational downtime: 0.000 h; elapsed duration: 1.750 h.
- 554: Scenario: P50; P50 representative hindcast year 1984; cycle: 8; activity ID: 39; location: OFFSHORE; position: 16; safe-to-safe group: G5; baseline duration: 1.500 h; weather/operational downtime: 0.000 h; elapsed duration: 1.500 h.
- 555: Scenario: P50; P50 representative hindcast year 1984; cycle: 8; activity ID: 40; location: OFFSHORE; position: 16; safe-to-safe group: none; baseline duration: 1.000 h; weather/operational downtime: 0.000 h; elapsed duration: 1.000 h.
- 556: Scenario: P50; P50 representative hindcast year 1984; cycle: 8; activity ID: 41; location: OFFSHORE; position: 16; safe-to-safe group: none; baseline duration: 1.000 h; weather/operational downtime: 0.000 h; elapsed duration: 1.000 h.
- 557: Scenario: P50; P50 representative hindcast year 1984; cycle: 8; activity ID: 42; location: OFFSHORE; position: 16; safe-to-safe group: none; baseline duration: 3.000 h; weather/operational downtime: 0.000 h; elapsed duration: 3.000 h.
- 558: Scenario: P50; P50 representative hindcast year 1984; cycle: 8; activity ID: 43; location: OFFSHORE; position: 16; safe-to-safe group: none; baseline duration: 3.000 h; weather/operational downtime: 0.000 h; elapsed duration: 3.000 h.
- 559: Scenario: P50; P50 representative hindcast year 1984; cycle: 8; activity ID: 44; location: OFFSHORE; position: 16; safe-to-safe group: none; baseline duration: 2.000 h; weather/operational downtime: 0.000 h; elapsed duration: 2.000 h.
- 560: Scenario: P50; P50 representative hindcast year 1984; cycle: 8; activity ID: 45; location: OFFSHORE; position: n/a; safe-to-safe group: none; baseline duration: 5.200 h; weather/operational downtime: 0.000 h; elapsed duration: 5.250 h.

| ID | WBS | Task | Type | Duration | Start | Finish | Predecessors | Duration WDT [days] | Location | Activity ID | Position | Safe-to-safe group |
| --- | --- | --- | --- | --- | --- | --- | --- | --- | --- | --- | --- | --- |
| 561 | 9 | **Cycle 09 — Positions 17–18** |  | 123.9eh | 2030-06-19 01:00 | 2030-06-25 18:15 |  | 1.552083 |  |  |  |  |
| 562 | 9.1 | Port maneuvering | manual | 1eh | 2030-06-19 01:00 | 2030-06-19 02:00 | 560 | 0.000000 | OFFSHORE | 1 |  |  |
| 563 | 9.2 | Preload and jacking up at port | manual | 2eh | 2030-06-19 02:00 | 2030-06-19 04:00 | 562 | 0.000000 | OFFSHORE | 2 |  |  |
| 564 | 9.3 | Release crane, gangway etc and prep for lifting | manual | 3eh | 2030-06-19 04:00 | 2030-06-19 07:00 | 563 | 0.000000 | OFFSHORE | 3 |  |  |
| 565 | 9.4 | Load in/out WTG supplier equipment | manual | 1eh | 2030-06-19 07:00 | 2030-06-19 08:00 | 564 | 0.000000 | OFFSHORE | 4 |  |  |
| 566 | 9.5 | Loadout Nacelle #1 | manual | 2.25eh | 2030-06-19 08:00 | 2030-06-19 10:15 | 565 | 0.000000 | OFFSHORE | 5 |  |  |
| 567 | 9.6 | Loadout Tower #1 | manual | 2.25eh | 2030-06-19 10:15 | 2030-06-19 12:30 | 566 | 0.000000 | OFFSHORE | 6 |  |  |
| 568 | 9.7 | Loadout Blade 1 | manual | 1.5eh | 2030-06-19 12:30 | 2030-06-19 14:00 | 567 | 0.000000 | OFFSHORE | 7 |  |  |
| 569 | 9.8 | Loadout Blade 2 | manual | 1.5eh | 2030-06-19 14:00 | 2030-06-19 15:30 | 568 | 0.000000 | OFFSHORE | 8 |  |  |
| 570 | 9.9 | Loadout Blade 3 | manual | 1.5eh | 2030-06-19 15:30 | 2030-06-19 17:00 | 569 | 0.000000 | OFFSHORE | 9 |  |  |
| 571 | 9.10 | Load in/out WTG supplier equipment | manual | 1eh | 2030-06-19 17:00 | 2030-06-19 18:00 | 570 | 0.000000 | OFFSHORE | 10 |  |  |
| 572 | 9.11 | Loadout Nacelle #2 | manual | 2.25eh | 2030-06-19 18:00 | 2030-06-19 20:15 | 571 | 0.000000 | OFFSHORE | 11 |  |  |
| 573 | 9.12 | Loadout Tower #2 | manual | 2.25eh | 2030-06-19 20:15 | 2030-06-19 22:30 | 572 | 0.000000 | OFFSHORE | 12 |  |  |
| 574 | 9.13 | Loadout Blade 1 | manual | 1.5eh | 2030-06-19 22:30 | 2030-06-20 00:00 | 573 | 0.000000 | OFFSHORE | 13 |  |  |
| 575 | 9.14 | Loadout Blade 2 | manual | 1.5eh | 2030-06-20 00:00 | 2030-06-20 01:30 | 574 | 0.000000 | OFFSHORE | 14 |  |  |
| 576 | 9.15 | Loadout Blade 3 | manual | 1.5eh | 2030-06-20 01:30 | 2030-06-20 03:00 | 575 | 0.000000 | OFFSHORE | 15 |  |  |
| 577 | 9.16 | Secure of crane, gangway (at port)) | manual | 3eh | 2030-06-20 03:00 | 2030-06-20 06:00 | 576 | 0.000000 | OFFSHORE | 16 |  |  |
| 578 | 9.17 | Jacking down at port | manual | 2eh | 2030-06-20 06:00 | 2030-06-20 08:00 | 577 | 0.000000 | OFFSHORE | 17 |  |  |
| 579 | 9.18 | Port maneuvering | manual | 1eh | 2030-06-20 08:00 | 2030-06-20 09:00 | 578 | 0.000000 | OFFSHORE | 18 |  |  |
| 580 | 9.19 | Transit from port to site | manual | 5.2eh | 2030-06-20 09:00 | 2030-06-20 14:15 | 579 | 0.000000 | OFFSHORE | 19 |  |  |
| 581 | 9.20 | DP field check | manual | 0.5eh | 2030-06-20 14:15 | 2030-06-20 17:30 | 580 | 0.114583 | OFFSHORE | 20 |  |  |
| 582 | 9.21 | Transit to next foundation | manual | 1eh | 2030-06-20 17:30 | 2030-06-20 18:30 | 581 | 0.000000 | OFFSHORE | 21 | 17 |  |
| 583 | 9.22 | Positioning at WTG location | manual | 1eh | 2030-06-20 18:30 | 2030-06-20 19:30 | 582 | 0.000000 | OFFSHORE | 22 | 17 |  |
| 584 | 9.23 | Preload and jacking up at site | manual | 4eh | 2030-06-20 19:30 | 2030-06-20 23:30 | 583 | 0.000000 | OFFSHORE | 23 | 17 |  |
| 585 | 9.24 | Release crane, gangway and prep for lifting | manual | 3eh | 2030-06-20 23:30 | 2030-06-21 02:30 | 584 | 0.000000 | OFFSHORE | 24 | 17 |  |
| 586 | 9.25 | Remove TP cover and Preparation of TP | manual | 1eh | 2030-06-21 02:30 | 2030-06-21 03:30 | 585 | 0.000000 | OFFSHORE | 25 | 17 |  |
| 587 | 9.26 | Tower preparation, removal of seafastening bolts | manual | 2eh | 2030-06-21 03:30 | 2030-06-21 05:30 | 586 | 0.000000 | OFFSHORE | 26 | 17 |  |
| 588 | 9.27 | Tower rigging-up (attached lifting equipment) | manual | 1eh | 2030-06-21 05:30 | 2030-06-21 06:30 | 587 | 0.000000 | OFFSHORE | 27 | 17 | G1 |
| 589 | 9.28 | Tower Lifting (safe-to-safe) | manual | 3.5eh | 2030-06-21 06:30 | 2030-06-21 10:00 | 588 | 0.000000 | OFFSHORE | 28 | 17 | G1 |
| 590 | 9.29 | Tower derigging (remove lifting equipment) | manual | 0.5eh | 2030-06-21 10:00 | 2030-06-21 10:30 | 589 | 0.000000 | OFFSHORE | 29 | 17 | G1 |
| 591 | 9.30 | Nacelle preparation and rigging | manual | 0.5eh | 2030-06-21 10:30 | 2030-06-21 11:00 | 590 | 0.000000 | OFFSHORE | 30 | 17 | G2 |
| 592 | 9.31 | Nacelle Lifting (safe-to-safe) | manual | 2.25eh | 2030-06-21 11:00 | 2030-06-21 13:15 | 591 | 0.000000 | OFFSHORE | 31 | 17 | G2 |
| 593 | 9.32 | Nacelle derigging (remove lifting equipment) | manual | 0.5eh | 2030-06-21 13:15 | 2030-06-21 13:45 | 592 | 0.000000 | OFFSHORE | 32 | 17 | G2 |
| 594 | 9.33 | Blade yoke rigging and attachement to Blade #1 | manual | 0.5eh | 2030-06-21 13:45 | 2030-06-21 14:15 | 593 | 0.000000 | OFFSHORE | 33 | 17 | G3 |
| 595 | 9.34 | Blade #1 Lifting (safe-to-safe) | manual | 1.75eh | 2030-06-21 14:15 | 2030-06-21 16:00 | 594 | 0.000000 | OFFSHORE | 34 | 17 | G3 |
| 596 | 9.35 | Blade #1 completion work, re-locate blade yoke to next blade | manual | 1.5eh | 2030-06-21 16:00 | 2030-06-21 17:30 | 595 | 0.000000 | OFFSHORE | 35 | 17 | G3 |
| 597 | 9.36 | Blade #2 Lifting (safe-to-safe) | manual | 1.75eh | 2030-06-21 17:30 | 2030-06-21 19:15 | 596 | 0.000000 | OFFSHORE | 36 | 17 | G4 |
| 598 | 9.37 | Balde #2 completion work, re-locate blade yoke to next blade | manual | 1.5eh | 2030-06-21 19:15 | 2030-06-21 20:45 | 597 | 0.000000 | OFFSHORE | 37 | 17 | G4 |
| 599 | 9.38 | Blade #3 Lifting (safe-to-safe) | manual | 1.75eh | 2030-06-21 20:45 | 2030-06-21 22:30 | 598 | 0.000000 | OFFSHORE | 38 | 17 | G5 |
| 600 | 9.39 | Blade #3 completion work, blade yoke de-rigging | manual | 1.5eh | 2030-06-21 22:30 | 2030-06-22 00:00 | 599 | 0.000000 | OFFSHORE | 39 | 17 | G5 |
| 601 | 9.40 | Handling HSBM and lifting tools | manual | 1eh | 2030-06-22 00:00 | 2030-06-22 01:00 | 600 | 0.000000 | OFFSHORE | 40 | 17 |  |
| 602 | 9.41 | Lifting HSBM and lifting tools from Nacelle | manual | 1eh | 2030-06-22 01:00 | 2030-06-22 02:00 | 601 | 0.000000 | OFFSHORE | 41 | 17 |  |
| 603 | 9.42 | Turbine general completion works | manual | 3eh | 2030-06-22 02:00 | 2030-06-22 05:00 | 602 | 0.000000 | OFFSHORE | 42 | 17 |  |
| 604 | 9.43 | Secure of crane, gangway etc. Preparation for jacking down and sailing | manual | 3eh | 2030-06-22 05:00 | 2030-06-22 08:00 | 603 | 0.000000 | OFFSHORE | 43 | 17 |  |
| 605 | 9.44 | Jacking down at site | manual | 2eh | 2030-06-22 08:00 | 2030-06-22 10:00 | 604 | 0.000000 | OFFSHORE | 44 | 17 |  |
| 606 | 9.45 | Transit to next foundation | manual | 1eh | 2030-06-22 10:00 | 2030-06-22 11:00 | 605 | 0.000000 | OFFSHORE | 21 | 18 |  |
| 607 | 9.46 | Positioning at WTG location | manual | 1eh | 2030-06-22 11:00 | 2030-06-22 12:00 | 606 | 0.000000 | OFFSHORE | 22 | 18 |  |
| 608 | 9.47 | Preload and jacking up at site | manual | 4eh | 2030-06-22 12:00 | 2030-06-22 16:00 | 607 | 0.000000 | OFFSHORE | 23 | 18 |  |
| 609 | 9.48 | Release crane, gangway and prep for lifting | manual | 3eh | 2030-06-22 16:00 | 2030-06-22 19:00 | 608 | 0.000000 | OFFSHORE | 24 | 18 |  |
| 610 | 9.49 | Remove TP cover and Preparation of TP | manual | 1eh | 2030-06-22 19:00 | 2030-06-22 20:00 | 609 | 0.000000 | OFFSHORE | 25 | 18 |  |
| 611 | 9.50 | Tower preparation, removal of seafastening bolts | manual | 2eh | 2030-06-22 20:00 | 2030-06-22 22:00 | 610 | 0.000000 | OFFSHORE | 26 | 18 |  |
| 612 | 9.51 | Tower rigging-up (attached lifting equipment) | manual | 1eh | 2030-06-22 22:00 | 2030-06-23 21:00 | 611 | 0.916667 | OFFSHORE | 27 | 18 | G1 |
| 613 | 9.52 | Tower Lifting (safe-to-safe) | manual | 3.5eh | 2030-06-23 21:00 | 2030-06-24 00:30 | 612 | 0.000000 | OFFSHORE | 28 | 18 | G1 |
| 614 | 9.53 | Tower derigging (remove lifting equipment) | manual | 0.5eh | 2030-06-24 00:30 | 2030-06-24 01:00 | 613 | 0.000000 | OFFSHORE | 29 | 18 | G1 |
| 615 | 9.54 | Nacelle preparation and rigging | manual | 0.5eh | 2030-06-24 01:00 | 2030-06-24 01:30 | 614 | 0.000000 | OFFSHORE | 30 | 18 | G2 |
| 616 | 9.55 | Nacelle Lifting (safe-to-safe) | manual | 2.25eh | 2030-06-24 01:30 | 2030-06-24 03:45 | 615 | 0.000000 | OFFSHORE | 31 | 18 | G2 |
| 617 | 9.56 | Nacelle derigging (remove lifting equipment) | manual | 0.5eh | 2030-06-24 03:45 | 2030-06-24 04:15 | 616 | 0.000000 | OFFSHORE | 32 | 18 | G2 |
| 618 | 9.57 | Blade yoke rigging and attachement to Blade #1 | manual | 0.5eh | 2030-06-24 04:15 | 2030-06-24 04:45 | 617 | 0.000000 | OFFSHORE | 33 | 18 | G3 |
| 619 | 9.58 | Blade #1 Lifting (safe-to-safe) | manual | 1.75eh | 2030-06-24 04:45 | 2030-06-24 06:30 | 618 | 0.000000 | OFFSHORE | 34 | 18 | G3 |
| 620 | 9.59 | Blade #1 completion work, re-locate blade yoke to next blade | manual | 1.5eh | 2030-06-24 06:30 | 2030-06-24 08:00 | 619 | 0.000000 | OFFSHORE | 35 | 18 | G3 |
| 621 | 9.60 | Blade #2 Lifting (safe-to-safe) | manual | 1.75eh | 2030-06-24 08:00 | 2030-06-24 09:45 | 620 | 0.000000 | OFFSHORE | 36 | 18 | G4 |
| 622 | 9.61 | Balde #2 completion work, re-locate blade yoke to next blade | manual | 1.5eh | 2030-06-24 09:45 | 2030-06-24 11:15 | 621 | 0.000000 | OFFSHORE | 37 | 18 | G4 |
| 623 | 9.62 | Blade #3 Lifting (safe-to-safe) | manual | 1.75eh | 2030-06-24 11:15 | 2030-06-24 16:45 | 622 | 0.156250 | OFFSHORE | 38 | 18 | G5 |
| 624 | 9.63 | Blade #3 completion work, blade yoke de-rigging | manual | 1.5eh | 2030-06-24 16:45 | 2030-06-24 18:15 | 623 | 0.000000 | OFFSHORE | 39 | 18 | G5 |
| 625 | 9.64 | Handling HSBM and lifting tools | manual | 1eh | 2030-06-24 18:15 | 2030-06-24 19:15 | 624 | 0.000000 | OFFSHORE | 40 | 18 |  |
| 626 | 9.65 | Lifting HSBM and lifting tools from Nacelle | manual | 1eh | 2030-06-24 19:15 | 2030-06-24 20:15 | 625 | 0.000000 | OFFSHORE | 41 | 18 |  |
| 627 | 9.66 | Turbine general completion works | manual | 3eh | 2030-06-24 20:15 | 2030-06-24 23:15 | 626 | 0.000000 | OFFSHORE | 42 | 18 |  |
| 628 | 9.67 | Secure of crane, gangway etc. Preparation for jacking down and sailing | manual | 3eh | 2030-06-24 23:15 | 2030-06-25 02:15 | 627 | 0.000000 | OFFSHORE | 43 | 18 |  |
| 629 | 9.68 | Jacking down at site | manual | 2eh | 2030-06-25 02:15 | 2030-06-25 13:00 | 628 | 0.364583 | OFFSHORE | 44 | 18 |  |
| 630 | 9.69 | Transit from site to port | manual | 5.2eh | 2030-06-25 13:00 | 2030-06-25 18:15 | 629 | 0.000000 | OFFSHORE | 45 |  |  |

Notes:
- 561: P50 representative hindcast year 1984; cycle 9; baseline duration 5.163 days; downtime 1.552 days; elapsed duration 6.719 days.
- 562: Scenario: P50; P50 representative hindcast year 1984; cycle: 9; activity ID: 1; location: OFFSHORE; position: n/a; safe-to-safe group: none; baseline duration: 1.000 h; weather/operational downtime: 0.000 h; elapsed duration: 1.000 h.
- 563: Scenario: P50; P50 representative hindcast year 1984; cycle: 9; activity ID: 2; location: OFFSHORE; position: n/a; safe-to-safe group: none; baseline duration: 2.000 h; weather/operational downtime: 0.000 h; elapsed duration: 2.000 h.
- 564: Scenario: P50; P50 representative hindcast year 1984; cycle: 9; activity ID: 3; location: OFFSHORE; position: n/a; safe-to-safe group: none; baseline duration: 3.000 h; weather/operational downtime: 0.000 h; elapsed duration: 3.000 h.
- 565: Scenario: P50; P50 representative hindcast year 1984; cycle: 9; activity ID: 4; location: OFFSHORE; position: n/a; safe-to-safe group: none; baseline duration: 1.000 h; weather/operational downtime: 0.000 h; elapsed duration: 1.000 h.
- 566: Scenario: P50; P50 representative hindcast year 1984; cycle: 9; activity ID: 5; location: OFFSHORE; position: n/a; safe-to-safe group: none; baseline duration: 2.250 h; weather/operational downtime: 0.000 h; elapsed duration: 2.250 h.
- 567: Scenario: P50; P50 representative hindcast year 1984; cycle: 9; activity ID: 6; location: OFFSHORE; position: n/a; safe-to-safe group: none; baseline duration: 2.250 h; weather/operational downtime: 0.000 h; elapsed duration: 2.250 h.
- 568: Scenario: P50; P50 representative hindcast year 1984; cycle: 9; activity ID: 7; location: OFFSHORE; position: n/a; safe-to-safe group: none; baseline duration: 1.500 h; weather/operational downtime: 0.000 h; elapsed duration: 1.500 h.
- 569: Scenario: P50; P50 representative hindcast year 1984; cycle: 9; activity ID: 8; location: OFFSHORE; position: n/a; safe-to-safe group: none; baseline duration: 1.500 h; weather/operational downtime: 0.000 h; elapsed duration: 1.500 h.
- 570: Scenario: P50; P50 representative hindcast year 1984; cycle: 9; activity ID: 9; location: OFFSHORE; position: n/a; safe-to-safe group: none; baseline duration: 1.500 h; weather/operational downtime: 0.000 h; elapsed duration: 1.500 h.
- 571: Scenario: P50; P50 representative hindcast year 1984; cycle: 9; activity ID: 10; location: OFFSHORE; position: n/a; safe-to-safe group: none; baseline duration: 1.000 h; weather/operational downtime: 0.000 h; elapsed duration: 1.000 h.
- 572: Scenario: P50; P50 representative hindcast year 1984; cycle: 9; activity ID: 11; location: OFFSHORE; position: n/a; safe-to-safe group: none; baseline duration: 2.250 h; weather/operational downtime: 0.000 h; elapsed duration: 2.250 h.
- 573: Scenario: P50; P50 representative hindcast year 1984; cycle: 9; activity ID: 12; location: OFFSHORE; position: n/a; safe-to-safe group: none; baseline duration: 2.250 h; weather/operational downtime: 0.000 h; elapsed duration: 2.250 h.
- 574: Scenario: P50; P50 representative hindcast year 1984; cycle: 9; activity ID: 13; location: OFFSHORE; position: n/a; safe-to-safe group: none; baseline duration: 1.500 h; weather/operational downtime: 0.000 h; elapsed duration: 1.500 h.
- 575: Scenario: P50; P50 representative hindcast year 1984; cycle: 9; activity ID: 14; location: OFFSHORE; position: n/a; safe-to-safe group: none; baseline duration: 1.500 h; weather/operational downtime: 0.000 h; elapsed duration: 1.500 h.
- 576: Scenario: P50; P50 representative hindcast year 1984; cycle: 9; activity ID: 15; location: OFFSHORE; position: n/a; safe-to-safe group: none; baseline duration: 1.500 h; weather/operational downtime: 0.000 h; elapsed duration: 1.500 h.
- 577: Scenario: P50; P50 representative hindcast year 1984; cycle: 9; activity ID: 16; location: OFFSHORE; position: n/a; safe-to-safe group: none; baseline duration: 3.000 h; weather/operational downtime: 0.000 h; elapsed duration: 3.000 h.
- 578: Scenario: P50; P50 representative hindcast year 1984; cycle: 9; activity ID: 17; location: OFFSHORE; position: n/a; safe-to-safe group: none; baseline duration: 2.000 h; weather/operational downtime: 0.000 h; elapsed duration: 2.000 h.
- 579: Scenario: P50; P50 representative hindcast year 1984; cycle: 9; activity ID: 18; location: OFFSHORE; position: n/a; safe-to-safe group: none; baseline duration: 1.000 h; weather/operational downtime: 0.000 h; elapsed duration: 1.000 h.
- 580: Scenario: P50; P50 representative hindcast year 1984; cycle: 9; activity ID: 19; location: OFFSHORE; position: n/a; safe-to-safe group: none; baseline duration: 5.200 h; weather/operational downtime: 0.000 h; elapsed duration: 5.250 h.
- 581: Scenario: P50; P50 representative hindcast year 1984; cycle: 9; activity ID: 20; location: OFFSHORE; position: n/a; safe-to-safe group: none; baseline duration: 0.500 h; weather/operational downtime: 2.750 h; elapsed duration: 3.250 h.
- 582: Scenario: P50; P50 representative hindcast year 1984; cycle: 9; activity ID: 21; location: OFFSHORE; position: 17; safe-to-safe group: none; baseline duration: 1.000 h; weather/operational downtime: 0.000 h; elapsed duration: 1.000 h.
- 583: Scenario: P50; P50 representative hindcast year 1984; cycle: 9; activity ID: 22; location: OFFSHORE; position: 17; safe-to-safe group: none; baseline duration: 1.000 h; weather/operational downtime: 0.000 h; elapsed duration: 1.000 h.
- 584: Scenario: P50; P50 representative hindcast year 1984; cycle: 9; activity ID: 23; location: OFFSHORE; position: 17; safe-to-safe group: none; baseline duration: 4.000 h; weather/operational downtime: 0.000 h; elapsed duration: 4.000 h.
- 585: Scenario: P50; P50 representative hindcast year 1984; cycle: 9; activity ID: 24; location: OFFSHORE; position: 17; safe-to-safe group: none; baseline duration: 3.000 h; weather/operational downtime: 0.000 h; elapsed duration: 3.000 h.
- 586: Scenario: P50; P50 representative hindcast year 1984; cycle: 9; activity ID: 25; location: OFFSHORE; position: 17; safe-to-safe group: none; baseline duration: 1.000 h; weather/operational downtime: 0.000 h; elapsed duration: 1.000 h.
- 587: Scenario: P50; P50 representative hindcast year 1984; cycle: 9; activity ID: 26; location: OFFSHORE; position: 17; safe-to-safe group: none; baseline duration: 2.000 h; weather/operational downtime: 0.000 h; elapsed duration: 2.000 h.
- 588: Scenario: P50; P50 representative hindcast year 1984; cycle: 9; activity ID: 27; location: OFFSHORE; position: 17; safe-to-safe group: G1; baseline duration: 1.000 h; weather/operational downtime: 0.000 h; elapsed duration: 1.000 h.
- 589: Scenario: P50; P50 representative hindcast year 1984; cycle: 9; activity ID: 28; location: OFFSHORE; position: 17; safe-to-safe group: G1; baseline duration: 3.500 h; weather/operational downtime: 0.000 h; elapsed duration: 3.500 h.
- 590: Scenario: P50; P50 representative hindcast year 1984; cycle: 9; activity ID: 29; location: OFFSHORE; position: 17; safe-to-safe group: G1; baseline duration: 0.500 h; weather/operational downtime: 0.000 h; elapsed duration: 0.500 h.
- 591: Scenario: P50; P50 representative hindcast year 1984; cycle: 9; activity ID: 30; location: OFFSHORE; position: 17; safe-to-safe group: G2; baseline duration: 0.500 h; weather/operational downtime: 0.000 h; elapsed duration: 0.500 h.
- 592: Scenario: P50; P50 representative hindcast year 1984; cycle: 9; activity ID: 31; location: OFFSHORE; position: 17; safe-to-safe group: G2; baseline duration: 2.250 h; weather/operational downtime: 0.000 h; elapsed duration: 2.250 h.
- 593: Scenario: P50; P50 representative hindcast year 1984; cycle: 9; activity ID: 32; location: OFFSHORE; position: 17; safe-to-safe group: G2; baseline duration: 0.500 h; weather/operational downtime: 0.000 h; elapsed duration: 0.500 h.
- 594: Scenario: P50; P50 representative hindcast year 1984; cycle: 9; activity ID: 33; location: OFFSHORE; position: 17; safe-to-safe group: G3; baseline duration: 0.500 h; weather/operational downtime: 0.000 h; elapsed duration: 0.500 h.
- 595: Scenario: P50; P50 representative hindcast year 1984; cycle: 9; activity ID: 34; location: OFFSHORE; position: 17; safe-to-safe group: G3; baseline duration: 1.750 h; weather/operational downtime: 0.000 h; elapsed duration: 1.750 h.
- 596: Scenario: P50; P50 representative hindcast year 1984; cycle: 9; activity ID: 35; location: OFFSHORE; position: 17; safe-to-safe group: G3; baseline duration: 1.500 h; weather/operational downtime: 0.000 h; elapsed duration: 1.500 h.
- 597: Scenario: P50; P50 representative hindcast year 1984; cycle: 9; activity ID: 36; location: OFFSHORE; position: 17; safe-to-safe group: G4; baseline duration: 1.750 h; weather/operational downtime: 0.000 h; elapsed duration: 1.750 h.
- 598: Scenario: P50; P50 representative hindcast year 1984; cycle: 9; activity ID: 37; location: OFFSHORE; position: 17; safe-to-safe group: G4; baseline duration: 1.500 h; weather/operational downtime: 0.000 h; elapsed duration: 1.500 h.
- 599: Scenario: P50; P50 representative hindcast year 1984; cycle: 9; activity ID: 38; location: OFFSHORE; position: 17; safe-to-safe group: G5; baseline duration: 1.750 h; weather/operational downtime: 0.000 h; elapsed duration: 1.750 h.
- 600: Scenario: P50; P50 representative hindcast year 1984; cycle: 9; activity ID: 39; location: OFFSHORE; position: 17; safe-to-safe group: G5; baseline duration: 1.500 h; weather/operational downtime: 0.000 h; elapsed duration: 1.500 h.
- 601: Scenario: P50; P50 representative hindcast year 1984; cycle: 9; activity ID: 40; location: OFFSHORE; position: 17; safe-to-safe group: none; baseline duration: 1.000 h; weather/operational downtime: 0.000 h; elapsed duration: 1.000 h.
- 602: Scenario: P50; P50 representative hindcast year 1984; cycle: 9; activity ID: 41; location: OFFSHORE; position: 17; safe-to-safe group: none; baseline duration: 1.000 h; weather/operational downtime: 0.000 h; elapsed duration: 1.000 h.
- 603: Scenario: P50; P50 representative hindcast year 1984; cycle: 9; activity ID: 42; location: OFFSHORE; position: 17; safe-to-safe group: none; baseline duration: 3.000 h; weather/operational downtime: 0.000 h; elapsed duration: 3.000 h.
- 604: Scenario: P50; P50 representative hindcast year 1984; cycle: 9; activity ID: 43; location: OFFSHORE; position: 17; safe-to-safe group: none; baseline duration: 3.000 h; weather/operational downtime: 0.000 h; elapsed duration: 3.000 h.
- 605: Scenario: P50; P50 representative hindcast year 1984; cycle: 9; activity ID: 44; location: OFFSHORE; position: 17; safe-to-safe group: none; baseline duration: 2.000 h; weather/operational downtime: 0.000 h; elapsed duration: 2.000 h.
- 606: Scenario: P50; P50 representative hindcast year 1984; cycle: 9; activity ID: 21; location: OFFSHORE; position: 18; safe-to-safe group: none; baseline duration: 1.000 h; weather/operational downtime: 0.000 h; elapsed duration: 1.000 h.
- 607: Scenario: P50; P50 representative hindcast year 1984; cycle: 9; activity ID: 22; location: OFFSHORE; position: 18; safe-to-safe group: none; baseline duration: 1.000 h; weather/operational downtime: 0.000 h; elapsed duration: 1.000 h.
- 608: Scenario: P50; P50 representative hindcast year 1984; cycle: 9; activity ID: 23; location: OFFSHORE; position: 18; safe-to-safe group: none; baseline duration: 4.000 h; weather/operational downtime: 0.000 h; elapsed duration: 4.000 h.
- 609: Scenario: P50; P50 representative hindcast year 1984; cycle: 9; activity ID: 24; location: OFFSHORE; position: 18; safe-to-safe group: none; baseline duration: 3.000 h; weather/operational downtime: 0.000 h; elapsed duration: 3.000 h.
- 610: Scenario: P50; P50 representative hindcast year 1984; cycle: 9; activity ID: 25; location: OFFSHORE; position: 18; safe-to-safe group: none; baseline duration: 1.000 h; weather/operational downtime: 0.000 h; elapsed duration: 1.000 h.
- 611: Scenario: P50; P50 representative hindcast year 1984; cycle: 9; activity ID: 26; location: OFFSHORE; position: 18; safe-to-safe group: none; baseline duration: 2.000 h; weather/operational downtime: 0.000 h; elapsed duration: 2.000 h.
- 612: Scenario: P50; P50 representative hindcast year 1984; cycle: 9; activity ID: 27; location: OFFSHORE; position: 18; safe-to-safe group: G1; baseline duration: 1.000 h; weather/operational downtime: 22.000 h; elapsed duration: 23.000 h.
- 613: Scenario: P50; P50 representative hindcast year 1984; cycle: 9; activity ID: 28; location: OFFSHORE; position: 18; safe-to-safe group: G1; baseline duration: 3.500 h; weather/operational downtime: 0.000 h; elapsed duration: 3.500 h.
- 614: Scenario: P50; P50 representative hindcast year 1984; cycle: 9; activity ID: 29; location: OFFSHORE; position: 18; safe-to-safe group: G1; baseline duration: 0.500 h; weather/operational downtime: 0.000 h; elapsed duration: 0.500 h.
- 615: Scenario: P50; P50 representative hindcast year 1984; cycle: 9; activity ID: 30; location: OFFSHORE; position: 18; safe-to-safe group: G2; baseline duration: 0.500 h; weather/operational downtime: 0.000 h; elapsed duration: 0.500 h.
- 616: Scenario: P50; P50 representative hindcast year 1984; cycle: 9; activity ID: 31; location: OFFSHORE; position: 18; safe-to-safe group: G2; baseline duration: 2.250 h; weather/operational downtime: 0.000 h; elapsed duration: 2.250 h.
- 617: Scenario: P50; P50 representative hindcast year 1984; cycle: 9; activity ID: 32; location: OFFSHORE; position: 18; safe-to-safe group: G2; baseline duration: 0.500 h; weather/operational downtime: 0.000 h; elapsed duration: 0.500 h.
- 618: Scenario: P50; P50 representative hindcast year 1984; cycle: 9; activity ID: 33; location: OFFSHORE; position: 18; safe-to-safe group: G3; baseline duration: 0.500 h; weather/operational downtime: 0.000 h; elapsed duration: 0.500 h.
- 619: Scenario: P50; P50 representative hindcast year 1984; cycle: 9; activity ID: 34; location: OFFSHORE; position: 18; safe-to-safe group: G3; baseline duration: 1.750 h; weather/operational downtime: 0.000 h; elapsed duration: 1.750 h.
- 620: Scenario: P50; P50 representative hindcast year 1984; cycle: 9; activity ID: 35; location: OFFSHORE; position: 18; safe-to-safe group: G3; baseline duration: 1.500 h; weather/operational downtime: 0.000 h; elapsed duration: 1.500 h.
- 621: Scenario: P50; P50 representative hindcast year 1984; cycle: 9; activity ID: 36; location: OFFSHORE; position: 18; safe-to-safe group: G4; baseline duration: 1.750 h; weather/operational downtime: 0.000 h; elapsed duration: 1.750 h.
- 622: Scenario: P50; P50 representative hindcast year 1984; cycle: 9; activity ID: 37; location: OFFSHORE; position: 18; safe-to-safe group: G4; baseline duration: 1.500 h; weather/operational downtime: 0.000 h; elapsed duration: 1.500 h.
- 623: Scenario: P50; P50 representative hindcast year 1984; cycle: 9; activity ID: 38; location: OFFSHORE; position: 18; safe-to-safe group: G5; baseline duration: 1.750 h; weather/operational downtime: 3.750 h; elapsed duration: 5.500 h.
- 624: Scenario: P50; P50 representative hindcast year 1984; cycle: 9; activity ID: 39; location: OFFSHORE; position: 18; safe-to-safe group: G5; baseline duration: 1.500 h; weather/operational downtime: 0.000 h; elapsed duration: 1.500 h.
- 625: Scenario: P50; P50 representative hindcast year 1984; cycle: 9; activity ID: 40; location: OFFSHORE; position: 18; safe-to-safe group: none; baseline duration: 1.000 h; weather/operational downtime: 0.000 h; elapsed duration: 1.000 h.
- 626: Scenario: P50; P50 representative hindcast year 1984; cycle: 9; activity ID: 41; location: OFFSHORE; position: 18; safe-to-safe group: none; baseline duration: 1.000 h; weather/operational downtime: 0.000 h; elapsed duration: 1.000 h.
- 627: Scenario: P50; P50 representative hindcast year 1984; cycle: 9; activity ID: 42; location: OFFSHORE; position: 18; safe-to-safe group: none; baseline duration: 3.000 h; weather/operational downtime: 0.000 h; elapsed duration: 3.000 h.
- 628: Scenario: P50; P50 representative hindcast year 1984; cycle: 9; activity ID: 43; location: OFFSHORE; position: 18; safe-to-safe group: none; baseline duration: 3.000 h; weather/operational downtime: 0.000 h; elapsed duration: 3.000 h.
- 629: Scenario: P50; P50 representative hindcast year 1984; cycle: 9; activity ID: 44; location: OFFSHORE; position: 18; safe-to-safe group: none; baseline duration: 2.000 h; weather/operational downtime: 8.750 h; elapsed duration: 10.750 h.
- 630: Scenario: P50; P50 representative hindcast year 1984; cycle: 9; activity ID: 45; location: OFFSHORE; position: n/a; safe-to-safe group: none; baseline duration: 5.200 h; weather/operational downtime: 0.000 h; elapsed duration: 5.250 h.

| ID | WBS | Task | Type | Duration | Start | Finish | Predecessors | Duration WDT [days] | Location | Activity ID | Position | Safe-to-safe group |
| --- | --- | --- | --- | --- | --- | --- | --- | --- | --- | --- | --- | --- |
| 631 | 10 | **Cycle 10 — Positions 19–20** |  | 123.9eh | 2030-06-25 18:15 | 2030-07-02 05:45 |  | 1.312500 |  |  |  |  |
| 632 | 10.1 | Port maneuvering | manual | 1eh | 2030-06-25 18:15 | 2030-06-25 19:15 | 630 | 0.000000 | OFFSHORE | 1 |  |  |
| 633 | 10.2 | Preload and jacking up at port | manual | 2eh | 2030-06-25 19:15 | 2030-06-25 21:15 | 632 | 0.000000 | OFFSHORE | 2 |  |  |
| 634 | 10.3 | Release crane, gangway etc and prep for lifting | manual | 3eh | 2030-06-25 21:15 | 2030-06-26 00:15 | 633 | 0.000000 | OFFSHORE | 3 |  |  |
| 635 | 10.4 | Load in/out WTG supplier equipment | manual | 1eh | 2030-06-26 00:15 | 2030-06-26 01:15 | 634 | 0.000000 | OFFSHORE | 4 |  |  |
| 636 | 10.5 | Loadout Nacelle #1 | manual | 2.25eh | 2030-06-26 01:15 | 2030-06-26 03:30 | 635 | 0.000000 | OFFSHORE | 5 |  |  |
| 637 | 10.6 | Loadout Tower #1 | manual | 2.25eh | 2030-06-26 03:30 | 2030-06-26 05:45 | 636 | 0.000000 | OFFSHORE | 6 |  |  |
| 638 | 10.7 | Loadout Blade 1 | manual | 1.5eh | 2030-06-26 05:45 | 2030-06-26 07:15 | 637 | 0.000000 | OFFSHORE | 7 |  |  |
| 639 | 10.8 | Loadout Blade 2 | manual | 1.5eh | 2030-06-26 07:15 | 2030-06-26 08:45 | 638 | 0.000000 | OFFSHORE | 8 |  |  |
| 640 | 10.9 | Loadout Blade 3 | manual | 1.5eh | 2030-06-26 08:45 | 2030-06-26 10:15 | 639 | 0.000000 | OFFSHORE | 9 |  |  |
| 641 | 10.10 | Load in/out WTG supplier equipment | manual | 1eh | 2030-06-26 10:15 | 2030-06-26 11:15 | 640 | 0.000000 | OFFSHORE | 10 |  |  |
| 642 | 10.11 | Loadout Nacelle #2 | manual | 2.25eh | 2030-06-26 11:15 | 2030-06-26 13:30 | 641 | 0.000000 | OFFSHORE | 11 |  |  |
| 643 | 10.12 | Loadout Tower #2 | manual | 2.25eh | 2030-06-26 13:30 | 2030-06-26 15:45 | 642 | 0.000000 | OFFSHORE | 12 |  |  |
| 644 | 10.13 | Loadout Blade 1 | manual | 1.5eh | 2030-06-26 15:45 | 2030-06-26 17:15 | 643 | 0.000000 | OFFSHORE | 13 |  |  |
| 645 | 10.14 | Loadout Blade 2 | manual | 1.5eh | 2030-06-26 17:15 | 2030-06-26 18:45 | 644 | 0.000000 | OFFSHORE | 14 |  |  |
| 646 | 10.15 | Loadout Blade 3 | manual | 1.5eh | 2030-06-26 18:45 | 2030-06-26 20:15 | 645 | 0.000000 | OFFSHORE | 15 |  |  |
| 647 | 10.16 | Secure of crane, gangway (at port)) | manual | 3eh | 2030-06-26 20:15 | 2030-06-26 23:15 | 646 | 0.000000 | OFFSHORE | 16 |  |  |
| 648 | 10.17 | Jacking down at port | manual | 2eh | 2030-06-26 23:15 | 2030-06-27 01:15 | 647 | 0.000000 | OFFSHORE | 17 |  |  |
| 649 | 10.18 | Port maneuvering | manual | 1eh | 2030-06-27 01:15 | 2030-06-27 02:15 | 648 | 0.000000 | OFFSHORE | 18 |  |  |
| 650 | 10.19 | Transit from port to site | manual | 5.2eh | 2030-06-27 02:15 | 2030-06-27 07:30 | 649 | 0.000000 | OFFSHORE | 19 |  |  |
| 651 | 10.20 | DP field check | manual | 0.5eh | 2030-06-27 07:30 | 2030-06-28 13:30 | 650 | 1.229167 | OFFSHORE | 20 |  |  |
| 652 | 10.21 | Transit to next foundation | manual | 1eh | 2030-06-28 13:30 | 2030-06-28 14:30 | 651 | 0.000000 | OFFSHORE | 21 | 19 |  |
| 653 | 10.22 | Positioning at WTG location | manual | 1eh | 2030-06-28 14:30 | 2030-06-28 15:30 | 652 | 0.000000 | OFFSHORE | 22 | 19 |  |
| 654 | 10.23 | Preload and jacking up at site | manual | 4eh | 2030-06-28 15:30 | 2030-06-28 19:30 | 653 | 0.000000 | OFFSHORE | 23 | 19 |  |
| 655 | 10.24 | Release crane, gangway and prep for lifting | manual | 3eh | 2030-06-28 19:30 | 2030-06-28 22:30 | 654 | 0.000000 | OFFSHORE | 24 | 19 |  |
| 656 | 10.25 | Remove TP cover and Preparation of TP | manual | 1eh | 2030-06-28 22:30 | 2030-06-28 23:30 | 655 | 0.000000 | OFFSHORE | 25 | 19 |  |
| 657 | 10.26 | Tower preparation, removal of seafastening bolts | manual | 2eh | 2030-06-28 23:30 | 2030-06-29 01:30 | 656 | 0.000000 | OFFSHORE | 26 | 19 |  |
| 658 | 10.27 | Tower rigging-up (attached lifting equipment) | manual | 1eh | 2030-06-29 01:30 | 2030-06-29 02:30 | 657 | 0.000000 | OFFSHORE | 27 | 19 | G1 |
| 659 | 10.28 | Tower Lifting (safe-to-safe) | manual | 3.5eh | 2030-06-29 02:30 | 2030-06-29 06:00 | 658 | 0.000000 | OFFSHORE | 28 | 19 | G1 |
| 660 | 10.29 | Tower derigging (remove lifting equipment) | manual | 0.5eh | 2030-06-29 06:00 | 2030-06-29 06:30 | 659 | 0.000000 | OFFSHORE | 29 | 19 | G1 |
| 661 | 10.30 | Nacelle preparation and rigging | manual | 0.5eh | 2030-06-29 06:30 | 2030-06-29 07:00 | 660 | 0.000000 | OFFSHORE | 30 | 19 | G2 |
| 662 | 10.31 | Nacelle Lifting (safe-to-safe) | manual | 2.25eh | 2030-06-29 07:00 | 2030-06-29 09:15 | 661 | 0.000000 | OFFSHORE | 31 | 19 | G2 |
| 663 | 10.32 | Nacelle derigging (remove lifting equipment) | manual | 0.5eh | 2030-06-29 09:15 | 2030-06-29 09:45 | 662 | 0.000000 | OFFSHORE | 32 | 19 | G2 |
| 664 | 10.33 | Blade yoke rigging and attachement to Blade #1 | manual | 0.5eh | 2030-06-29 09:45 | 2030-06-29 10:15 | 663 | 0.000000 | OFFSHORE | 33 | 19 | G3 |
| 665 | 10.34 | Blade #1 Lifting (safe-to-safe) | manual | 1.75eh | 2030-06-29 10:15 | 2030-06-29 12:00 | 664 | 0.000000 | OFFSHORE | 34 | 19 | G3 |
| 666 | 10.35 | Blade #1 completion work, re-locate blade yoke to next blade | manual | 1.5eh | 2030-06-29 12:00 | 2030-06-29 13:30 | 665 | 0.000000 | OFFSHORE | 35 | 19 | G3 |
| 667 | 10.36 | Blade #2 Lifting (safe-to-safe) | manual | 1.75eh | 2030-06-29 13:30 | 2030-06-29 15:15 | 666 | 0.000000 | OFFSHORE | 36 | 19 | G4 |
| 668 | 10.37 | Balde #2 completion work, re-locate blade yoke to next blade | manual | 1.5eh | 2030-06-29 15:15 | 2030-06-29 16:45 | 667 | 0.000000 | OFFSHORE | 37 | 19 | G4 |
| 669 | 10.38 | Blade #3 Lifting (safe-to-safe) | manual | 1.75eh | 2030-06-29 16:45 | 2030-06-29 18:30 | 668 | 0.000000 | OFFSHORE | 38 | 19 | G5 |
| 670 | 10.39 | Blade #3 completion work, blade yoke de-rigging | manual | 1.5eh | 2030-06-29 18:30 | 2030-06-29 20:00 | 669 | 0.000000 | OFFSHORE | 39 | 19 | G5 |
| 671 | 10.40 | Handling HSBM and lifting tools | manual | 1eh | 2030-06-29 20:00 | 2030-06-29 21:00 | 670 | 0.000000 | OFFSHORE | 40 | 19 |  |
| 672 | 10.41 | Lifting HSBM and lifting tools from Nacelle | manual | 1eh | 2030-06-29 21:00 | 2030-06-29 22:00 | 671 | 0.000000 | OFFSHORE | 41 | 19 |  |
| 673 | 10.42 | Turbine general completion works | manual | 3eh | 2030-06-29 22:00 | 2030-06-30 01:00 | 672 | 0.000000 | OFFSHORE | 42 | 19 |  |
| 674 | 10.43 | Secure of crane, gangway etc. Preparation for jacking down and sailing | manual | 3eh | 2030-06-30 01:00 | 2030-06-30 04:00 | 673 | 0.000000 | OFFSHORE | 43 | 19 |  |
| 675 | 10.44 | Jacking down at site | manual | 2eh | 2030-06-30 04:00 | 2030-06-30 06:00 | 674 | 0.000000 | OFFSHORE | 44 | 19 |  |
| 676 | 10.45 | Transit to next foundation | manual | 1eh | 2030-06-30 06:00 | 2030-06-30 07:00 | 675 | 0.000000 | OFFSHORE | 21 | 20 |  |
| 677 | 10.46 | Positioning at WTG location | manual | 1eh | 2030-06-30 07:00 | 2030-06-30 08:00 | 676 | 0.000000 | OFFSHORE | 22 | 20 |  |
| 678 | 10.47 | Preload and jacking up at site | manual | 4eh | 2030-06-30 08:00 | 2030-06-30 14:00 | 677 | 0.083333 | OFFSHORE | 23 | 20 |  |
| 679 | 10.48 | Release crane, gangway and prep for lifting | manual | 3eh | 2030-06-30 14:00 | 2030-06-30 17:00 | 678 | 0.000000 | OFFSHORE | 24 | 20 |  |
| 680 | 10.49 | Remove TP cover and Preparation of TP | manual | 1eh | 2030-06-30 17:00 | 2030-06-30 18:00 | 679 | 0.000000 | OFFSHORE | 25 | 20 |  |
| 681 | 10.50 | Tower preparation, removal of seafastening bolts | manual | 2eh | 2030-06-30 18:00 | 2030-06-30 20:00 | 680 | 0.000000 | OFFSHORE | 26 | 20 |  |
| 682 | 10.51 | Tower rigging-up (attached lifting equipment) | manual | 1eh | 2030-06-30 20:00 | 2030-06-30 21:00 | 681 | 0.000000 | OFFSHORE | 27 | 20 | G1 |
| 683 | 10.52 | Tower Lifting (safe-to-safe) | manual | 3.5eh | 2030-06-30 21:00 | 2030-07-01 00:30 | 682 | 0.000000 | OFFSHORE | 28 | 20 | G1 |
| 684 | 10.53 | Tower derigging (remove lifting equipment) | manual | 0.5eh | 2030-07-01 00:30 | 2030-07-01 01:00 | 683 | 0.000000 | OFFSHORE | 29 | 20 | G1 |
| 685 | 10.54 | Nacelle preparation and rigging | manual | 0.5eh | 2030-07-01 01:00 | 2030-07-01 01:30 | 684 | 0.000000 | OFFSHORE | 30 | 20 | G2 |
| 686 | 10.55 | Nacelle Lifting (safe-to-safe) | manual | 2.25eh | 2030-07-01 01:30 | 2030-07-01 03:45 | 685 | 0.000000 | OFFSHORE | 31 | 20 | G2 |
| 687 | 10.56 | Nacelle derigging (remove lifting equipment) | manual | 0.5eh | 2030-07-01 03:45 | 2030-07-01 04:15 | 686 | 0.000000 | OFFSHORE | 32 | 20 | G2 |
| 688 | 10.57 | Blade yoke rigging and attachement to Blade #1 | manual | 0.5eh | 2030-07-01 04:15 | 2030-07-01 04:45 | 687 | 0.000000 | OFFSHORE | 33 | 20 | G3 |
| 689 | 10.58 | Blade #1 Lifting (safe-to-safe) | manual | 1.75eh | 2030-07-01 04:45 | 2030-07-01 06:30 | 688 | 0.000000 | OFFSHORE | 34 | 20 | G3 |
| 690 | 10.59 | Blade #1 completion work, re-locate blade yoke to next blade | manual | 1.5eh | 2030-07-01 06:30 | 2030-07-01 08:00 | 689 | 0.000000 | OFFSHORE | 35 | 20 | G3 |
| 691 | 10.60 | Blade #2 Lifting (safe-to-safe) | manual | 1.75eh | 2030-07-01 08:00 | 2030-07-01 09:45 | 690 | 0.000000 | OFFSHORE | 36 | 20 | G4 |
| 692 | 10.61 | Balde #2 completion work, re-locate blade yoke to next blade | manual | 1.5eh | 2030-07-01 09:45 | 2030-07-01 11:15 | 691 | 0.000000 | OFFSHORE | 37 | 20 | G4 |
| 693 | 10.62 | Blade #3 Lifting (safe-to-safe) | manual | 1.75eh | 2030-07-01 11:15 | 2030-07-01 13:00 | 692 | 0.000000 | OFFSHORE | 38 | 20 | G5 |
| 694 | 10.63 | Blade #3 completion work, blade yoke de-rigging | manual | 1.5eh | 2030-07-01 13:00 | 2030-07-01 14:30 | 693 | 0.000000 | OFFSHORE | 39 | 20 | G5 |
| 695 | 10.64 | Handling HSBM and lifting tools | manual | 1eh | 2030-07-01 14:30 | 2030-07-01 15:30 | 694 | 0.000000 | OFFSHORE | 40 | 20 |  |
| 696 | 10.65 | Lifting HSBM and lifting tools from Nacelle | manual | 1eh | 2030-07-01 15:30 | 2030-07-01 16:30 | 695 | 0.000000 | OFFSHORE | 41 | 20 |  |
| 697 | 10.66 | Turbine general completion works | manual | 3eh | 2030-07-01 16:30 | 2030-07-01 19:30 | 696 | 0.000000 | OFFSHORE | 42 | 20 |  |
| 698 | 10.67 | Secure of crane, gangway etc. Preparation for jacking down and sailing | manual | 3eh | 2030-07-01 19:30 | 2030-07-01 22:30 | 697 | 0.000000 | OFFSHORE | 43 | 20 |  |
| 699 | 10.68 | Jacking down at site | manual | 2eh | 2030-07-01 22:30 | 2030-07-02 00:30 | 698 | 0.000000 | OFFSHORE | 44 | 20 |  |
| 700 | 10.69 | Transit from site to port | manual | 5.2eh | 2030-07-02 00:30 | 2030-07-02 05:45 | 699 | 0.000000 | OFFSHORE | 45 |  |  |

Notes:
- 631: P50 representative hindcast year 1984; cycle 10; baseline duration 5.163 days; downtime 1.312 days; elapsed duration 6.479 days.
- 632: Scenario: P50; P50 representative hindcast year 1984; cycle: 10; activity ID: 1; location: OFFSHORE; position: n/a; safe-to-safe group: none; baseline duration: 1.000 h; weather/operational downtime: 0.000 h; elapsed duration: 1.000 h.
- 633: Scenario: P50; P50 representative hindcast year 1984; cycle: 10; activity ID: 2; location: OFFSHORE; position: n/a; safe-to-safe group: none; baseline duration: 2.000 h; weather/operational downtime: 0.000 h; elapsed duration: 2.000 h.
- 634: Scenario: P50; P50 representative hindcast year 1984; cycle: 10; activity ID: 3; location: OFFSHORE; position: n/a; safe-to-safe group: none; baseline duration: 3.000 h; weather/operational downtime: 0.000 h; elapsed duration: 3.000 h.
- 635: Scenario: P50; P50 representative hindcast year 1984; cycle: 10; activity ID: 4; location: OFFSHORE; position: n/a; safe-to-safe group: none; baseline duration: 1.000 h; weather/operational downtime: 0.000 h; elapsed duration: 1.000 h.
- 636: Scenario: P50; P50 representative hindcast year 1984; cycle: 10; activity ID: 5; location: OFFSHORE; position: n/a; safe-to-safe group: none; baseline duration: 2.250 h; weather/operational downtime: 0.000 h; elapsed duration: 2.250 h.
- 637: Scenario: P50; P50 representative hindcast year 1984; cycle: 10; activity ID: 6; location: OFFSHORE; position: n/a; safe-to-safe group: none; baseline duration: 2.250 h; weather/operational downtime: 0.000 h; elapsed duration: 2.250 h.
- 638: Scenario: P50; P50 representative hindcast year 1984; cycle: 10; activity ID: 7; location: OFFSHORE; position: n/a; safe-to-safe group: none; baseline duration: 1.500 h; weather/operational downtime: 0.000 h; elapsed duration: 1.500 h.
- 639: Scenario: P50; P50 representative hindcast year 1984; cycle: 10; activity ID: 8; location: OFFSHORE; position: n/a; safe-to-safe group: none; baseline duration: 1.500 h; weather/operational downtime: 0.000 h; elapsed duration: 1.500 h.
- 640: Scenario: P50; P50 representative hindcast year 1984; cycle: 10; activity ID: 9; location: OFFSHORE; position: n/a; safe-to-safe group: none; baseline duration: 1.500 h; weather/operational downtime: 0.000 h; elapsed duration: 1.500 h.
- 641: Scenario: P50; P50 representative hindcast year 1984; cycle: 10; activity ID: 10; location: OFFSHORE; position: n/a; safe-to-safe group: none; baseline duration: 1.000 h; weather/operational downtime: 0.000 h; elapsed duration: 1.000 h.
- 642: Scenario: P50; P50 representative hindcast year 1984; cycle: 10; activity ID: 11; location: OFFSHORE; position: n/a; safe-to-safe group: none; baseline duration: 2.250 h; weather/operational downtime: 0.000 h; elapsed duration: 2.250 h.
- 643: Scenario: P50; P50 representative hindcast year 1984; cycle: 10; activity ID: 12; location: OFFSHORE; position: n/a; safe-to-safe group: none; baseline duration: 2.250 h; weather/operational downtime: 0.000 h; elapsed duration: 2.250 h.
- 644: Scenario: P50; P50 representative hindcast year 1984; cycle: 10; activity ID: 13; location: OFFSHORE; position: n/a; safe-to-safe group: none; baseline duration: 1.500 h; weather/operational downtime: 0.000 h; elapsed duration: 1.500 h.
- 645: Scenario: P50; P50 representative hindcast year 1984; cycle: 10; activity ID: 14; location: OFFSHORE; position: n/a; safe-to-safe group: none; baseline duration: 1.500 h; weather/operational downtime: 0.000 h; elapsed duration: 1.500 h.
- 646: Scenario: P50; P50 representative hindcast year 1984; cycle: 10; activity ID: 15; location: OFFSHORE; position: n/a; safe-to-safe group: none; baseline duration: 1.500 h; weather/operational downtime: 0.000 h; elapsed duration: 1.500 h.
- 647: Scenario: P50; P50 representative hindcast year 1984; cycle: 10; activity ID: 16; location: OFFSHORE; position: n/a; safe-to-safe group: none; baseline duration: 3.000 h; weather/operational downtime: 0.000 h; elapsed duration: 3.000 h.
- 648: Scenario: P50; P50 representative hindcast year 1984; cycle: 10; activity ID: 17; location: OFFSHORE; position: n/a; safe-to-safe group: none; baseline duration: 2.000 h; weather/operational downtime: 0.000 h; elapsed duration: 2.000 h.
- 649: Scenario: P50; P50 representative hindcast year 1984; cycle: 10; activity ID: 18; location: OFFSHORE; position: n/a; safe-to-safe group: none; baseline duration: 1.000 h; weather/operational downtime: 0.000 h; elapsed duration: 1.000 h.
- 650: Scenario: P50; P50 representative hindcast year 1984; cycle: 10; activity ID: 19; location: OFFSHORE; position: n/a; safe-to-safe group: none; baseline duration: 5.200 h; weather/operational downtime: 0.000 h; elapsed duration: 5.250 h.
- 651: Scenario: P50; P50 representative hindcast year 1984; cycle: 10; activity ID: 20; location: OFFSHORE; position: n/a; safe-to-safe group: none; baseline duration: 0.500 h; weather/operational downtime: 29.500 h; elapsed duration: 30.000 h.
- 652: Scenario: P50; P50 representative hindcast year 1984; cycle: 10; activity ID: 21; location: OFFSHORE; position: 19; safe-to-safe group: none; baseline duration: 1.000 h; weather/operational downtime: 0.000 h; elapsed duration: 1.000 h.
- 653: Scenario: P50; P50 representative hindcast year 1984; cycle: 10; activity ID: 22; location: OFFSHORE; position: 19; safe-to-safe group: none; baseline duration: 1.000 h; weather/operational downtime: 0.000 h; elapsed duration: 1.000 h.
- 654: Scenario: P50; P50 representative hindcast year 1984; cycle: 10; activity ID: 23; location: OFFSHORE; position: 19; safe-to-safe group: none; baseline duration: 4.000 h; weather/operational downtime: 0.000 h; elapsed duration: 4.000 h.
- 655: Scenario: P50; P50 representative hindcast year 1984; cycle: 10; activity ID: 24; location: OFFSHORE; position: 19; safe-to-safe group: none; baseline duration: 3.000 h; weather/operational downtime: 0.000 h; elapsed duration: 3.000 h.
- 656: Scenario: P50; P50 representative hindcast year 1984; cycle: 10; activity ID: 25; location: OFFSHORE; position: 19; safe-to-safe group: none; baseline duration: 1.000 h; weather/operational downtime: 0.000 h; elapsed duration: 1.000 h.
- 657: Scenario: P50; P50 representative hindcast year 1984; cycle: 10; activity ID: 26; location: OFFSHORE; position: 19; safe-to-safe group: none; baseline duration: 2.000 h; weather/operational downtime: 0.000 h; elapsed duration: 2.000 h.
- 658: Scenario: P50; P50 representative hindcast year 1984; cycle: 10; activity ID: 27; location: OFFSHORE; position: 19; safe-to-safe group: G1; baseline duration: 1.000 h; weather/operational downtime: 0.000 h; elapsed duration: 1.000 h.
- 659: Scenario: P50; P50 representative hindcast year 1984; cycle: 10; activity ID: 28; location: OFFSHORE; position: 19; safe-to-safe group: G1; baseline duration: 3.500 h; weather/operational downtime: 0.000 h; elapsed duration: 3.500 h.
- 660: Scenario: P50; P50 representative hindcast year 1984; cycle: 10; activity ID: 29; location: OFFSHORE; position: 19; safe-to-safe group: G1; baseline duration: 0.500 h; weather/operational downtime: 0.000 h; elapsed duration: 0.500 h.
- 661: Scenario: P50; P50 representative hindcast year 1984; cycle: 10; activity ID: 30; location: OFFSHORE; position: 19; safe-to-safe group: G2; baseline duration: 0.500 h; weather/operational downtime: 0.000 h; elapsed duration: 0.500 h.
- 662: Scenario: P50; P50 representative hindcast year 1984; cycle: 10; activity ID: 31; location: OFFSHORE; position: 19; safe-to-safe group: G2; baseline duration: 2.250 h; weather/operational downtime: 0.000 h; elapsed duration: 2.250 h.
- 663: Scenario: P50; P50 representative hindcast year 1984; cycle: 10; activity ID: 32; location: OFFSHORE; position: 19; safe-to-safe group: G2; baseline duration: 0.500 h; weather/operational downtime: 0.000 h; elapsed duration: 0.500 h.
- 664: Scenario: P50; P50 representative hindcast year 1984; cycle: 10; activity ID: 33; location: OFFSHORE; position: 19; safe-to-safe group: G3; baseline duration: 0.500 h; weather/operational downtime: 0.000 h; elapsed duration: 0.500 h.
- 665: Scenario: P50; P50 representative hindcast year 1984; cycle: 10; activity ID: 34; location: OFFSHORE; position: 19; safe-to-safe group: G3; baseline duration: 1.750 h; weather/operational downtime: 0.000 h; elapsed duration: 1.750 h.
- 666: Scenario: P50; P50 representative hindcast year 1984; cycle: 10; activity ID: 35; location: OFFSHORE; position: 19; safe-to-safe group: G3; baseline duration: 1.500 h; weather/operational downtime: 0.000 h; elapsed duration: 1.500 h.
- 667: Scenario: P50; P50 representative hindcast year 1984; cycle: 10; activity ID: 36; location: OFFSHORE; position: 19; safe-to-safe group: G4; baseline duration: 1.750 h; weather/operational downtime: 0.000 h; elapsed duration: 1.750 h.
- 668: Scenario: P50; P50 representative hindcast year 1984; cycle: 10; activity ID: 37; location: OFFSHORE; position: 19; safe-to-safe group: G4; baseline duration: 1.500 h; weather/operational downtime: 0.000 h; elapsed duration: 1.500 h.
- 669: Scenario: P50; P50 representative hindcast year 1984; cycle: 10; activity ID: 38; location: OFFSHORE; position: 19; safe-to-safe group: G5; baseline duration: 1.750 h; weather/operational downtime: 0.000 h; elapsed duration: 1.750 h.
- 670: Scenario: P50; P50 representative hindcast year 1984; cycle: 10; activity ID: 39; location: OFFSHORE; position: 19; safe-to-safe group: G5; baseline duration: 1.500 h; weather/operational downtime: 0.000 h; elapsed duration: 1.500 h.
- 671: Scenario: P50; P50 representative hindcast year 1984; cycle: 10; activity ID: 40; location: OFFSHORE; position: 19; safe-to-safe group: none; baseline duration: 1.000 h; weather/operational downtime: 0.000 h; elapsed duration: 1.000 h.
- 672: Scenario: P50; P50 representative hindcast year 1984; cycle: 10; activity ID: 41; location: OFFSHORE; position: 19; safe-to-safe group: none; baseline duration: 1.000 h; weather/operational downtime: 0.000 h; elapsed duration: 1.000 h.
- 673: Scenario: P50; P50 representative hindcast year 1984; cycle: 10; activity ID: 42; location: OFFSHORE; position: 19; safe-to-safe group: none; baseline duration: 3.000 h; weather/operational downtime: 0.000 h; elapsed duration: 3.000 h.
- 674: Scenario: P50; P50 representative hindcast year 1984; cycle: 10; activity ID: 43; location: OFFSHORE; position: 19; safe-to-safe group: none; baseline duration: 3.000 h; weather/operational downtime: 0.000 h; elapsed duration: 3.000 h.
- 675: Scenario: P50; P50 representative hindcast year 1984; cycle: 10; activity ID: 44; location: OFFSHORE; position: 19; safe-to-safe group: none; baseline duration: 2.000 h; weather/operational downtime: 0.000 h; elapsed duration: 2.000 h.
- 676: Scenario: P50; P50 representative hindcast year 1984; cycle: 10; activity ID: 21; location: OFFSHORE; position: 20; safe-to-safe group: none; baseline duration: 1.000 h; weather/operational downtime: 0.000 h; elapsed duration: 1.000 h.
- 677: Scenario: P50; P50 representative hindcast year 1984; cycle: 10; activity ID: 22; location: OFFSHORE; position: 20; safe-to-safe group: none; baseline duration: 1.000 h; weather/operational downtime: 0.000 h; elapsed duration: 1.000 h.
- 678: Scenario: P50; P50 representative hindcast year 1984; cycle: 10; activity ID: 23; location: OFFSHORE; position: 20; safe-to-safe group: none; baseline duration: 4.000 h; weather/operational downtime: 2.000 h; elapsed duration: 6.000 h.
- 679: Scenario: P50; P50 representative hindcast year 1984; cycle: 10; activity ID: 24; location: OFFSHORE; position: 20; safe-to-safe group: none; baseline duration: 3.000 h; weather/operational downtime: 0.000 h; elapsed duration: 3.000 h.
- 680: Scenario: P50; P50 representative hindcast year 1984; cycle: 10; activity ID: 25; location: OFFSHORE; position: 20; safe-to-safe group: none; baseline duration: 1.000 h; weather/operational downtime: 0.000 h; elapsed duration: 1.000 h.
- 681: Scenario: P50; P50 representative hindcast year 1984; cycle: 10; activity ID: 26; location: OFFSHORE; position: 20; safe-to-safe group: none; baseline duration: 2.000 h; weather/operational downtime: 0.000 h; elapsed duration: 2.000 h.
- 682: Scenario: P50; P50 representative hindcast year 1984; cycle: 10; activity ID: 27; location: OFFSHORE; position: 20; safe-to-safe group: G1; baseline duration: 1.000 h; weather/operational downtime: 0.000 h; elapsed duration: 1.000 h.
- 683: Scenario: P50; P50 representative hindcast year 1984; cycle: 10; activity ID: 28; location: OFFSHORE; position: 20; safe-to-safe group: G1; baseline duration: 3.500 h; weather/operational downtime: 0.000 h; elapsed duration: 3.500 h.
- 684: Scenario: P50; P50 representative hindcast year 1984; cycle: 10; activity ID: 29; location: OFFSHORE; position: 20; safe-to-safe group: G1; baseline duration: 0.500 h; weather/operational downtime: 0.000 h; elapsed duration: 0.500 h.
- 685: Scenario: P50; P50 representative hindcast year 1984; cycle: 10; activity ID: 30; location: OFFSHORE; position: 20; safe-to-safe group: G2; baseline duration: 0.500 h; weather/operational downtime: 0.000 h; elapsed duration: 0.500 h.
- 686: Scenario: P50; P50 representative hindcast year 1984; cycle: 10; activity ID: 31; location: OFFSHORE; position: 20; safe-to-safe group: G2; baseline duration: 2.250 h; weather/operational downtime: 0.000 h; elapsed duration: 2.250 h.
- 687: Scenario: P50; P50 representative hindcast year 1984; cycle: 10; activity ID: 32; location: OFFSHORE; position: 20; safe-to-safe group: G2; baseline duration: 0.500 h; weather/operational downtime: 0.000 h; elapsed duration: 0.500 h.
- 688: Scenario: P50; P50 representative hindcast year 1984; cycle: 10; activity ID: 33; location: OFFSHORE; position: 20; safe-to-safe group: G3; baseline duration: 0.500 h; weather/operational downtime: 0.000 h; elapsed duration: 0.500 h.
- 689: Scenario: P50; P50 representative hindcast year 1984; cycle: 10; activity ID: 34; location: OFFSHORE; position: 20; safe-to-safe group: G3; baseline duration: 1.750 h; weather/operational downtime: 0.000 h; elapsed duration: 1.750 h.
- 690: Scenario: P50; P50 representative hindcast year 1984; cycle: 10; activity ID: 35; location: OFFSHORE; position: 20; safe-to-safe group: G3; baseline duration: 1.500 h; weather/operational downtime: 0.000 h; elapsed duration: 1.500 h.
- 691: Scenario: P50; P50 representative hindcast year 1984; cycle: 10; activity ID: 36; location: OFFSHORE; position: 20; safe-to-safe group: G4; baseline duration: 1.750 h; weather/operational downtime: 0.000 h; elapsed duration: 1.750 h.
- 692: Scenario: P50; P50 representative hindcast year 1984; cycle: 10; activity ID: 37; location: OFFSHORE; position: 20; safe-to-safe group: G4; baseline duration: 1.500 h; weather/operational downtime: 0.000 h; elapsed duration: 1.500 h.
- 693: Scenario: P50; P50 representative hindcast year 1984; cycle: 10; activity ID: 38; location: OFFSHORE; position: 20; safe-to-safe group: G5; baseline duration: 1.750 h; weather/operational downtime: 0.000 h; elapsed duration: 1.750 h.
- 694: Scenario: P50; P50 representative hindcast year 1984; cycle: 10; activity ID: 39; location: OFFSHORE; position: 20; safe-to-safe group: G5; baseline duration: 1.500 h; weather/operational downtime: 0.000 h; elapsed duration: 1.500 h.
- 695: Scenario: P50; P50 representative hindcast year 1984; cycle: 10; activity ID: 40; location: OFFSHORE; position: 20; safe-to-safe group: none; baseline duration: 1.000 h; weather/operational downtime: 0.000 h; elapsed duration: 1.000 h.
- 696: Scenario: P50; P50 representative hindcast year 1984; cycle: 10; activity ID: 41; location: OFFSHORE; position: 20; safe-to-safe group: none; baseline duration: 1.000 h; weather/operational downtime: 0.000 h; elapsed duration: 1.000 h.
- 697: Scenario: P50; P50 representative hindcast year 1984; cycle: 10; activity ID: 42; location: OFFSHORE; position: 20; safe-to-safe group: none; baseline duration: 3.000 h; weather/operational downtime: 0.000 h; elapsed duration: 3.000 h.
- 698: Scenario: P50; P50 representative hindcast year 1984; cycle: 10; activity ID: 43; location: OFFSHORE; position: 20; safe-to-safe group: none; baseline duration: 3.000 h; weather/operational downtime: 0.000 h; elapsed duration: 3.000 h.
- 699: Scenario: P50; P50 representative hindcast year 1984; cycle: 10; activity ID: 44; location: OFFSHORE; position: 20; safe-to-safe group: none; baseline duration: 2.000 h; weather/operational downtime: 0.000 h; elapsed duration: 2.000 h.
- 700: Scenario: P50; P50 representative hindcast year 1984; cycle: 10; activity ID: 45; location: OFFSHORE; position: n/a; safe-to-safe group: none; baseline duration: 5.200 h; weather/operational downtime: 0.000 h; elapsed duration: 5.250 h.

| ID | WBS | Task | Type | Duration | Start | Finish | Predecessors | Duration WDT [days] | Location | Activity ID | Position | Safe-to-safe group |
| --- | --- | --- | --- | --- | --- | --- | --- | --- | --- | --- | --- | --- |
| 701 | 11 | **Cycle 11 — Positions 21–22** |  | 123.9eh | 2030-07-02 05:45 | 2030-07-07 09:45 |  | 0.000000 |  |  |  |  |
| 702 | 11.1 | Port maneuvering | manual | 1eh | 2030-07-02 05:45 | 2030-07-02 06:45 | 700 | 0.000000 | OFFSHORE | 1 |  |  |
| 703 | 11.2 | Preload and jacking up at port | manual | 2eh | 2030-07-02 06:45 | 2030-07-02 08:45 | 702 | 0.000000 | OFFSHORE | 2 |  |  |
| 704 | 11.3 | Release crane, gangway etc and prep for lifting | manual | 3eh | 2030-07-02 08:45 | 2030-07-02 11:45 | 703 | 0.000000 | OFFSHORE | 3 |  |  |
| 705 | 11.4 | Load in/out WTG supplier equipment | manual | 1eh | 2030-07-02 11:45 | 2030-07-02 12:45 | 704 | 0.000000 | OFFSHORE | 4 |  |  |
| 706 | 11.5 | Loadout Nacelle #1 | manual | 2.25eh | 2030-07-02 12:45 | 2030-07-02 15:00 | 705 | 0.000000 | OFFSHORE | 5 |  |  |
| 707 | 11.6 | Loadout Tower #1 | manual | 2.25eh | 2030-07-02 15:00 | 2030-07-02 17:15 | 706 | 0.000000 | OFFSHORE | 6 |  |  |
| 708 | 11.7 | Loadout Blade 1 | manual | 1.5eh | 2030-07-02 17:15 | 2030-07-02 18:45 | 707 | 0.000000 | OFFSHORE | 7 |  |  |
| 709 | 11.8 | Loadout Blade 2 | manual | 1.5eh | 2030-07-02 18:45 | 2030-07-02 20:15 | 708 | 0.000000 | OFFSHORE | 8 |  |  |
| 710 | 11.9 | Loadout Blade 3 | manual | 1.5eh | 2030-07-02 20:15 | 2030-07-02 21:45 | 709 | 0.000000 | OFFSHORE | 9 |  |  |
| 711 | 11.10 | Load in/out WTG supplier equipment | manual | 1eh | 2030-07-02 21:45 | 2030-07-02 22:45 | 710 | 0.000000 | OFFSHORE | 10 |  |  |
| 712 | 11.11 | Loadout Nacelle #2 | manual | 2.25eh | 2030-07-02 22:45 | 2030-07-03 01:00 | 711 | 0.000000 | OFFSHORE | 11 |  |  |
| 713 | 11.12 | Loadout Tower #2 | manual | 2.25eh | 2030-07-03 01:00 | 2030-07-03 03:15 | 712 | 0.000000 | OFFSHORE | 12 |  |  |
| 714 | 11.13 | Loadout Blade 1 | manual | 1.5eh | 2030-07-03 03:15 | 2030-07-03 04:45 | 713 | 0.000000 | OFFSHORE | 13 |  |  |
| 715 | 11.14 | Loadout Blade 2 | manual | 1.5eh | 2030-07-03 04:45 | 2030-07-03 06:15 | 714 | 0.000000 | OFFSHORE | 14 |  |  |
| 716 | 11.15 | Loadout Blade 3 | manual | 1.5eh | 2030-07-03 06:15 | 2030-07-03 07:45 | 715 | 0.000000 | OFFSHORE | 15 |  |  |
| 717 | 11.16 | Secure of crane, gangway (at port)) | manual | 3eh | 2030-07-03 07:45 | 2030-07-03 10:45 | 716 | 0.000000 | OFFSHORE | 16 |  |  |
| 718 | 11.17 | Jacking down at port | manual | 2eh | 2030-07-03 10:45 | 2030-07-03 12:45 | 717 | 0.000000 | OFFSHORE | 17 |  |  |
| 719 | 11.18 | Port maneuvering | manual | 1eh | 2030-07-03 12:45 | 2030-07-03 13:45 | 718 | 0.000000 | OFFSHORE | 18 |  |  |
| 720 | 11.19 | Transit from port to site | manual | 5.2eh | 2030-07-03 13:45 | 2030-07-03 19:00 | 719 | 0.000000 | OFFSHORE | 19 |  |  |
| 721 | 11.20 | DP field check | manual | 0.5eh | 2030-07-03 19:00 | 2030-07-03 19:30 | 720 | 0.000000 | OFFSHORE | 20 |  |  |
| 722 | 11.21 | Transit to next foundation | manual | 1eh | 2030-07-03 19:30 | 2030-07-03 20:30 | 721 | 0.000000 | OFFSHORE | 21 | 21 |  |
| 723 | 11.22 | Positioning at WTG location | manual | 1eh | 2030-07-03 20:30 | 2030-07-03 21:30 | 722 | 0.000000 | OFFSHORE | 22 | 21 |  |
| 724 | 11.23 | Preload and jacking up at site | manual | 4eh | 2030-07-03 21:30 | 2030-07-04 01:30 | 723 | 0.000000 | OFFSHORE | 23 | 21 |  |
| 725 | 11.24 | Release crane, gangway and prep for lifting | manual | 3eh | 2030-07-04 01:30 | 2030-07-04 04:30 | 724 | 0.000000 | OFFSHORE | 24 | 21 |  |
| 726 | 11.25 | Remove TP cover and Preparation of TP | manual | 1eh | 2030-07-04 04:30 | 2030-07-04 05:30 | 725 | 0.000000 | OFFSHORE | 25 | 21 |  |
| 727 | 11.26 | Tower preparation, removal of seafastening bolts | manual | 2eh | 2030-07-04 05:30 | 2030-07-04 07:30 | 726 | 0.000000 | OFFSHORE | 26 | 21 |  |
| 728 | 11.27 | Tower rigging-up (attached lifting equipment) | manual | 1eh | 2030-07-04 07:30 | 2030-07-04 08:30 | 727 | 0.000000 | OFFSHORE | 27 | 21 | G1 |
| 729 | 11.28 | Tower Lifting (safe-to-safe) | manual | 3.5eh | 2030-07-04 08:30 | 2030-07-04 12:00 | 728 | 0.000000 | OFFSHORE | 28 | 21 | G1 |
| 730 | 11.29 | Tower derigging (remove lifting equipment) | manual | 0.5eh | 2030-07-04 12:00 | 2030-07-04 12:30 | 729 | 0.000000 | OFFSHORE | 29 | 21 | G1 |
| 731 | 11.30 | Nacelle preparation and rigging | manual | 0.5eh | 2030-07-04 12:30 | 2030-07-04 13:00 | 730 | 0.000000 | OFFSHORE | 30 | 21 | G2 |
| 732 | 11.31 | Nacelle Lifting (safe-to-safe) | manual | 2.25eh | 2030-07-04 13:00 | 2030-07-04 15:15 | 731 | 0.000000 | OFFSHORE | 31 | 21 | G2 |
| 733 | 11.32 | Nacelle derigging (remove lifting equipment) | manual | 0.5eh | 2030-07-04 15:15 | 2030-07-04 15:45 | 732 | 0.000000 | OFFSHORE | 32 | 21 | G2 |
| 734 | 11.33 | Blade yoke rigging and attachement to Blade #1 | manual | 0.5eh | 2030-07-04 15:45 | 2030-07-04 16:15 | 733 | 0.000000 | OFFSHORE | 33 | 21 | G3 |
| 735 | 11.34 | Blade #1 Lifting (safe-to-safe) | manual | 1.75eh | 2030-07-04 16:15 | 2030-07-04 18:00 | 734 | 0.000000 | OFFSHORE | 34 | 21 | G3 |
| 736 | 11.35 | Blade #1 completion work, re-locate blade yoke to next blade | manual | 1.5eh | 2030-07-04 18:00 | 2030-07-04 19:30 | 735 | 0.000000 | OFFSHORE | 35 | 21 | G3 |
| 737 | 11.36 | Blade #2 Lifting (safe-to-safe) | manual | 1.75eh | 2030-07-04 19:30 | 2030-07-04 21:15 | 736 | 0.000000 | OFFSHORE | 36 | 21 | G4 |
| 738 | 11.37 | Balde #2 completion work, re-locate blade yoke to next blade | manual | 1.5eh | 2030-07-04 21:15 | 2030-07-04 22:45 | 737 | 0.000000 | OFFSHORE | 37 | 21 | G4 |
| 739 | 11.38 | Blade #3 Lifting (safe-to-safe) | manual | 1.75eh | 2030-07-04 22:45 | 2030-07-05 00:30 | 738 | 0.000000 | OFFSHORE | 38 | 21 | G5 |
| 740 | 11.39 | Blade #3 completion work, blade yoke de-rigging | manual | 1.5eh | 2030-07-05 00:30 | 2030-07-05 02:00 | 739 | 0.000000 | OFFSHORE | 39 | 21 | G5 |
| 741 | 11.40 | Handling HSBM and lifting tools | manual | 1eh | 2030-07-05 02:00 | 2030-07-05 03:00 | 740 | 0.000000 | OFFSHORE | 40 | 21 |  |
| 742 | 11.41 | Lifting HSBM and lifting tools from Nacelle | manual | 1eh | 2030-07-05 03:00 | 2030-07-05 04:00 | 741 | 0.000000 | OFFSHORE | 41 | 21 |  |
| 743 | 11.42 | Turbine general completion works | manual | 3eh | 2030-07-05 04:00 | 2030-07-05 07:00 | 742 | 0.000000 | OFFSHORE | 42 | 21 |  |
| 744 | 11.43 | Secure of crane, gangway etc. Preparation for jacking down and sailing | manual | 3eh | 2030-07-05 07:00 | 2030-07-05 10:00 | 743 | 0.000000 | OFFSHORE | 43 | 21 |  |
| 745 | 11.44 | Jacking down at site | manual | 2eh | 2030-07-05 10:00 | 2030-07-05 12:00 | 744 | 0.000000 | OFFSHORE | 44 | 21 |  |
| 746 | 11.45 | Transit to next foundation | manual | 1eh | 2030-07-05 12:00 | 2030-07-05 13:00 | 745 | 0.000000 | OFFSHORE | 21 | 22 |  |
| 747 | 11.46 | Positioning at WTG location | manual | 1eh | 2030-07-05 13:00 | 2030-07-05 14:00 | 746 | 0.000000 | OFFSHORE | 22 | 22 |  |
| 748 | 11.47 | Preload and jacking up at site | manual | 4eh | 2030-07-05 14:00 | 2030-07-05 18:00 | 747 | 0.000000 | OFFSHORE | 23 | 22 |  |
| 749 | 11.48 | Release crane, gangway and prep for lifting | manual | 3eh | 2030-07-05 18:00 | 2030-07-05 21:00 | 748 | 0.000000 | OFFSHORE | 24 | 22 |  |
| 750 | 11.49 | Remove TP cover and Preparation of TP | manual | 1eh | 2030-07-05 21:00 | 2030-07-05 22:00 | 749 | 0.000000 | OFFSHORE | 25 | 22 |  |
| 751 | 11.50 | Tower preparation, removal of seafastening bolts | manual | 2eh | 2030-07-05 22:00 | 2030-07-06 00:00 | 750 | 0.000000 | OFFSHORE | 26 | 22 |  |
| 752 | 11.51 | Tower rigging-up (attached lifting equipment) | manual | 1eh | 2030-07-06 00:00 | 2030-07-06 01:00 | 751 | 0.000000 | OFFSHORE | 27 | 22 | G1 |
| 753 | 11.52 | Tower Lifting (safe-to-safe) | manual | 3.5eh | 2030-07-06 01:00 | 2030-07-06 04:30 | 752 | 0.000000 | OFFSHORE | 28 | 22 | G1 |
| 754 | 11.53 | Tower derigging (remove lifting equipment) | manual | 0.5eh | 2030-07-06 04:30 | 2030-07-06 05:00 | 753 | 0.000000 | OFFSHORE | 29 | 22 | G1 |
| 755 | 11.54 | Nacelle preparation and rigging | manual | 0.5eh | 2030-07-06 05:00 | 2030-07-06 05:30 | 754 | 0.000000 | OFFSHORE | 30 | 22 | G2 |
| 756 | 11.55 | Nacelle Lifting (safe-to-safe) | manual | 2.25eh | 2030-07-06 05:30 | 2030-07-06 07:45 | 755 | 0.000000 | OFFSHORE | 31 | 22 | G2 |
| 757 | 11.56 | Nacelle derigging (remove lifting equipment) | manual | 0.5eh | 2030-07-06 07:45 | 2030-07-06 08:15 | 756 | 0.000000 | OFFSHORE | 32 | 22 | G2 |
| 758 | 11.57 | Blade yoke rigging and attachement to Blade #1 | manual | 0.5eh | 2030-07-06 08:15 | 2030-07-06 08:45 | 757 | 0.000000 | OFFSHORE | 33 | 22 | G3 |
| 759 | 11.58 | Blade #1 Lifting (safe-to-safe) | manual | 1.75eh | 2030-07-06 08:45 | 2030-07-06 10:30 | 758 | 0.000000 | OFFSHORE | 34 | 22 | G3 |
| 760 | 11.59 | Blade #1 completion work, re-locate blade yoke to next blade | manual | 1.5eh | 2030-07-06 10:30 | 2030-07-06 12:00 | 759 | 0.000000 | OFFSHORE | 35 | 22 | G3 |
| 761 | 11.60 | Blade #2 Lifting (safe-to-safe) | manual | 1.75eh | 2030-07-06 12:00 | 2030-07-06 13:45 | 760 | 0.000000 | OFFSHORE | 36 | 22 | G4 |
| 762 | 11.61 | Balde #2 completion work, re-locate blade yoke to next blade | manual | 1.5eh | 2030-07-06 13:45 | 2030-07-06 15:15 | 761 | 0.000000 | OFFSHORE | 37 | 22 | G4 |
| 763 | 11.62 | Blade #3 Lifting (safe-to-safe) | manual | 1.75eh | 2030-07-06 15:15 | 2030-07-06 17:00 | 762 | 0.000000 | OFFSHORE | 38 | 22 | G5 |
| 764 | 11.63 | Blade #3 completion work, blade yoke de-rigging | manual | 1.5eh | 2030-07-06 17:00 | 2030-07-06 18:30 | 763 | 0.000000 | OFFSHORE | 39 | 22 | G5 |
| 765 | 11.64 | Handling HSBM and lifting tools | manual | 1eh | 2030-07-06 18:30 | 2030-07-06 19:30 | 764 | 0.000000 | OFFSHORE | 40 | 22 |  |
| 766 | 11.65 | Lifting HSBM and lifting tools from Nacelle | manual | 1eh | 2030-07-06 19:30 | 2030-07-06 20:30 | 765 | 0.000000 | OFFSHORE | 41 | 22 |  |
| 767 | 11.66 | Turbine general completion works | manual | 3eh | 2030-07-06 20:30 | 2030-07-06 23:30 | 766 | 0.000000 | OFFSHORE | 42 | 22 |  |
| 768 | 11.67 | Secure of crane, gangway etc. Preparation for jacking down and sailing | manual | 3eh | 2030-07-06 23:30 | 2030-07-07 02:30 | 767 | 0.000000 | OFFSHORE | 43 | 22 |  |
| 769 | 11.68 | Jacking down at site | manual | 2eh | 2030-07-07 02:30 | 2030-07-07 04:30 | 768 | 0.000000 | OFFSHORE | 44 | 22 |  |
| 770 | 11.69 | Transit from site to port | manual | 5.2eh | 2030-07-07 04:30 | 2030-07-07 09:45 | 769 | 0.000000 | OFFSHORE | 45 |  |  |

Notes:
- 701: P50 representative hindcast year 1984; cycle 11; baseline duration 5.163 days; downtime 0.000 days; elapsed duration 5.167 days.
- 702: Scenario: P50; P50 representative hindcast year 1984; cycle: 11; activity ID: 1; location: OFFSHORE; position: n/a; safe-to-safe group: none; baseline duration: 1.000 h; weather/operational downtime: 0.000 h; elapsed duration: 1.000 h.
- 703: Scenario: P50; P50 representative hindcast year 1984; cycle: 11; activity ID: 2; location: OFFSHORE; position: n/a; safe-to-safe group: none; baseline duration: 2.000 h; weather/operational downtime: 0.000 h; elapsed duration: 2.000 h.
- 704: Scenario: P50; P50 representative hindcast year 1984; cycle: 11; activity ID: 3; location: OFFSHORE; position: n/a; safe-to-safe group: none; baseline duration: 3.000 h; weather/operational downtime: 0.000 h; elapsed duration: 3.000 h.
- 705: Scenario: P50; P50 representative hindcast year 1984; cycle: 11; activity ID: 4; location: OFFSHORE; position: n/a; safe-to-safe group: none; baseline duration: 1.000 h; weather/operational downtime: 0.000 h; elapsed duration: 1.000 h.
- 706: Scenario: P50; P50 representative hindcast year 1984; cycle: 11; activity ID: 5; location: OFFSHORE; position: n/a; safe-to-safe group: none; baseline duration: 2.250 h; weather/operational downtime: 0.000 h; elapsed duration: 2.250 h.
- 707: Scenario: P50; P50 representative hindcast year 1984; cycle: 11; activity ID: 6; location: OFFSHORE; position: n/a; safe-to-safe group: none; baseline duration: 2.250 h; weather/operational downtime: 0.000 h; elapsed duration: 2.250 h.
- 708: Scenario: P50; P50 representative hindcast year 1984; cycle: 11; activity ID: 7; location: OFFSHORE; position: n/a; safe-to-safe group: none; baseline duration: 1.500 h; weather/operational downtime: 0.000 h; elapsed duration: 1.500 h.
- 709: Scenario: P50; P50 representative hindcast year 1984; cycle: 11; activity ID: 8; location: OFFSHORE; position: n/a; safe-to-safe group: none; baseline duration: 1.500 h; weather/operational downtime: 0.000 h; elapsed duration: 1.500 h.
- 710: Scenario: P50; P50 representative hindcast year 1984; cycle: 11; activity ID: 9; location: OFFSHORE; position: n/a; safe-to-safe group: none; baseline duration: 1.500 h; weather/operational downtime: 0.000 h; elapsed duration: 1.500 h.
- 711: Scenario: P50; P50 representative hindcast year 1984; cycle: 11; activity ID: 10; location: OFFSHORE; position: n/a; safe-to-safe group: none; baseline duration: 1.000 h; weather/operational downtime: 0.000 h; elapsed duration: 1.000 h.
- 712: Scenario: P50; P50 representative hindcast year 1984; cycle: 11; activity ID: 11; location: OFFSHORE; position: n/a; safe-to-safe group: none; baseline duration: 2.250 h; weather/operational downtime: 0.000 h; elapsed duration: 2.250 h.
- 713: Scenario: P50; P50 representative hindcast year 1984; cycle: 11; activity ID: 12; location: OFFSHORE; position: n/a; safe-to-safe group: none; baseline duration: 2.250 h; weather/operational downtime: 0.000 h; elapsed duration: 2.250 h.
- 714: Scenario: P50; P50 representative hindcast year 1984; cycle: 11; activity ID: 13; location: OFFSHORE; position: n/a; safe-to-safe group: none; baseline duration: 1.500 h; weather/operational downtime: 0.000 h; elapsed duration: 1.500 h.
- 715: Scenario: P50; P50 representative hindcast year 1984; cycle: 11; activity ID: 14; location: OFFSHORE; position: n/a; safe-to-safe group: none; baseline duration: 1.500 h; weather/operational downtime: 0.000 h; elapsed duration: 1.500 h.
- 716: Scenario: P50; P50 representative hindcast year 1984; cycle: 11; activity ID: 15; location: OFFSHORE; position: n/a; safe-to-safe group: none; baseline duration: 1.500 h; weather/operational downtime: 0.000 h; elapsed duration: 1.500 h.
- 717: Scenario: P50; P50 representative hindcast year 1984; cycle: 11; activity ID: 16; location: OFFSHORE; position: n/a; safe-to-safe group: none; baseline duration: 3.000 h; weather/operational downtime: 0.000 h; elapsed duration: 3.000 h.
- 718: Scenario: P50; P50 representative hindcast year 1984; cycle: 11; activity ID: 17; location: OFFSHORE; position: n/a; safe-to-safe group: none; baseline duration: 2.000 h; weather/operational downtime: 0.000 h; elapsed duration: 2.000 h.
- 719: Scenario: P50; P50 representative hindcast year 1984; cycle: 11; activity ID: 18; location: OFFSHORE; position: n/a; safe-to-safe group: none; baseline duration: 1.000 h; weather/operational downtime: 0.000 h; elapsed duration: 1.000 h.
- 720: Scenario: P50; P50 representative hindcast year 1984; cycle: 11; activity ID: 19; location: OFFSHORE; position: n/a; safe-to-safe group: none; baseline duration: 5.200 h; weather/operational downtime: 0.000 h; elapsed duration: 5.250 h.
- 721: Scenario: P50; P50 representative hindcast year 1984; cycle: 11; activity ID: 20; location: OFFSHORE; position: n/a; safe-to-safe group: none; baseline duration: 0.500 h; weather/operational downtime: 0.000 h; elapsed duration: 0.500 h.
- 722: Scenario: P50; P50 representative hindcast year 1984; cycle: 11; activity ID: 21; location: OFFSHORE; position: 21; safe-to-safe group: none; baseline duration: 1.000 h; weather/operational downtime: 0.000 h; elapsed duration: 1.000 h.
- 723: Scenario: P50; P50 representative hindcast year 1984; cycle: 11; activity ID: 22; location: OFFSHORE; position: 21; safe-to-safe group: none; baseline duration: 1.000 h; weather/operational downtime: 0.000 h; elapsed duration: 1.000 h.
- 724: Scenario: P50; P50 representative hindcast year 1984; cycle: 11; activity ID: 23; location: OFFSHORE; position: 21; safe-to-safe group: none; baseline duration: 4.000 h; weather/operational downtime: 0.000 h; elapsed duration: 4.000 h.
- 725: Scenario: P50; P50 representative hindcast year 1984; cycle: 11; activity ID: 24; location: OFFSHORE; position: 21; safe-to-safe group: none; baseline duration: 3.000 h; weather/operational downtime: 0.000 h; elapsed duration: 3.000 h.
- 726: Scenario: P50; P50 representative hindcast year 1984; cycle: 11; activity ID: 25; location: OFFSHORE; position: 21; safe-to-safe group: none; baseline duration: 1.000 h; weather/operational downtime: 0.000 h; elapsed duration: 1.000 h.
- 727: Scenario: P50; P50 representative hindcast year 1984; cycle: 11; activity ID: 26; location: OFFSHORE; position: 21; safe-to-safe group: none; baseline duration: 2.000 h; weather/operational downtime: 0.000 h; elapsed duration: 2.000 h.
- 728: Scenario: P50; P50 representative hindcast year 1984; cycle: 11; activity ID: 27; location: OFFSHORE; position: 21; safe-to-safe group: G1; baseline duration: 1.000 h; weather/operational downtime: 0.000 h; elapsed duration: 1.000 h.
- 729: Scenario: P50; P50 representative hindcast year 1984; cycle: 11; activity ID: 28; location: OFFSHORE; position: 21; safe-to-safe group: G1; baseline duration: 3.500 h; weather/operational downtime: 0.000 h; elapsed duration: 3.500 h.
- 730: Scenario: P50; P50 representative hindcast year 1984; cycle: 11; activity ID: 29; location: OFFSHORE; position: 21; safe-to-safe group: G1; baseline duration: 0.500 h; weather/operational downtime: 0.000 h; elapsed duration: 0.500 h.
- 731: Scenario: P50; P50 representative hindcast year 1984; cycle: 11; activity ID: 30; location: OFFSHORE; position: 21; safe-to-safe group: G2; baseline duration: 0.500 h; weather/operational downtime: 0.000 h; elapsed duration: 0.500 h.
- 732: Scenario: P50; P50 representative hindcast year 1984; cycle: 11; activity ID: 31; location: OFFSHORE; position: 21; safe-to-safe group: G2; baseline duration: 2.250 h; weather/operational downtime: 0.000 h; elapsed duration: 2.250 h.
- 733: Scenario: P50; P50 representative hindcast year 1984; cycle: 11; activity ID: 32; location: OFFSHORE; position: 21; safe-to-safe group: G2; baseline duration: 0.500 h; weather/operational downtime: 0.000 h; elapsed duration: 0.500 h.
- 734: Scenario: P50; P50 representative hindcast year 1984; cycle: 11; activity ID: 33; location: OFFSHORE; position: 21; safe-to-safe group: G3; baseline duration: 0.500 h; weather/operational downtime: 0.000 h; elapsed duration: 0.500 h.
- 735: Scenario: P50; P50 representative hindcast year 1984; cycle: 11; activity ID: 34; location: OFFSHORE; position: 21; safe-to-safe group: G3; baseline duration: 1.750 h; weather/operational downtime: 0.000 h; elapsed duration: 1.750 h.
- 736: Scenario: P50; P50 representative hindcast year 1984; cycle: 11; activity ID: 35; location: OFFSHORE; position: 21; safe-to-safe group: G3; baseline duration: 1.500 h; weather/operational downtime: 0.000 h; elapsed duration: 1.500 h.
- 737: Scenario: P50; P50 representative hindcast year 1984; cycle: 11; activity ID: 36; location: OFFSHORE; position: 21; safe-to-safe group: G4; baseline duration: 1.750 h; weather/operational downtime: 0.000 h; elapsed duration: 1.750 h.
- 738: Scenario: P50; P50 representative hindcast year 1984; cycle: 11; activity ID: 37; location: OFFSHORE; position: 21; safe-to-safe group: G4; baseline duration: 1.500 h; weather/operational downtime: 0.000 h; elapsed duration: 1.500 h.
- 739: Scenario: P50; P50 representative hindcast year 1984; cycle: 11; activity ID: 38; location: OFFSHORE; position: 21; safe-to-safe group: G5; baseline duration: 1.750 h; weather/operational downtime: 0.000 h; elapsed duration: 1.750 h.
- 740: Scenario: P50; P50 representative hindcast year 1984; cycle: 11; activity ID: 39; location: OFFSHORE; position: 21; safe-to-safe group: G5; baseline duration: 1.500 h; weather/operational downtime: 0.000 h; elapsed duration: 1.500 h.
- 741: Scenario: P50; P50 representative hindcast year 1984; cycle: 11; activity ID: 40; location: OFFSHORE; position: 21; safe-to-safe group: none; baseline duration: 1.000 h; weather/operational downtime: 0.000 h; elapsed duration: 1.000 h.
- 742: Scenario: P50; P50 representative hindcast year 1984; cycle: 11; activity ID: 41; location: OFFSHORE; position: 21; safe-to-safe group: none; baseline duration: 1.000 h; weather/operational downtime: 0.000 h; elapsed duration: 1.000 h.
- 743: Scenario: P50; P50 representative hindcast year 1984; cycle: 11; activity ID: 42; location: OFFSHORE; position: 21; safe-to-safe group: none; baseline duration: 3.000 h; weather/operational downtime: 0.000 h; elapsed duration: 3.000 h.
- 744: Scenario: P50; P50 representative hindcast year 1984; cycle: 11; activity ID: 43; location: OFFSHORE; position: 21; safe-to-safe group: none; baseline duration: 3.000 h; weather/operational downtime: 0.000 h; elapsed duration: 3.000 h.
- 745: Scenario: P50; P50 representative hindcast year 1984; cycle: 11; activity ID: 44; location: OFFSHORE; position: 21; safe-to-safe group: none; baseline duration: 2.000 h; weather/operational downtime: 0.000 h; elapsed duration: 2.000 h.
- 746: Scenario: P50; P50 representative hindcast year 1984; cycle: 11; activity ID: 21; location: OFFSHORE; position: 22; safe-to-safe group: none; baseline duration: 1.000 h; weather/operational downtime: 0.000 h; elapsed duration: 1.000 h.
- 747: Scenario: P50; P50 representative hindcast year 1984; cycle: 11; activity ID: 22; location: OFFSHORE; position: 22; safe-to-safe group: none; baseline duration: 1.000 h; weather/operational downtime: 0.000 h; elapsed duration: 1.000 h.
- 748: Scenario: P50; P50 representative hindcast year 1984; cycle: 11; activity ID: 23; location: OFFSHORE; position: 22; safe-to-safe group: none; baseline duration: 4.000 h; weather/operational downtime: 0.000 h; elapsed duration: 4.000 h.
- 749: Scenario: P50; P50 representative hindcast year 1984; cycle: 11; activity ID: 24; location: OFFSHORE; position: 22; safe-to-safe group: none; baseline duration: 3.000 h; weather/operational downtime: 0.000 h; elapsed duration: 3.000 h.
- 750: Scenario: P50; P50 representative hindcast year 1984; cycle: 11; activity ID: 25; location: OFFSHORE; position: 22; safe-to-safe group: none; baseline duration: 1.000 h; weather/operational downtime: 0.000 h; elapsed duration: 1.000 h.
- 751: Scenario: P50; P50 representative hindcast year 1984; cycle: 11; activity ID: 26; location: OFFSHORE; position: 22; safe-to-safe group: none; baseline duration: 2.000 h; weather/operational downtime: 0.000 h; elapsed duration: 2.000 h.
- 752: Scenario: P50; P50 representative hindcast year 1984; cycle: 11; activity ID: 27; location: OFFSHORE; position: 22; safe-to-safe group: G1; baseline duration: 1.000 h; weather/operational downtime: 0.000 h; elapsed duration: 1.000 h.
- 753: Scenario: P50; P50 representative hindcast year 1984; cycle: 11; activity ID: 28; location: OFFSHORE; position: 22; safe-to-safe group: G1; baseline duration: 3.500 h; weather/operational downtime: 0.000 h; elapsed duration: 3.500 h.
- 754: Scenario: P50; P50 representative hindcast year 1984; cycle: 11; activity ID: 29; location: OFFSHORE; position: 22; safe-to-safe group: G1; baseline duration: 0.500 h; weather/operational downtime: 0.000 h; elapsed duration: 0.500 h.
- 755: Scenario: P50; P50 representative hindcast year 1984; cycle: 11; activity ID: 30; location: OFFSHORE; position: 22; safe-to-safe group: G2; baseline duration: 0.500 h; weather/operational downtime: 0.000 h; elapsed duration: 0.500 h.
- 756: Scenario: P50; P50 representative hindcast year 1984; cycle: 11; activity ID: 31; location: OFFSHORE; position: 22; safe-to-safe group: G2; baseline duration: 2.250 h; weather/operational downtime: 0.000 h; elapsed duration: 2.250 h.
- 757: Scenario: P50; P50 representative hindcast year 1984; cycle: 11; activity ID: 32; location: OFFSHORE; position: 22; safe-to-safe group: G2; baseline duration: 0.500 h; weather/operational downtime: 0.000 h; elapsed duration: 0.500 h.
- 758: Scenario: P50; P50 representative hindcast year 1984; cycle: 11; activity ID: 33; location: OFFSHORE; position: 22; safe-to-safe group: G3; baseline duration: 0.500 h; weather/operational downtime: 0.000 h; elapsed duration: 0.500 h.
- 759: Scenario: P50; P50 representative hindcast year 1984; cycle: 11; activity ID: 34; location: OFFSHORE; position: 22; safe-to-safe group: G3; baseline duration: 1.750 h; weather/operational downtime: 0.000 h; elapsed duration: 1.750 h.
- 760: Scenario: P50; P50 representative hindcast year 1984; cycle: 11; activity ID: 35; location: OFFSHORE; position: 22; safe-to-safe group: G3; baseline duration: 1.500 h; weather/operational downtime: 0.000 h; elapsed duration: 1.500 h.
- 761: Scenario: P50; P50 representative hindcast year 1984; cycle: 11; activity ID: 36; location: OFFSHORE; position: 22; safe-to-safe group: G4; baseline duration: 1.750 h; weather/operational downtime: 0.000 h; elapsed duration: 1.750 h.
- 762: Scenario: P50; P50 representative hindcast year 1984; cycle: 11; activity ID: 37; location: OFFSHORE; position: 22; safe-to-safe group: G4; baseline duration: 1.500 h; weather/operational downtime: 0.000 h; elapsed duration: 1.500 h.
- 763: Scenario: P50; P50 representative hindcast year 1984; cycle: 11; activity ID: 38; location: OFFSHORE; position: 22; safe-to-safe group: G5; baseline duration: 1.750 h; weather/operational downtime: 0.000 h; elapsed duration: 1.750 h.
- 764: Scenario: P50; P50 representative hindcast year 1984; cycle: 11; activity ID: 39; location: OFFSHORE; position: 22; safe-to-safe group: G5; baseline duration: 1.500 h; weather/operational downtime: 0.000 h; elapsed duration: 1.500 h.
- 765: Scenario: P50; P50 representative hindcast year 1984; cycle: 11; activity ID: 40; location: OFFSHORE; position: 22; safe-to-safe group: none; baseline duration: 1.000 h; weather/operational downtime: 0.000 h; elapsed duration: 1.000 h.
- 766: Scenario: P50; P50 representative hindcast year 1984; cycle: 11; activity ID: 41; location: OFFSHORE; position: 22; safe-to-safe group: none; baseline duration: 1.000 h; weather/operational downtime: 0.000 h; elapsed duration: 1.000 h.
- 767: Scenario: P50; P50 representative hindcast year 1984; cycle: 11; activity ID: 42; location: OFFSHORE; position: 22; safe-to-safe group: none; baseline duration: 3.000 h; weather/operational downtime: 0.000 h; elapsed duration: 3.000 h.
- 768: Scenario: P50; P50 representative hindcast year 1984; cycle: 11; activity ID: 43; location: OFFSHORE; position: 22; safe-to-safe group: none; baseline duration: 3.000 h; weather/operational downtime: 0.000 h; elapsed duration: 3.000 h.
- 769: Scenario: P50; P50 representative hindcast year 1984; cycle: 11; activity ID: 44; location: OFFSHORE; position: 22; safe-to-safe group: none; baseline duration: 2.000 h; weather/operational downtime: 0.000 h; elapsed duration: 2.000 h.
- 770: Scenario: P50; P50 representative hindcast year 1984; cycle: 11; activity ID: 45; location: OFFSHORE; position: n/a; safe-to-safe group: none; baseline duration: 5.200 h; weather/operational downtime: 0.000 h; elapsed duration: 5.250 h.

| ID | WBS | Task | Type | Duration | Start | Finish | Predecessors | Duration WDT [days] | Location | Activity ID | Position | Safe-to-safe group |
| --- | --- | --- | --- | --- | --- | --- | --- | --- | --- | --- | --- | --- |
| 771 | 12 | **Cycle 12 — Positions 23–24** |  | 123.9eh | 2030-07-07 09:45 | 2030-07-15 07:45 |  | 2.750000 |  |  |  |  |
| 772 | 12.1 | Port maneuvering | manual | 1eh | 2030-07-07 09:45 | 2030-07-07 10:45 | 770 | 0.000000 | OFFSHORE | 1 |  |  |
| 773 | 12.2 | Preload and jacking up at port | manual | 2eh | 2030-07-07 10:45 | 2030-07-07 12:45 | 772 | 0.000000 | OFFSHORE | 2 |  |  |
| 774 | 12.3 | Release crane, gangway etc and prep for lifting | manual | 3eh | 2030-07-07 12:45 | 2030-07-07 15:45 | 773 | 0.000000 | OFFSHORE | 3 |  |  |
| 775 | 12.4 | Load in/out WTG supplier equipment | manual | 1eh | 2030-07-07 15:45 | 2030-07-07 16:45 | 774 | 0.000000 | OFFSHORE | 4 |  |  |
| 776 | 12.5 | Loadout Nacelle #1 | manual | 2.25eh | 2030-07-07 16:45 | 2030-07-07 19:00 | 775 | 0.000000 | OFFSHORE | 5 |  |  |
| 777 | 12.6 | Loadout Tower #1 | manual | 2.25eh | 2030-07-07 19:00 | 2030-07-07 21:15 | 776 | 0.000000 | OFFSHORE | 6 |  |  |
| 778 | 12.7 | Loadout Blade 1 | manual | 1.5eh | 2030-07-07 21:15 | 2030-07-07 22:45 | 777 | 0.000000 | OFFSHORE | 7 |  |  |
| 779 | 12.8 | Loadout Blade 2 | manual | 1.5eh | 2030-07-07 22:45 | 2030-07-08 00:15 | 778 | 0.000000 | OFFSHORE | 8 |  |  |
| 780 | 12.9 | Loadout Blade 3 | manual | 1.5eh | 2030-07-08 00:15 | 2030-07-08 01:45 | 779 | 0.000000 | OFFSHORE | 9 |  |  |
| 781 | 12.10 | Load in/out WTG supplier equipment | manual | 1eh | 2030-07-08 01:45 | 2030-07-08 02:45 | 780 | 0.000000 | OFFSHORE | 10 |  |  |
| 782 | 12.11 | Loadout Nacelle #2 | manual | 2.25eh | 2030-07-08 02:45 | 2030-07-08 05:00 | 781 | 0.000000 | OFFSHORE | 11 |  |  |
| 783 | 12.12 | Loadout Tower #2 | manual | 2.25eh | 2030-07-08 05:00 | 2030-07-08 07:15 | 782 | 0.000000 | OFFSHORE | 12 |  |  |
| 784 | 12.13 | Loadout Blade 1 | manual | 1.5eh | 2030-07-08 07:15 | 2030-07-08 08:45 | 783 | 0.000000 | OFFSHORE | 13 |  |  |
| 785 | 12.14 | Loadout Blade 2 | manual | 1.5eh | 2030-07-08 08:45 | 2030-07-08 10:15 | 784 | 0.000000 | OFFSHORE | 14 |  |  |
| 786 | 12.15 | Loadout Blade 3 | manual | 1.5eh | 2030-07-08 10:15 | 2030-07-08 11:45 | 785 | 0.000000 | OFFSHORE | 15 |  |  |
| 787 | 12.16 | Secure of crane, gangway (at port)) | manual | 3eh | 2030-07-08 11:45 | 2030-07-08 14:45 | 786 | 0.000000 | OFFSHORE | 16 |  |  |
| 788 | 12.17 | Jacking down at port | manual | 2eh | 2030-07-08 14:45 | 2030-07-08 16:45 | 787 | 0.000000 | OFFSHORE | 17 |  |  |
| 789 | 12.18 | Port maneuvering | manual | 1eh | 2030-07-08 16:45 | 2030-07-08 17:45 | 788 | 0.000000 | OFFSHORE | 18 |  |  |
| 790 | 12.19 | Transit from port to site | manual | 5.2eh | 2030-07-08 17:45 | 2030-07-08 23:00 | 789 | 0.000000 | OFFSHORE | 19 |  |  |
| 791 | 12.20 | DP field check | manual | 0.5eh | 2030-07-08 23:00 | 2030-07-10 15:30 | 790 | 1.666667 | OFFSHORE | 20 |  |  |
| 792 | 12.21 | Transit to next foundation | manual | 1eh | 2030-07-10 15:30 | 2030-07-10 16:30 | 791 | 0.000000 | OFFSHORE | 21 | 23 |  |
| 793 | 12.22 | Positioning at WTG location | manual | 1eh | 2030-07-10 16:30 | 2030-07-10 17:30 | 792 | 0.000000 | OFFSHORE | 22 | 23 |  |
| 794 | 12.23 | Preload and jacking up at site | manual | 4eh | 2030-07-10 17:30 | 2030-07-10 21:30 | 793 | 0.000000 | OFFSHORE | 23 | 23 |  |
| 795 | 12.24 | Release crane, gangway and prep for lifting | manual | 3eh | 2030-07-10 21:30 | 2030-07-11 00:30 | 794 | 0.000000 | OFFSHORE | 24 | 23 |  |
| 796 | 12.25 | Remove TP cover and Preparation of TP | manual | 1eh | 2030-07-11 00:30 | 2030-07-11 01:30 | 795 | 0.000000 | OFFSHORE | 25 | 23 |  |
| 797 | 12.26 | Tower preparation, removal of seafastening bolts | manual | 2eh | 2030-07-11 01:30 | 2030-07-11 03:30 | 796 | 0.000000 | OFFSHORE | 26 | 23 |  |
| 798 | 12.27 | Tower rigging-up (attached lifting equipment) | manual | 1eh | 2030-07-11 03:30 | 2030-07-11 04:30 | 797 | 0.000000 | OFFSHORE | 27 | 23 | G1 |
| 799 | 12.28 | Tower Lifting (safe-to-safe) | manual | 3.5eh | 2030-07-11 04:30 | 2030-07-11 08:00 | 798 | 0.000000 | OFFSHORE | 28 | 23 | G1 |
| 800 | 12.29 | Tower derigging (remove lifting equipment) | manual | 0.5eh | 2030-07-11 08:00 | 2030-07-11 08:30 | 799 | 0.000000 | OFFSHORE | 29 | 23 | G1 |
| 801 | 12.30 | Nacelle preparation and rigging | manual | 0.5eh | 2030-07-11 08:30 | 2030-07-11 09:00 | 800 | 0.000000 | OFFSHORE | 30 | 23 | G2 |
| 802 | 12.31 | Nacelle Lifting (safe-to-safe) | manual | 2.25eh | 2030-07-11 09:00 | 2030-07-11 11:15 | 801 | 0.000000 | OFFSHORE | 31 | 23 | G2 |
| 803 | 12.32 | Nacelle derigging (remove lifting equipment) | manual | 0.5eh | 2030-07-11 11:15 | 2030-07-11 11:45 | 802 | 0.000000 | OFFSHORE | 32 | 23 | G2 |
| 804 | 12.33 | Blade yoke rigging and attachement to Blade #1 | manual | 0.5eh | 2030-07-11 11:45 | 2030-07-11 12:15 | 803 | 0.000000 | OFFSHORE | 33 | 23 | G3 |
| 805 | 12.34 | Blade #1 Lifting (safe-to-safe) | manual | 1.75eh | 2030-07-11 12:15 | 2030-07-11 14:00 | 804 | 0.000000 | OFFSHORE | 34 | 23 | G3 |
| 806 | 12.35 | Blade #1 completion work, re-locate blade yoke to next blade | manual | 1.5eh | 2030-07-11 14:00 | 2030-07-11 15:30 | 805 | 0.000000 | OFFSHORE | 35 | 23 | G3 |
| 807 | 12.36 | Blade #2 Lifting (safe-to-safe) | manual | 1.75eh | 2030-07-11 15:30 | 2030-07-11 17:15 | 806 | 0.000000 | OFFSHORE | 36 | 23 | G4 |
| 808 | 12.37 | Balde #2 completion work, re-locate blade yoke to next blade | manual | 1.5eh | 2030-07-11 17:15 | 2030-07-11 18:45 | 807 | 0.000000 | OFFSHORE | 37 | 23 | G4 |
| 809 | 12.38 | Blade #3 Lifting (safe-to-safe) | manual | 1.75eh | 2030-07-11 18:45 | 2030-07-11 20:30 | 808 | 0.000000 | OFFSHORE | 38 | 23 | G5 |
| 810 | 12.39 | Blade #3 completion work, blade yoke de-rigging | manual | 1.5eh | 2030-07-11 20:30 | 2030-07-11 22:00 | 809 | 0.000000 | OFFSHORE | 39 | 23 | G5 |
| 811 | 12.40 | Handling HSBM and lifting tools | manual | 1eh | 2030-07-11 22:00 | 2030-07-11 23:00 | 810 | 0.000000 | OFFSHORE | 40 | 23 |  |
| 812 | 12.41 | Lifting HSBM and lifting tools from Nacelle | manual | 1eh | 2030-07-11 23:00 | 2030-07-12 00:00 | 811 | 0.000000 | OFFSHORE | 41 | 23 |  |
| 813 | 12.42 | Turbine general completion works | manual | 3eh | 2030-07-12 00:00 | 2030-07-12 03:00 | 812 | 0.000000 | OFFSHORE | 42 | 23 |  |
| 814 | 12.43 | Secure of crane, gangway etc. Preparation for jacking down and sailing | manual | 3eh | 2030-07-12 03:00 | 2030-07-12 06:00 | 813 | 0.000000 | OFFSHORE | 43 | 23 |  |
| 815 | 12.44 | Jacking down at site | manual | 2eh | 2030-07-12 06:00 | 2030-07-12 08:00 | 814 | 0.000000 | OFFSHORE | 44 | 23 |  |
| 816 | 12.45 | Transit to next foundation | manual | 1eh | 2030-07-12 08:00 | 2030-07-12 09:00 | 815 | 0.000000 | OFFSHORE | 21 | 24 |  |
| 817 | 12.46 | Positioning at WTG location | manual | 1eh | 2030-07-12 09:00 | 2030-07-12 10:00 | 816 | 0.000000 | OFFSHORE | 22 | 24 |  |
| 818 | 12.47 | Preload and jacking up at site | manual | 4eh | 2030-07-12 10:00 | 2030-07-12 14:00 | 817 | 0.000000 | OFFSHORE | 23 | 24 |  |
| 819 | 12.48 | Release crane, gangway and prep for lifting | manual | 3eh | 2030-07-12 14:00 | 2030-07-12 17:00 | 818 | 0.000000 | OFFSHORE | 24 | 24 |  |
| 820 | 12.49 | Remove TP cover and Preparation of TP | manual | 1eh | 2030-07-12 17:00 | 2030-07-13 03:00 | 819 | 0.375000 | OFFSHORE | 25 | 24 |  |
| 821 | 12.50 | Tower preparation, removal of seafastening bolts | manual | 2eh | 2030-07-13 03:00 | 2030-07-13 05:00 | 820 | 0.000000 | OFFSHORE | 26 | 24 |  |
| 822 | 12.51 | Tower rigging-up (attached lifting equipment) | manual | 1eh | 2030-07-13 05:00 | 2030-07-13 06:00 | 821 | 0.000000 | OFFSHORE | 27 | 24 | G1 |
| 823 | 12.52 | Tower Lifting (safe-to-safe) | manual | 3.5eh | 2030-07-13 06:00 | 2030-07-13 09:30 | 822 | 0.000000 | OFFSHORE | 28 | 24 | G1 |
| 824 | 12.53 | Tower derigging (remove lifting equipment) | manual | 0.5eh | 2030-07-13 09:30 | 2030-07-13 10:00 | 823 | 0.000000 | OFFSHORE | 29 | 24 | G1 |
| 825 | 12.54 | Nacelle preparation and rigging | manual | 0.5eh | 2030-07-13 10:00 | 2030-07-13 10:30 | 824 | 0.000000 | OFFSHORE | 30 | 24 | G2 |
| 826 | 12.55 | Nacelle Lifting (safe-to-safe) | manual | 2.25eh | 2030-07-13 10:30 | 2030-07-13 12:45 | 825 | 0.000000 | OFFSHORE | 31 | 24 | G2 |
| 827 | 12.56 | Nacelle derigging (remove lifting equipment) | manual | 0.5eh | 2030-07-13 12:45 | 2030-07-13 13:15 | 826 | 0.000000 | OFFSHORE | 32 | 24 | G2 |
| 828 | 12.57 | Blade yoke rigging and attachement to Blade #1 | manual | 0.5eh | 2030-07-13 13:15 | 2030-07-13 20:30 | 827 | 0.281250 | OFFSHORE | 33 | 24 | G3 |
| 829 | 12.58 | Blade #1 Lifting (safe-to-safe) | manual | 1.75eh | 2030-07-13 20:30 | 2030-07-13 22:15 | 828 | 0.000000 | OFFSHORE | 34 | 24 | G3 |
| 830 | 12.59 | Blade #1 completion work, re-locate blade yoke to next blade | manual | 1.5eh | 2030-07-13 22:15 | 2030-07-13 23:45 | 829 | 0.000000 | OFFSHORE | 35 | 24 | G3 |
| 831 | 12.60 | Blade #2 Lifting (safe-to-safe) | manual | 1.75eh | 2030-07-13 23:45 | 2030-07-14 11:45 | 830 | 0.427083 | OFFSHORE | 36 | 24 | G4 |
| 832 | 12.61 | Balde #2 completion work, re-locate blade yoke to next blade | manual | 1.5eh | 2030-07-14 11:45 | 2030-07-14 13:15 | 831 | 0.000000 | OFFSHORE | 37 | 24 | G4 |
| 833 | 12.62 | Blade #3 Lifting (safe-to-safe) | manual | 1.75eh | 2030-07-14 13:15 | 2030-07-14 15:00 | 832 | 0.000000 | OFFSHORE | 38 | 24 | G5 |
| 834 | 12.63 | Blade #3 completion work, blade yoke de-rigging | manual | 1.5eh | 2030-07-14 15:00 | 2030-07-14 16:30 | 833 | 0.000000 | OFFSHORE | 39 | 24 | G5 |
| 835 | 12.64 | Handling HSBM and lifting tools | manual | 1eh | 2030-07-14 16:30 | 2030-07-14 17:30 | 834 | 0.000000 | OFFSHORE | 40 | 24 |  |
| 836 | 12.65 | Lifting HSBM and lifting tools from Nacelle | manual | 1eh | 2030-07-14 17:30 | 2030-07-14 18:30 | 835 | 0.000000 | OFFSHORE | 41 | 24 |  |
| 837 | 12.66 | Turbine general completion works | manual | 3eh | 2030-07-14 18:30 | 2030-07-14 21:30 | 836 | 0.000000 | OFFSHORE | 42 | 24 |  |
| 838 | 12.67 | Secure of crane, gangway etc. Preparation for jacking down and sailing | manual | 3eh | 2030-07-14 21:30 | 2030-07-15 00:30 | 837 | 0.000000 | OFFSHORE | 43 | 24 |  |
| 839 | 12.68 | Jacking down at site | manual | 2eh | 2030-07-15 00:30 | 2030-07-15 02:30 | 838 | 0.000000 | OFFSHORE | 44 | 24 |  |
| 840 | 12.69 | Transit from site to port | manual | 5.2eh | 2030-07-15 02:30 | 2030-07-15 07:45 | 839 | 0.000000 | OFFSHORE | 45 |  |  |

Notes:
- 771: P50 representative hindcast year 1984; cycle 12; baseline duration 5.163 days; downtime 2.750 days; elapsed duration 7.917 days.
- 772: Scenario: P50; P50 representative hindcast year 1984; cycle: 12; activity ID: 1; location: OFFSHORE; position: n/a; safe-to-safe group: none; baseline duration: 1.000 h; weather/operational downtime: 0.000 h; elapsed duration: 1.000 h.
- 773: Scenario: P50; P50 representative hindcast year 1984; cycle: 12; activity ID: 2; location: OFFSHORE; position: n/a; safe-to-safe group: none; baseline duration: 2.000 h; weather/operational downtime: 0.000 h; elapsed duration: 2.000 h.
- 774: Scenario: P50; P50 representative hindcast year 1984; cycle: 12; activity ID: 3; location: OFFSHORE; position: n/a; safe-to-safe group: none; baseline duration: 3.000 h; weather/operational downtime: 0.000 h; elapsed duration: 3.000 h.
- 775: Scenario: P50; P50 representative hindcast year 1984; cycle: 12; activity ID: 4; location: OFFSHORE; position: n/a; safe-to-safe group: none; baseline duration: 1.000 h; weather/operational downtime: 0.000 h; elapsed duration: 1.000 h.
- 776: Scenario: P50; P50 representative hindcast year 1984; cycle: 12; activity ID: 5; location: OFFSHORE; position: n/a; safe-to-safe group: none; baseline duration: 2.250 h; weather/operational downtime: 0.000 h; elapsed duration: 2.250 h.
- 777: Scenario: P50; P50 representative hindcast year 1984; cycle: 12; activity ID: 6; location: OFFSHORE; position: n/a; safe-to-safe group: none; baseline duration: 2.250 h; weather/operational downtime: 0.000 h; elapsed duration: 2.250 h.
- 778: Scenario: P50; P50 representative hindcast year 1984; cycle: 12; activity ID: 7; location: OFFSHORE; position: n/a; safe-to-safe group: none; baseline duration: 1.500 h; weather/operational downtime: 0.000 h; elapsed duration: 1.500 h.
- 779: Scenario: P50; P50 representative hindcast year 1984; cycle: 12; activity ID: 8; location: OFFSHORE; position: n/a; safe-to-safe group: none; baseline duration: 1.500 h; weather/operational downtime: 0.000 h; elapsed duration: 1.500 h.
- 780: Scenario: P50; P50 representative hindcast year 1984; cycle: 12; activity ID: 9; location: OFFSHORE; position: n/a; safe-to-safe group: none; baseline duration: 1.500 h; weather/operational downtime: 0.000 h; elapsed duration: 1.500 h.
- 781: Scenario: P50; P50 representative hindcast year 1984; cycle: 12; activity ID: 10; location: OFFSHORE; position: n/a; safe-to-safe group: none; baseline duration: 1.000 h; weather/operational downtime: 0.000 h; elapsed duration: 1.000 h.
- 782: Scenario: P50; P50 representative hindcast year 1984; cycle: 12; activity ID: 11; location: OFFSHORE; position: n/a; safe-to-safe group: none; baseline duration: 2.250 h; weather/operational downtime: 0.000 h; elapsed duration: 2.250 h.
- 783: Scenario: P50; P50 representative hindcast year 1984; cycle: 12; activity ID: 12; location: OFFSHORE; position: n/a; safe-to-safe group: none; baseline duration: 2.250 h; weather/operational downtime: 0.000 h; elapsed duration: 2.250 h.
- 784: Scenario: P50; P50 representative hindcast year 1984; cycle: 12; activity ID: 13; location: OFFSHORE; position: n/a; safe-to-safe group: none; baseline duration: 1.500 h; weather/operational downtime: 0.000 h; elapsed duration: 1.500 h.
- 785: Scenario: P50; P50 representative hindcast year 1984; cycle: 12; activity ID: 14; location: OFFSHORE; position: n/a; safe-to-safe group: none; baseline duration: 1.500 h; weather/operational downtime: 0.000 h; elapsed duration: 1.500 h.
- 786: Scenario: P50; P50 representative hindcast year 1984; cycle: 12; activity ID: 15; location: OFFSHORE; position: n/a; safe-to-safe group: none; baseline duration: 1.500 h; weather/operational downtime: 0.000 h; elapsed duration: 1.500 h.
- 787: Scenario: P50; P50 representative hindcast year 1984; cycle: 12; activity ID: 16; location: OFFSHORE; position: n/a; safe-to-safe group: none; baseline duration: 3.000 h; weather/operational downtime: 0.000 h; elapsed duration: 3.000 h.
- 788: Scenario: P50; P50 representative hindcast year 1984; cycle: 12; activity ID: 17; location: OFFSHORE; position: n/a; safe-to-safe group: none; baseline duration: 2.000 h; weather/operational downtime: 0.000 h; elapsed duration: 2.000 h.
- 789: Scenario: P50; P50 representative hindcast year 1984; cycle: 12; activity ID: 18; location: OFFSHORE; position: n/a; safe-to-safe group: none; baseline duration: 1.000 h; weather/operational downtime: 0.000 h; elapsed duration: 1.000 h.
- 790: Scenario: P50; P50 representative hindcast year 1984; cycle: 12; activity ID: 19; location: OFFSHORE; position: n/a; safe-to-safe group: none; baseline duration: 5.200 h; weather/operational downtime: 0.000 h; elapsed duration: 5.250 h.
- 791: Scenario: P50; P50 representative hindcast year 1984; cycle: 12; activity ID: 20; location: OFFSHORE; position: n/a; safe-to-safe group: none; baseline duration: 0.500 h; weather/operational downtime: 40.000 h; elapsed duration: 40.500 h.
- 792: Scenario: P50; P50 representative hindcast year 1984; cycle: 12; activity ID: 21; location: OFFSHORE; position: 23; safe-to-safe group: none; baseline duration: 1.000 h; weather/operational downtime: 0.000 h; elapsed duration: 1.000 h.
- 793: Scenario: P50; P50 representative hindcast year 1984; cycle: 12; activity ID: 22; location: OFFSHORE; position: 23; safe-to-safe group: none; baseline duration: 1.000 h; weather/operational downtime: 0.000 h; elapsed duration: 1.000 h.
- 794: Scenario: P50; P50 representative hindcast year 1984; cycle: 12; activity ID: 23; location: OFFSHORE; position: 23; safe-to-safe group: none; baseline duration: 4.000 h; weather/operational downtime: 0.000 h; elapsed duration: 4.000 h.
- 795: Scenario: P50; P50 representative hindcast year 1984; cycle: 12; activity ID: 24; location: OFFSHORE; position: 23; safe-to-safe group: none; baseline duration: 3.000 h; weather/operational downtime: 0.000 h; elapsed duration: 3.000 h.
- 796: Scenario: P50; P50 representative hindcast year 1984; cycle: 12; activity ID: 25; location: OFFSHORE; position: 23; safe-to-safe group: none; baseline duration: 1.000 h; weather/operational downtime: 0.000 h; elapsed duration: 1.000 h.
- 797: Scenario: P50; P50 representative hindcast year 1984; cycle: 12; activity ID: 26; location: OFFSHORE; position: 23; safe-to-safe group: none; baseline duration: 2.000 h; weather/operational downtime: 0.000 h; elapsed duration: 2.000 h.
- 798: Scenario: P50; P50 representative hindcast year 1984; cycle: 12; activity ID: 27; location: OFFSHORE; position: 23; safe-to-safe group: G1; baseline duration: 1.000 h; weather/operational downtime: 0.000 h; elapsed duration: 1.000 h.
- 799: Scenario: P50; P50 representative hindcast year 1984; cycle: 12; activity ID: 28; location: OFFSHORE; position: 23; safe-to-safe group: G1; baseline duration: 3.500 h; weather/operational downtime: 0.000 h; elapsed duration: 3.500 h.
- 800: Scenario: P50; P50 representative hindcast year 1984; cycle: 12; activity ID: 29; location: OFFSHORE; position: 23; safe-to-safe group: G1; baseline duration: 0.500 h; weather/operational downtime: 0.000 h; elapsed duration: 0.500 h.
- 801: Scenario: P50; P50 representative hindcast year 1984; cycle: 12; activity ID: 30; location: OFFSHORE; position: 23; safe-to-safe group: G2; baseline duration: 0.500 h; weather/operational downtime: 0.000 h; elapsed duration: 0.500 h.
- 802: Scenario: P50; P50 representative hindcast year 1984; cycle: 12; activity ID: 31; location: OFFSHORE; position: 23; safe-to-safe group: G2; baseline duration: 2.250 h; weather/operational downtime: 0.000 h; elapsed duration: 2.250 h.
- 803: Scenario: P50; P50 representative hindcast year 1984; cycle: 12; activity ID: 32; location: OFFSHORE; position: 23; safe-to-safe group: G2; baseline duration: 0.500 h; weather/operational downtime: 0.000 h; elapsed duration: 0.500 h.
- 804: Scenario: P50; P50 representative hindcast year 1984; cycle: 12; activity ID: 33; location: OFFSHORE; position: 23; safe-to-safe group: G3; baseline duration: 0.500 h; weather/operational downtime: 0.000 h; elapsed duration: 0.500 h.
- 805: Scenario: P50; P50 representative hindcast year 1984; cycle: 12; activity ID: 34; location: OFFSHORE; position: 23; safe-to-safe group: G3; baseline duration: 1.750 h; weather/operational downtime: 0.000 h; elapsed duration: 1.750 h.
- 806: Scenario: P50; P50 representative hindcast year 1984; cycle: 12; activity ID: 35; location: OFFSHORE; position: 23; safe-to-safe group: G3; baseline duration: 1.500 h; weather/operational downtime: 0.000 h; elapsed duration: 1.500 h.
- 807: Scenario: P50; P50 representative hindcast year 1984; cycle: 12; activity ID: 36; location: OFFSHORE; position: 23; safe-to-safe group: G4; baseline duration: 1.750 h; weather/operational downtime: 0.000 h; elapsed duration: 1.750 h.
- 808: Scenario: P50; P50 representative hindcast year 1984; cycle: 12; activity ID: 37; location: OFFSHORE; position: 23; safe-to-safe group: G4; baseline duration: 1.500 h; weather/operational downtime: 0.000 h; elapsed duration: 1.500 h.
- 809: Scenario: P50; P50 representative hindcast year 1984; cycle: 12; activity ID: 38; location: OFFSHORE; position: 23; safe-to-safe group: G5; baseline duration: 1.750 h; weather/operational downtime: 0.000 h; elapsed duration: 1.750 h.
- 810: Scenario: P50; P50 representative hindcast year 1984; cycle: 12; activity ID: 39; location: OFFSHORE; position: 23; safe-to-safe group: G5; baseline duration: 1.500 h; weather/operational downtime: 0.000 h; elapsed duration: 1.500 h.
- 811: Scenario: P50; P50 representative hindcast year 1984; cycle: 12; activity ID: 40; location: OFFSHORE; position: 23; safe-to-safe group: none; baseline duration: 1.000 h; weather/operational downtime: 0.000 h; elapsed duration: 1.000 h.
- 812: Scenario: P50; P50 representative hindcast year 1984; cycle: 12; activity ID: 41; location: OFFSHORE; position: 23; safe-to-safe group: none; baseline duration: 1.000 h; weather/operational downtime: 0.000 h; elapsed duration: 1.000 h.
- 813: Scenario: P50; P50 representative hindcast year 1984; cycle: 12; activity ID: 42; location: OFFSHORE; position: 23; safe-to-safe group: none; baseline duration: 3.000 h; weather/operational downtime: 0.000 h; elapsed duration: 3.000 h.
- 814: Scenario: P50; P50 representative hindcast year 1984; cycle: 12; activity ID: 43; location: OFFSHORE; position: 23; safe-to-safe group: none; baseline duration: 3.000 h; weather/operational downtime: 0.000 h; elapsed duration: 3.000 h.
- 815: Scenario: P50; P50 representative hindcast year 1984; cycle: 12; activity ID: 44; location: OFFSHORE; position: 23; safe-to-safe group: none; baseline duration: 2.000 h; weather/operational downtime: 0.000 h; elapsed duration: 2.000 h.
- 816: Scenario: P50; P50 representative hindcast year 1984; cycle: 12; activity ID: 21; location: OFFSHORE; position: 24; safe-to-safe group: none; baseline duration: 1.000 h; weather/operational downtime: 0.000 h; elapsed duration: 1.000 h.
- 817: Scenario: P50; P50 representative hindcast year 1984; cycle: 12; activity ID: 22; location: OFFSHORE; position: 24; safe-to-safe group: none; baseline duration: 1.000 h; weather/operational downtime: 0.000 h; elapsed duration: 1.000 h.
- 818: Scenario: P50; P50 representative hindcast year 1984; cycle: 12; activity ID: 23; location: OFFSHORE; position: 24; safe-to-safe group: none; baseline duration: 4.000 h; weather/operational downtime: 0.000 h; elapsed duration: 4.000 h.
- 819: Scenario: P50; P50 representative hindcast year 1984; cycle: 12; activity ID: 24; location: OFFSHORE; position: 24; safe-to-safe group: none; baseline duration: 3.000 h; weather/operational downtime: 0.000 h; elapsed duration: 3.000 h.
- 820: Scenario: P50; P50 representative hindcast year 1984; cycle: 12; activity ID: 25; location: OFFSHORE; position: 24; safe-to-safe group: none; baseline duration: 1.000 h; weather/operational downtime: 9.000 h; elapsed duration: 10.000 h.
- 821: Scenario: P50; P50 representative hindcast year 1984; cycle: 12; activity ID: 26; location: OFFSHORE; position: 24; safe-to-safe group: none; baseline duration: 2.000 h; weather/operational downtime: 0.000 h; elapsed duration: 2.000 h.
- 822: Scenario: P50; P50 representative hindcast year 1984; cycle: 12; activity ID: 27; location: OFFSHORE; position: 24; safe-to-safe group: G1; baseline duration: 1.000 h; weather/operational downtime: 0.000 h; elapsed duration: 1.000 h.
- 823: Scenario: P50; P50 representative hindcast year 1984; cycle: 12; activity ID: 28; location: OFFSHORE; position: 24; safe-to-safe group: G1; baseline duration: 3.500 h; weather/operational downtime: 0.000 h; elapsed duration: 3.500 h.
- 824: Scenario: P50; P50 representative hindcast year 1984; cycle: 12; activity ID: 29; location: OFFSHORE; position: 24; safe-to-safe group: G1; baseline duration: 0.500 h; weather/operational downtime: 0.000 h; elapsed duration: 0.500 h.
- 825: Scenario: P50; P50 representative hindcast year 1984; cycle: 12; activity ID: 30; location: OFFSHORE; position: 24; safe-to-safe group: G2; baseline duration: 0.500 h; weather/operational downtime: 0.000 h; elapsed duration: 0.500 h.
- 826: Scenario: P50; P50 representative hindcast year 1984; cycle: 12; activity ID: 31; location: OFFSHORE; position: 24; safe-to-safe group: G2; baseline duration: 2.250 h; weather/operational downtime: 0.000 h; elapsed duration: 2.250 h.
- 827: Scenario: P50; P50 representative hindcast year 1984; cycle: 12; activity ID: 32; location: OFFSHORE; position: 24; safe-to-safe group: G2; baseline duration: 0.500 h; weather/operational downtime: 0.000 h; elapsed duration: 0.500 h.
- 828: Scenario: P50; P50 representative hindcast year 1984; cycle: 12; activity ID: 33; location: OFFSHORE; position: 24; safe-to-safe group: G3; baseline duration: 0.500 h; weather/operational downtime: 6.750 h; elapsed duration: 7.250 h.
- 829: Scenario: P50; P50 representative hindcast year 1984; cycle: 12; activity ID: 34; location: OFFSHORE; position: 24; safe-to-safe group: G3; baseline duration: 1.750 h; weather/operational downtime: 0.000 h; elapsed duration: 1.750 h.
- 830: Scenario: P50; P50 representative hindcast year 1984; cycle: 12; activity ID: 35; location: OFFSHORE; position: 24; safe-to-safe group: G3; baseline duration: 1.500 h; weather/operational downtime: 0.000 h; elapsed duration: 1.500 h.
- 831: Scenario: P50; P50 representative hindcast year 1984; cycle: 12; activity ID: 36; location: OFFSHORE; position: 24; safe-to-safe group: G4; baseline duration: 1.750 h; weather/operational downtime: 10.250 h; elapsed duration: 12.000 h.
- 832: Scenario: P50; P50 representative hindcast year 1984; cycle: 12; activity ID: 37; location: OFFSHORE; position: 24; safe-to-safe group: G4; baseline duration: 1.500 h; weather/operational downtime: 0.000 h; elapsed duration: 1.500 h.
- 833: Scenario: P50; P50 representative hindcast year 1984; cycle: 12; activity ID: 38; location: OFFSHORE; position: 24; safe-to-safe group: G5; baseline duration: 1.750 h; weather/operational downtime: 0.000 h; elapsed duration: 1.750 h.
- 834: Scenario: P50; P50 representative hindcast year 1984; cycle: 12; activity ID: 39; location: OFFSHORE; position: 24; safe-to-safe group: G5; baseline duration: 1.500 h; weather/operational downtime: 0.000 h; elapsed duration: 1.500 h.
- 835: Scenario: P50; P50 representative hindcast year 1984; cycle: 12; activity ID: 40; location: OFFSHORE; position: 24; safe-to-safe group: none; baseline duration: 1.000 h; weather/operational downtime: 0.000 h; elapsed duration: 1.000 h.
- 836: Scenario: P50; P50 representative hindcast year 1984; cycle: 12; activity ID: 41; location: OFFSHORE; position: 24; safe-to-safe group: none; baseline duration: 1.000 h; weather/operational downtime: 0.000 h; elapsed duration: 1.000 h.
- 837: Scenario: P50; P50 representative hindcast year 1984; cycle: 12; activity ID: 42; location: OFFSHORE; position: 24; safe-to-safe group: none; baseline duration: 3.000 h; weather/operational downtime: 0.000 h; elapsed duration: 3.000 h.
- 838: Scenario: P50; P50 representative hindcast year 1984; cycle: 12; activity ID: 43; location: OFFSHORE; position: 24; safe-to-safe group: none; baseline duration: 3.000 h; weather/operational downtime: 0.000 h; elapsed duration: 3.000 h.
- 839: Scenario: P50; P50 representative hindcast year 1984; cycle: 12; activity ID: 44; location: OFFSHORE; position: 24; safe-to-safe group: none; baseline duration: 2.000 h; weather/operational downtime: 0.000 h; elapsed duration: 2.000 h.
- 840: Scenario: P50; P50 representative hindcast year 1984; cycle: 12; activity ID: 45; location: OFFSHORE; position: n/a; safe-to-safe group: none; baseline duration: 5.200 h; weather/operational downtime: 0.000 h; elapsed duration: 5.250 h.

| ID | WBS | Task | Type | Duration | Start | Finish | Predecessors | Duration WDT [days] | Location | Activity ID | Position | Safe-to-safe group |
| --- | --- | --- | --- | --- | --- | --- | --- | --- | --- | --- | --- | --- |
| 841 | 13 | **Cycle 13 — Positions 25–26** |  | 123.9eh | 2030-07-15 07:45 | 2030-07-21 22:30 |  | 1.447917 |  |  |  |  |
| 842 | 13.1 | Port maneuvering | manual | 1eh | 2030-07-15 07:45 | 2030-07-15 08:45 | 840 | 0.000000 | OFFSHORE | 1 |  |  |
| 843 | 13.2 | Preload and jacking up at port | manual | 2eh | 2030-07-15 08:45 | 2030-07-15 10:45 | 842 | 0.000000 | OFFSHORE | 2 |  |  |
| 844 | 13.3 | Release crane, gangway etc and prep for lifting | manual | 3eh | 2030-07-15 10:45 | 2030-07-15 13:45 | 843 | 0.000000 | OFFSHORE | 3 |  |  |
| 845 | 13.4 | Load in/out WTG supplier equipment | manual | 1eh | 2030-07-15 13:45 | 2030-07-15 14:45 | 844 | 0.000000 | OFFSHORE | 4 |  |  |
| 846 | 13.5 | Loadout Nacelle #1 | manual | 2.25eh | 2030-07-15 14:45 | 2030-07-15 17:00 | 845 | 0.000000 | OFFSHORE | 5 |  |  |
| 847 | 13.6 | Loadout Tower #1 | manual | 2.25eh | 2030-07-15 17:00 | 2030-07-15 19:15 | 846 | 0.000000 | OFFSHORE | 6 |  |  |
| 848 | 13.7 | Loadout Blade 1 | manual | 1.5eh | 2030-07-15 19:15 | 2030-07-15 20:45 | 847 | 0.000000 | OFFSHORE | 7 |  |  |
| 849 | 13.8 | Loadout Blade 2 | manual | 1.5eh | 2030-07-15 20:45 | 2030-07-15 22:15 | 848 | 0.000000 | OFFSHORE | 8 |  |  |
| 850 | 13.9 | Loadout Blade 3 | manual | 1.5eh | 2030-07-15 22:15 | 2030-07-15 23:45 | 849 | 0.000000 | OFFSHORE | 9 |  |  |
| 851 | 13.10 | Load in/out WTG supplier equipment | manual | 1eh | 2030-07-15 23:45 | 2030-07-16 00:45 | 850 | 0.000000 | OFFSHORE | 10 |  |  |
| 852 | 13.11 | Loadout Nacelle #2 | manual | 2.25eh | 2030-07-16 00:45 | 2030-07-16 03:00 | 851 | 0.000000 | OFFSHORE | 11 |  |  |
| 853 | 13.12 | Loadout Tower #2 | manual | 2.25eh | 2030-07-16 03:00 | 2030-07-16 05:15 | 852 | 0.000000 | OFFSHORE | 12 |  |  |
| 854 | 13.13 | Loadout Blade 1 | manual | 1.5eh | 2030-07-16 05:15 | 2030-07-16 06:45 | 853 | 0.000000 | OFFSHORE | 13 |  |  |
| 855 | 13.14 | Loadout Blade 2 | manual | 1.5eh | 2030-07-16 06:45 | 2030-07-16 12:30 | 854 | 0.177083 | OFFSHORE | 14 |  |  |
| 856 | 13.15 | Loadout Blade 3 | manual | 1.5eh | 2030-07-16 12:30 | 2030-07-16 19:30 | 855 | 0.229167 | OFFSHORE | 15 |  |  |
| 857 | 13.16 | Secure of crane, gangway (at port)) | manual | 3eh | 2030-07-16 19:30 | 2030-07-16 22:30 | 856 | 0.000000 | OFFSHORE | 16 |  |  |
| 858 | 13.17 | Jacking down at port | manual | 2eh | 2030-07-16 22:30 | 2030-07-17 00:30 | 857 | 0.000000 | OFFSHORE | 17 |  |  |
| 859 | 13.18 | Port maneuvering | manual | 1eh | 2030-07-17 00:30 | 2030-07-17 01:30 | 858 | 0.000000 | OFFSHORE | 18 |  |  |
| 860 | 13.19 | Transit from port to site | manual | 5.2eh | 2030-07-17 01:30 | 2030-07-17 06:45 | 859 | 0.000000 | OFFSHORE | 19 |  |  |
| 861 | 13.20 | DP field check | manual | 0.5eh | 2030-07-17 06:45 | 2030-07-17 07:15 | 860 | 0.000000 | OFFSHORE | 20 |  |  |
| 862 | 13.21 | Transit to next foundation | manual | 1eh | 2030-07-17 07:15 | 2030-07-17 08:15 | 861 | 0.000000 | OFFSHORE | 21 | 25 |  |
| 863 | 13.22 | Positioning at WTG location | manual | 1eh | 2030-07-17 08:15 | 2030-07-17 09:15 | 862 | 0.000000 | OFFSHORE | 22 | 25 |  |
| 864 | 13.23 | Preload and jacking up at site | manual | 4eh | 2030-07-17 09:15 | 2030-07-17 13:15 | 863 | 0.000000 | OFFSHORE | 23 | 25 |  |
| 865 | 13.24 | Release crane, gangway and prep for lifting | manual | 3eh | 2030-07-17 13:15 | 2030-07-17 16:15 | 864 | 0.000000 | OFFSHORE | 24 | 25 |  |
| 866 | 13.25 | Remove TP cover and Preparation of TP | manual | 1eh | 2030-07-17 16:15 | 2030-07-17 17:15 | 865 | 0.000000 | OFFSHORE | 25 | 25 |  |
| 867 | 13.26 | Tower preparation, removal of seafastening bolts | manual | 2eh | 2030-07-17 17:15 | 2030-07-17 19:15 | 866 | 0.000000 | OFFSHORE | 26 | 25 |  |
| 868 | 13.27 | Tower rigging-up (attached lifting equipment) | manual | 1eh | 2030-07-17 19:15 | 2030-07-17 20:15 | 867 | 0.000000 | OFFSHORE | 27 | 25 | G1 |
| 869 | 13.28 | Tower Lifting (safe-to-safe) | manual | 3.5eh | 2030-07-17 20:15 | 2030-07-17 23:45 | 868 | 0.000000 | OFFSHORE | 28 | 25 | G1 |
| 870 | 13.29 | Tower derigging (remove lifting equipment) | manual | 0.5eh | 2030-07-17 23:45 | 2030-07-18 00:15 | 869 | 0.000000 | OFFSHORE | 29 | 25 | G1 |
| 871 | 13.30 | Nacelle preparation and rigging | manual | 0.5eh | 2030-07-18 00:15 | 2030-07-18 00:45 | 870 | 0.000000 | OFFSHORE | 30 | 25 | G2 |
| 872 | 13.31 | Nacelle Lifting (safe-to-safe) | manual | 2.25eh | 2030-07-18 00:45 | 2030-07-18 03:00 | 871 | 0.000000 | OFFSHORE | 31 | 25 | G2 |
| 873 | 13.32 | Nacelle derigging (remove lifting equipment) | manual | 0.5eh | 2030-07-18 03:00 | 2030-07-18 03:30 | 872 | 0.000000 | OFFSHORE | 32 | 25 | G2 |
| 874 | 13.33 | Blade yoke rigging and attachement to Blade #1 | manual | 0.5eh | 2030-07-18 03:30 | 2030-07-18 04:00 | 873 | 0.000000 | OFFSHORE | 33 | 25 | G3 |
| 875 | 13.34 | Blade #1 Lifting (safe-to-safe) | manual | 1.75eh | 2030-07-18 04:00 | 2030-07-18 05:45 | 874 | 0.000000 | OFFSHORE | 34 | 25 | G3 |
| 876 | 13.35 | Blade #1 completion work, re-locate blade yoke to next blade | manual | 1.5eh | 2030-07-18 05:45 | 2030-07-18 07:15 | 875 | 0.000000 | OFFSHORE | 35 | 25 | G3 |
| 877 | 13.36 | Blade #2 Lifting (safe-to-safe) | manual | 1.75eh | 2030-07-18 07:15 | 2030-07-18 09:00 | 876 | 0.000000 | OFFSHORE | 36 | 25 | G4 |
| 878 | 13.37 | Balde #2 completion work, re-locate blade yoke to next blade | manual | 1.5eh | 2030-07-18 09:00 | 2030-07-18 10:30 | 877 | 0.000000 | OFFSHORE | 37 | 25 | G4 |
| 879 | 13.38 | Blade #3 Lifting (safe-to-safe) | manual | 1.75eh | 2030-07-18 10:30 | 2030-07-18 12:15 | 878 | 0.000000 | OFFSHORE | 38 | 25 | G5 |
| 880 | 13.39 | Blade #3 completion work, blade yoke de-rigging | manual | 1.5eh | 2030-07-18 12:15 | 2030-07-18 13:45 | 879 | 0.000000 | OFFSHORE | 39 | 25 | G5 |
| 881 | 13.40 | Handling HSBM and lifting tools | manual | 1eh | 2030-07-18 13:45 | 2030-07-18 14:45 | 880 | 0.000000 | OFFSHORE | 40 | 25 |  |
| 882 | 13.41 | Lifting HSBM and lifting tools from Nacelle | manual | 1eh | 2030-07-18 14:45 | 2030-07-18 15:45 | 881 | 0.000000 | OFFSHORE | 41 | 25 |  |
| 883 | 13.42 | Turbine general completion works | manual | 3eh | 2030-07-18 15:45 | 2030-07-18 18:45 | 882 | 0.000000 | OFFSHORE | 42 | 25 |  |
| 884 | 13.43 | Secure of crane, gangway etc. Preparation for jacking down and sailing | manual | 3eh | 2030-07-18 18:45 | 2030-07-18 21:45 | 883 | 0.000000 | OFFSHORE | 43 | 25 |  |
| 885 | 13.44 | Jacking down at site | manual | 2eh | 2030-07-18 21:45 | 2030-07-18 23:45 | 884 | 0.000000 | OFFSHORE | 44 | 25 |  |
| 886 | 13.45 | Transit to next foundation | manual | 1eh | 2030-07-18 23:45 | 2030-07-19 00:45 | 885 | 0.000000 | OFFSHORE | 21 | 26 |  |
| 887 | 13.46 | Positioning at WTG location | manual | 1eh | 2030-07-19 00:45 | 2030-07-19 01:45 | 886 | 0.000000 | OFFSHORE | 22 | 26 |  |
| 888 | 13.47 | Preload and jacking up at site | manual | 4eh | 2030-07-19 01:45 | 2030-07-19 05:45 | 887 | 0.000000 | OFFSHORE | 23 | 26 |  |
| 889 | 13.48 | Release crane, gangway and prep for lifting | manual | 3eh | 2030-07-19 05:45 | 2030-07-19 08:45 | 888 | 0.000000 | OFFSHORE | 24 | 26 |  |
| 890 | 13.49 | Remove TP cover and Preparation of TP | manual | 1eh | 2030-07-19 08:45 | 2030-07-19 09:45 | 889 | 0.000000 | OFFSHORE | 25 | 26 |  |
| 891 | 13.50 | Tower preparation, removal of seafastening bolts | manual | 2eh | 2030-07-19 09:45 | 2030-07-19 11:45 | 890 | 0.000000 | OFFSHORE | 26 | 26 |  |
| 892 | 13.51 | Tower rigging-up (attached lifting equipment) | manual | 1eh | 2030-07-19 11:45 | 2030-07-19 12:45 | 891 | 0.000000 | OFFSHORE | 27 | 26 | G1 |
| 893 | 13.52 | Tower Lifting (safe-to-safe) | manual | 3.5eh | 2030-07-19 12:45 | 2030-07-19 16:15 | 892 | 0.000000 | OFFSHORE | 28 | 26 | G1 |
| 894 | 13.53 | Tower derigging (remove lifting equipment) | manual | 0.5eh | 2030-07-19 16:15 | 2030-07-19 16:45 | 893 | 0.000000 | OFFSHORE | 29 | 26 | G1 |
| 895 | 13.54 | Nacelle preparation and rigging | manual | 0.5eh | 2030-07-19 16:45 | 2030-07-19 17:15 | 894 | 0.000000 | OFFSHORE | 30 | 26 | G2 |
| 896 | 13.55 | Nacelle Lifting (safe-to-safe) | manual | 2.25eh | 2030-07-19 17:15 | 2030-07-19 19:30 | 895 | 0.000000 | OFFSHORE | 31 | 26 | G2 |
| 897 | 13.56 | Nacelle derigging (remove lifting equipment) | manual | 0.5eh | 2030-07-19 19:30 | 2030-07-19 20:00 | 896 | 0.000000 | OFFSHORE | 32 | 26 | G2 |
| 898 | 13.57 | Blade yoke rigging and attachement to Blade #1 | manual | 0.5eh | 2030-07-19 20:00 | 2030-07-20 13:30 | 897 | 0.708333 | OFFSHORE | 33 | 26 | G3 |
| 899 | 13.58 | Blade #1 Lifting (safe-to-safe) | manual | 1.75eh | 2030-07-20 13:30 | 2030-07-20 15:15 | 898 | 0.000000 | OFFSHORE | 34 | 26 | G3 |
| 900 | 13.59 | Blade #1 completion work, re-locate blade yoke to next blade | manual | 1.5eh | 2030-07-20 15:15 | 2030-07-20 16:45 | 899 | 0.000000 | OFFSHORE | 35 | 26 | G3 |
| 901 | 13.60 | Blade #2 Lifting (safe-to-safe) | manual | 1.75eh | 2030-07-20 16:45 | 2030-07-20 18:30 | 900 | 0.000000 | OFFSHORE | 36 | 26 | G4 |
| 902 | 13.61 | Balde #2 completion work, re-locate blade yoke to next blade | manual | 1.5eh | 2030-07-20 18:30 | 2030-07-20 20:00 | 901 | 0.000000 | OFFSHORE | 37 | 26 | G4 |
| 903 | 13.62 | Blade #3 Lifting (safe-to-safe) | manual | 1.75eh | 2030-07-20 20:00 | 2030-07-21 05:45 | 902 | 0.333333 | OFFSHORE | 38 | 26 | G5 |
| 904 | 13.63 | Blade #3 completion work, blade yoke de-rigging | manual | 1.5eh | 2030-07-21 05:45 | 2030-07-21 07:15 | 903 | 0.000000 | OFFSHORE | 39 | 26 | G5 |
| 905 | 13.64 | Handling HSBM and lifting tools | manual | 1eh | 2030-07-21 07:15 | 2030-07-21 08:15 | 904 | 0.000000 | OFFSHORE | 40 | 26 |  |
| 906 | 13.65 | Lifting HSBM and lifting tools from Nacelle | manual | 1eh | 2030-07-21 08:15 | 2030-07-21 09:15 | 905 | 0.000000 | OFFSHORE | 41 | 26 |  |
| 907 | 13.66 | Turbine general completion works | manual | 3eh | 2030-07-21 09:15 | 2030-07-21 12:15 | 906 | 0.000000 | OFFSHORE | 42 | 26 |  |
| 908 | 13.67 | Secure of crane, gangway etc. Preparation for jacking down and sailing | manual | 3eh | 2030-07-21 12:15 | 2030-07-21 15:15 | 907 | 0.000000 | OFFSHORE | 43 | 26 |  |
| 909 | 13.68 | Jacking down at site | manual | 2eh | 2030-07-21 15:15 | 2030-07-21 17:15 | 908 | 0.000000 | OFFSHORE | 44 | 26 |  |
| 910 | 13.69 | Transit from site to port | manual | 5.2eh | 2030-07-21 17:15 | 2030-07-21 22:30 | 909 | 0.000000 | OFFSHORE | 45 |  |  |

Notes:
- 841: P50 representative hindcast year 1984; cycle 13; baseline duration 5.163 days; downtime 1.448 days; elapsed duration 6.615 days.
- 842: Scenario: P50; P50 representative hindcast year 1984; cycle: 13; activity ID: 1; location: OFFSHORE; position: n/a; safe-to-safe group: none; baseline duration: 1.000 h; weather/operational downtime: 0.000 h; elapsed duration: 1.000 h.
- 843: Scenario: P50; P50 representative hindcast year 1984; cycle: 13; activity ID: 2; location: OFFSHORE; position: n/a; safe-to-safe group: none; baseline duration: 2.000 h; weather/operational downtime: 0.000 h; elapsed duration: 2.000 h.
- 844: Scenario: P50; P50 representative hindcast year 1984; cycle: 13; activity ID: 3; location: OFFSHORE; position: n/a; safe-to-safe group: none; baseline duration: 3.000 h; weather/operational downtime: 0.000 h; elapsed duration: 3.000 h.
- 845: Scenario: P50; P50 representative hindcast year 1984; cycle: 13; activity ID: 4; location: OFFSHORE; position: n/a; safe-to-safe group: none; baseline duration: 1.000 h; weather/operational downtime: 0.000 h; elapsed duration: 1.000 h.
- 846: Scenario: P50; P50 representative hindcast year 1984; cycle: 13; activity ID: 5; location: OFFSHORE; position: n/a; safe-to-safe group: none; baseline duration: 2.250 h; weather/operational downtime: 0.000 h; elapsed duration: 2.250 h.
- 847: Scenario: P50; P50 representative hindcast year 1984; cycle: 13; activity ID: 6; location: OFFSHORE; position: n/a; safe-to-safe group: none; baseline duration: 2.250 h; weather/operational downtime: 0.000 h; elapsed duration: 2.250 h.
- 848: Scenario: P50; P50 representative hindcast year 1984; cycle: 13; activity ID: 7; location: OFFSHORE; position: n/a; safe-to-safe group: none; baseline duration: 1.500 h; weather/operational downtime: 0.000 h; elapsed duration: 1.500 h.
- 849: Scenario: P50; P50 representative hindcast year 1984; cycle: 13; activity ID: 8; location: OFFSHORE; position: n/a; safe-to-safe group: none; baseline duration: 1.500 h; weather/operational downtime: 0.000 h; elapsed duration: 1.500 h.
- 850: Scenario: P50; P50 representative hindcast year 1984; cycle: 13; activity ID: 9; location: OFFSHORE; position: n/a; safe-to-safe group: none; baseline duration: 1.500 h; weather/operational downtime: 0.000 h; elapsed duration: 1.500 h.
- 851: Scenario: P50; P50 representative hindcast year 1984; cycle: 13; activity ID: 10; location: OFFSHORE; position: n/a; safe-to-safe group: none; baseline duration: 1.000 h; weather/operational downtime: 0.000 h; elapsed duration: 1.000 h.
- 852: Scenario: P50; P50 representative hindcast year 1984; cycle: 13; activity ID: 11; location: OFFSHORE; position: n/a; safe-to-safe group: none; baseline duration: 2.250 h; weather/operational downtime: 0.000 h; elapsed duration: 2.250 h.
- 853: Scenario: P50; P50 representative hindcast year 1984; cycle: 13; activity ID: 12; location: OFFSHORE; position: n/a; safe-to-safe group: none; baseline duration: 2.250 h; weather/operational downtime: 0.000 h; elapsed duration: 2.250 h.
- 854: Scenario: P50; P50 representative hindcast year 1984; cycle: 13; activity ID: 13; location: OFFSHORE; position: n/a; safe-to-safe group: none; baseline duration: 1.500 h; weather/operational downtime: 0.000 h; elapsed duration: 1.500 h.
- 855: Scenario: P50; P50 representative hindcast year 1984; cycle: 13; activity ID: 14; location: OFFSHORE; position: n/a; safe-to-safe group: none; baseline duration: 1.500 h; weather/operational downtime: 4.250 h; elapsed duration: 5.750 h.
- 856: Scenario: P50; P50 representative hindcast year 1984; cycle: 13; activity ID: 15; location: OFFSHORE; position: n/a; safe-to-safe group: none; baseline duration: 1.500 h; weather/operational downtime: 5.500 h; elapsed duration: 7.000 h.
- 857: Scenario: P50; P50 representative hindcast year 1984; cycle: 13; activity ID: 16; location: OFFSHORE; position: n/a; safe-to-safe group: none; baseline duration: 3.000 h; weather/operational downtime: 0.000 h; elapsed duration: 3.000 h.
- 858: Scenario: P50; P50 representative hindcast year 1984; cycle: 13; activity ID: 17; location: OFFSHORE; position: n/a; safe-to-safe group: none; baseline duration: 2.000 h; weather/operational downtime: 0.000 h; elapsed duration: 2.000 h.
- 859: Scenario: P50; P50 representative hindcast year 1984; cycle: 13; activity ID: 18; location: OFFSHORE; position: n/a; safe-to-safe group: none; baseline duration: 1.000 h; weather/operational downtime: 0.000 h; elapsed duration: 1.000 h.
- 860: Scenario: P50; P50 representative hindcast year 1984; cycle: 13; activity ID: 19; location: OFFSHORE; position: n/a; safe-to-safe group: none; baseline duration: 5.200 h; weather/operational downtime: 0.000 h; elapsed duration: 5.250 h.
- 861: Scenario: P50; P50 representative hindcast year 1984; cycle: 13; activity ID: 20; location: OFFSHORE; position: n/a; safe-to-safe group: none; baseline duration: 0.500 h; weather/operational downtime: 0.000 h; elapsed duration: 0.500 h.
- 862: Scenario: P50; P50 representative hindcast year 1984; cycle: 13; activity ID: 21; location: OFFSHORE; position: 25; safe-to-safe group: none; baseline duration: 1.000 h; weather/operational downtime: 0.000 h; elapsed duration: 1.000 h.
- 863: Scenario: P50; P50 representative hindcast year 1984; cycle: 13; activity ID: 22; location: OFFSHORE; position: 25; safe-to-safe group: none; baseline duration: 1.000 h; weather/operational downtime: 0.000 h; elapsed duration: 1.000 h.
- 864: Scenario: P50; P50 representative hindcast year 1984; cycle: 13; activity ID: 23; location: OFFSHORE; position: 25; safe-to-safe group: none; baseline duration: 4.000 h; weather/operational downtime: 0.000 h; elapsed duration: 4.000 h.
- 865: Scenario: P50; P50 representative hindcast year 1984; cycle: 13; activity ID: 24; location: OFFSHORE; position: 25; safe-to-safe group: none; baseline duration: 3.000 h; weather/operational downtime: 0.000 h; elapsed duration: 3.000 h.
- 866: Scenario: P50; P50 representative hindcast year 1984; cycle: 13; activity ID: 25; location: OFFSHORE; position: 25; safe-to-safe group: none; baseline duration: 1.000 h; weather/operational downtime: 0.000 h; elapsed duration: 1.000 h.
- 867: Scenario: P50; P50 representative hindcast year 1984; cycle: 13; activity ID: 26; location: OFFSHORE; position: 25; safe-to-safe group: none; baseline duration: 2.000 h; weather/operational downtime: 0.000 h; elapsed duration: 2.000 h.
- 868: Scenario: P50; P50 representative hindcast year 1984; cycle: 13; activity ID: 27; location: OFFSHORE; position: 25; safe-to-safe group: G1; baseline duration: 1.000 h; weather/operational downtime: 0.000 h; elapsed duration: 1.000 h.
- 869: Scenario: P50; P50 representative hindcast year 1984; cycle: 13; activity ID: 28; location: OFFSHORE; position: 25; safe-to-safe group: G1; baseline duration: 3.500 h; weather/operational downtime: 0.000 h; elapsed duration: 3.500 h.
- 870: Scenario: P50; P50 representative hindcast year 1984; cycle: 13; activity ID: 29; location: OFFSHORE; position: 25; safe-to-safe group: G1; baseline duration: 0.500 h; weather/operational downtime: 0.000 h; elapsed duration: 0.500 h.
- 871: Scenario: P50; P50 representative hindcast year 1984; cycle: 13; activity ID: 30; location: OFFSHORE; position: 25; safe-to-safe group: G2; baseline duration: 0.500 h; weather/operational downtime: 0.000 h; elapsed duration: 0.500 h.
- 872: Scenario: P50; P50 representative hindcast year 1984; cycle: 13; activity ID: 31; location: OFFSHORE; position: 25; safe-to-safe group: G2; baseline duration: 2.250 h; weather/operational downtime: 0.000 h; elapsed duration: 2.250 h.
- 873: Scenario: P50; P50 representative hindcast year 1984; cycle: 13; activity ID: 32; location: OFFSHORE; position: 25; safe-to-safe group: G2; baseline duration: 0.500 h; weather/operational downtime: 0.000 h; elapsed duration: 0.500 h.
- 874: Scenario: P50; P50 representative hindcast year 1984; cycle: 13; activity ID: 33; location: OFFSHORE; position: 25; safe-to-safe group: G3; baseline duration: 0.500 h; weather/operational downtime: 0.000 h; elapsed duration: 0.500 h.
- 875: Scenario: P50; P50 representative hindcast year 1984; cycle: 13; activity ID: 34; location: OFFSHORE; position: 25; safe-to-safe group: G3; baseline duration: 1.750 h; weather/operational downtime: 0.000 h; elapsed duration: 1.750 h.
- 876: Scenario: P50; P50 representative hindcast year 1984; cycle: 13; activity ID: 35; location: OFFSHORE; position: 25; safe-to-safe group: G3; baseline duration: 1.500 h; weather/operational downtime: 0.000 h; elapsed duration: 1.500 h.
- 877: Scenario: P50; P50 representative hindcast year 1984; cycle: 13; activity ID: 36; location: OFFSHORE; position: 25; safe-to-safe group: G4; baseline duration: 1.750 h; weather/operational downtime: 0.000 h; elapsed duration: 1.750 h.
- 878: Scenario: P50; P50 representative hindcast year 1984; cycle: 13; activity ID: 37; location: OFFSHORE; position: 25; safe-to-safe group: G4; baseline duration: 1.500 h; weather/operational downtime: 0.000 h; elapsed duration: 1.500 h.
- 879: Scenario: P50; P50 representative hindcast year 1984; cycle: 13; activity ID: 38; location: OFFSHORE; position: 25; safe-to-safe group: G5; baseline duration: 1.750 h; weather/operational downtime: 0.000 h; elapsed duration: 1.750 h.
- 880: Scenario: P50; P50 representative hindcast year 1984; cycle: 13; activity ID: 39; location: OFFSHORE; position: 25; safe-to-safe group: G5; baseline duration: 1.500 h; weather/operational downtime: 0.000 h; elapsed duration: 1.500 h.
- 881: Scenario: P50; P50 representative hindcast year 1984; cycle: 13; activity ID: 40; location: OFFSHORE; position: 25; safe-to-safe group: none; baseline duration: 1.000 h; weather/operational downtime: 0.000 h; elapsed duration: 1.000 h.
- 882: Scenario: P50; P50 representative hindcast year 1984; cycle: 13; activity ID: 41; location: OFFSHORE; position: 25; safe-to-safe group: none; baseline duration: 1.000 h; weather/operational downtime: 0.000 h; elapsed duration: 1.000 h.
- 883: Scenario: P50; P50 representative hindcast year 1984; cycle: 13; activity ID: 42; location: OFFSHORE; position: 25; safe-to-safe group: none; baseline duration: 3.000 h; weather/operational downtime: 0.000 h; elapsed duration: 3.000 h.
- 884: Scenario: P50; P50 representative hindcast year 1984; cycle: 13; activity ID: 43; location: OFFSHORE; position: 25; safe-to-safe group: none; baseline duration: 3.000 h; weather/operational downtime: 0.000 h; elapsed duration: 3.000 h.
- 885: Scenario: P50; P50 representative hindcast year 1984; cycle: 13; activity ID: 44; location: OFFSHORE; position: 25; safe-to-safe group: none; baseline duration: 2.000 h; weather/operational downtime: 0.000 h; elapsed duration: 2.000 h.
- 886: Scenario: P50; P50 representative hindcast year 1984; cycle: 13; activity ID: 21; location: OFFSHORE; position: 26; safe-to-safe group: none; baseline duration: 1.000 h; weather/operational downtime: 0.000 h; elapsed duration: 1.000 h.
- 887: Scenario: P50; P50 representative hindcast year 1984; cycle: 13; activity ID: 22; location: OFFSHORE; position: 26; safe-to-safe group: none; baseline duration: 1.000 h; weather/operational downtime: 0.000 h; elapsed duration: 1.000 h.
- 888: Scenario: P50; P50 representative hindcast year 1984; cycle: 13; activity ID: 23; location: OFFSHORE; position: 26; safe-to-safe group: none; baseline duration: 4.000 h; weather/operational downtime: 0.000 h; elapsed duration: 4.000 h.
- 889: Scenario: P50; P50 representative hindcast year 1984; cycle: 13; activity ID: 24; location: OFFSHORE; position: 26; safe-to-safe group: none; baseline duration: 3.000 h; weather/operational downtime: 0.000 h; elapsed duration: 3.000 h.
- 890: Scenario: P50; P50 representative hindcast year 1984; cycle: 13; activity ID: 25; location: OFFSHORE; position: 26; safe-to-safe group: none; baseline duration: 1.000 h; weather/operational downtime: 0.000 h; elapsed duration: 1.000 h.
- 891: Scenario: P50; P50 representative hindcast year 1984; cycle: 13; activity ID: 26; location: OFFSHORE; position: 26; safe-to-safe group: none; baseline duration: 2.000 h; weather/operational downtime: 0.000 h; elapsed duration: 2.000 h.
- 892: Scenario: P50; P50 representative hindcast year 1984; cycle: 13; activity ID: 27; location: OFFSHORE; position: 26; safe-to-safe group: G1; baseline duration: 1.000 h; weather/operational downtime: 0.000 h; elapsed duration: 1.000 h.
- 893: Scenario: P50; P50 representative hindcast year 1984; cycle: 13; activity ID: 28; location: OFFSHORE; position: 26; safe-to-safe group: G1; baseline duration: 3.500 h; weather/operational downtime: 0.000 h; elapsed duration: 3.500 h.
- 894: Scenario: P50; P50 representative hindcast year 1984; cycle: 13; activity ID: 29; location: OFFSHORE; position: 26; safe-to-safe group: G1; baseline duration: 0.500 h; weather/operational downtime: 0.000 h; elapsed duration: 0.500 h.
- 895: Scenario: P50; P50 representative hindcast year 1984; cycle: 13; activity ID: 30; location: OFFSHORE; position: 26; safe-to-safe group: G2; baseline duration: 0.500 h; weather/operational downtime: 0.000 h; elapsed duration: 0.500 h.
- 896: Scenario: P50; P50 representative hindcast year 1984; cycle: 13; activity ID: 31; location: OFFSHORE; position: 26; safe-to-safe group: G2; baseline duration: 2.250 h; weather/operational downtime: 0.000 h; elapsed duration: 2.250 h.
- 897: Scenario: P50; P50 representative hindcast year 1984; cycle: 13; activity ID: 32; location: OFFSHORE; position: 26; safe-to-safe group: G2; baseline duration: 0.500 h; weather/operational downtime: 0.000 h; elapsed duration: 0.500 h.
- 898: Scenario: P50; P50 representative hindcast year 1984; cycle: 13; activity ID: 33; location: OFFSHORE; position: 26; safe-to-safe group: G3; baseline duration: 0.500 h; weather/operational downtime: 17.000 h; elapsed duration: 17.500 h.
- 899: Scenario: P50; P50 representative hindcast year 1984; cycle: 13; activity ID: 34; location: OFFSHORE; position: 26; safe-to-safe group: G3; baseline duration: 1.750 h; weather/operational downtime: 0.000 h; elapsed duration: 1.750 h.
- 900: Scenario: P50; P50 representative hindcast year 1984; cycle: 13; activity ID: 35; location: OFFSHORE; position: 26; safe-to-safe group: G3; baseline duration: 1.500 h; weather/operational downtime: 0.000 h; elapsed duration: 1.500 h.
- 901: Scenario: P50; P50 representative hindcast year 1984; cycle: 13; activity ID: 36; location: OFFSHORE; position: 26; safe-to-safe group: G4; baseline duration: 1.750 h; weather/operational downtime: 0.000 h; elapsed duration: 1.750 h.
- 902: Scenario: P50; P50 representative hindcast year 1984; cycle: 13; activity ID: 37; location: OFFSHORE; position: 26; safe-to-safe group: G4; baseline duration: 1.500 h; weather/operational downtime: 0.000 h; elapsed duration: 1.500 h.
- 903: Scenario: P50; P50 representative hindcast year 1984; cycle: 13; activity ID: 38; location: OFFSHORE; position: 26; safe-to-safe group: G5; baseline duration: 1.750 h; weather/operational downtime: 8.000 h; elapsed duration: 9.750 h.
- 904: Scenario: P50; P50 representative hindcast year 1984; cycle: 13; activity ID: 39; location: OFFSHORE; position: 26; safe-to-safe group: G5; baseline duration: 1.500 h; weather/operational downtime: 0.000 h; elapsed duration: 1.500 h.
- 905: Scenario: P50; P50 representative hindcast year 1984; cycle: 13; activity ID: 40; location: OFFSHORE; position: 26; safe-to-safe group: none; baseline duration: 1.000 h; weather/operational downtime: 0.000 h; elapsed duration: 1.000 h.
- 906: Scenario: P50; P50 representative hindcast year 1984; cycle: 13; activity ID: 41; location: OFFSHORE; position: 26; safe-to-safe group: none; baseline duration: 1.000 h; weather/operational downtime: 0.000 h; elapsed duration: 1.000 h.
- 907: Scenario: P50; P50 representative hindcast year 1984; cycle: 13; activity ID: 42; location: OFFSHORE; position: 26; safe-to-safe group: none; baseline duration: 3.000 h; weather/operational downtime: 0.000 h; elapsed duration: 3.000 h.
- 908: Scenario: P50; P50 representative hindcast year 1984; cycle: 13; activity ID: 43; location: OFFSHORE; position: 26; safe-to-safe group: none; baseline duration: 3.000 h; weather/operational downtime: 0.000 h; elapsed duration: 3.000 h.
- 909: Scenario: P50; P50 representative hindcast year 1984; cycle: 13; activity ID: 44; location: OFFSHORE; position: 26; safe-to-safe group: none; baseline duration: 2.000 h; weather/operational downtime: 0.000 h; elapsed duration: 2.000 h.
- 910: Scenario: P50; P50 representative hindcast year 1984; cycle: 13; activity ID: 45; location: OFFSHORE; position: n/a; safe-to-safe group: none; baseline duration: 5.200 h; weather/operational downtime: 0.000 h; elapsed duration: 5.250 h.

| ID | WBS | Task | Type | Duration | Start | Finish | Predecessors | Duration WDT [days] | Location | Activity ID | Position | Safe-to-safe group |
| --- | --- | --- | --- | --- | --- | --- | --- | --- | --- | --- | --- | --- |
| 911 | 14 | **Cycle 14 — Positions 27–28** |  | 123.9eh | 2030-07-21 22:30 | 2030-07-28 01:45 |  | 0.968750 |  |  |  |  |
| 912 | 14.1 | Port maneuvering | manual | 1eh | 2030-07-21 22:30 | 2030-07-21 23:30 | 910 | 0.000000 | OFFSHORE | 1 |  |  |
| 913 | 14.2 | Preload and jacking up at port | manual | 2eh | 2030-07-21 23:30 | 2030-07-22 01:30 | 912 | 0.000000 | OFFSHORE | 2 |  |  |
| 914 | 14.3 | Release crane, gangway etc and prep for lifting | manual | 3eh | 2030-07-22 01:30 | 2030-07-22 04:30 | 913 | 0.000000 | OFFSHORE | 3 |  |  |
| 915 | 14.4 | Load in/out WTG supplier equipment | manual | 1eh | 2030-07-22 04:30 | 2030-07-22 05:30 | 914 | 0.000000 | OFFSHORE | 4 |  |  |
| 916 | 14.5 | Loadout Nacelle #1 | manual | 2.25eh | 2030-07-22 05:30 | 2030-07-22 07:45 | 915 | 0.000000 | OFFSHORE | 5 |  |  |
| 917 | 14.6 | Loadout Tower #1 | manual | 2.25eh | 2030-07-22 07:45 | 2030-07-22 10:00 | 916 | 0.000000 | OFFSHORE | 6 |  |  |
| 918 | 14.7 | Loadout Blade 1 | manual | 1.5eh | 2030-07-22 10:00 | 2030-07-22 11:30 | 917 | 0.000000 | OFFSHORE | 7 |  |  |
| 919 | 14.8 | Loadout Blade 2 | manual | 1.5eh | 2030-07-22 11:30 | 2030-07-23 00:30 | 918 | 0.479167 | OFFSHORE | 8 |  |  |
| 920 | 14.9 | Loadout Blade 3 | manual | 1.5eh | 2030-07-23 00:30 | 2030-07-23 02:00 | 919 | 0.000000 | OFFSHORE | 9 |  |  |
| 921 | 14.10 | Load in/out WTG supplier equipment | manual | 1eh | 2030-07-23 02:00 | 2030-07-23 03:00 | 920 | 0.000000 | OFFSHORE | 10 |  |  |
| 922 | 14.11 | Loadout Nacelle #2 | manual | 2.25eh | 2030-07-23 03:00 | 2030-07-23 05:15 | 921 | 0.000000 | OFFSHORE | 11 |  |  |
| 923 | 14.12 | Loadout Tower #2 | manual | 2.25eh | 2030-07-23 05:15 | 2030-07-23 07:30 | 922 | 0.000000 | OFFSHORE | 12 |  |  |
| 924 | 14.13 | Loadout Blade 1 | manual | 1.5eh | 2030-07-23 07:30 | 2030-07-23 09:30 | 923 | 0.020833 | OFFSHORE | 13 |  |  |
| 925 | 14.14 | Loadout Blade 2 | manual | 1.5eh | 2030-07-23 09:30 | 2030-07-23 11:00 | 924 | 0.000000 | OFFSHORE | 14 |  |  |
| 926 | 14.15 | Loadout Blade 3 | manual | 1.5eh | 2030-07-23 11:00 | 2030-07-23 12:30 | 925 | 0.000000 | OFFSHORE | 15 |  |  |
| 927 | 14.16 | Secure of crane, gangway (at port)) | manual | 3eh | 2030-07-23 12:30 | 2030-07-23 15:30 | 926 | 0.000000 | OFFSHORE | 16 |  |  |
| 928 | 14.17 | Jacking down at port | manual | 2eh | 2030-07-23 15:30 | 2030-07-23 17:30 | 927 | 0.000000 | OFFSHORE | 17 |  |  |
| 929 | 14.18 | Port maneuvering | manual | 1eh | 2030-07-23 17:30 | 2030-07-23 18:30 | 928 | 0.000000 | OFFSHORE | 18 |  |  |
| 930 | 14.19 | Transit from port to site | manual | 5.2eh | 2030-07-23 18:30 | 2030-07-23 23:45 | 929 | 0.000000 | OFFSHORE | 19 |  |  |
| 931 | 14.20 | DP field check | manual | 0.5eh | 2030-07-23 23:45 | 2030-07-24 00:15 | 930 | 0.000000 | OFFSHORE | 20 |  |  |
| 932 | 14.21 | Transit to next foundation | manual | 1eh | 2030-07-24 00:15 | 2030-07-24 01:15 | 931 | 0.000000 | OFFSHORE | 21 | 27 |  |
| 933 | 14.22 | Positioning at WTG location | manual | 1eh | 2030-07-24 01:15 | 2030-07-24 02:15 | 932 | 0.000000 | OFFSHORE | 22 | 27 |  |
| 934 | 14.23 | Preload and jacking up at site | manual | 4eh | 2030-07-24 02:15 | 2030-07-24 06:15 | 933 | 0.000000 | OFFSHORE | 23 | 27 |  |
| 935 | 14.24 | Release crane, gangway and prep for lifting | manual | 3eh | 2030-07-24 06:15 | 2030-07-24 09:15 | 934 | 0.000000 | OFFSHORE | 24 | 27 |  |
| 936 | 14.25 | Remove TP cover and Preparation of TP | manual | 1eh | 2030-07-24 09:15 | 2030-07-24 10:15 | 935 | 0.000000 | OFFSHORE | 25 | 27 |  |
| 937 | 14.26 | Tower preparation, removal of seafastening bolts | manual | 2eh | 2030-07-24 10:15 | 2030-07-24 12:15 | 936 | 0.000000 | OFFSHORE | 26 | 27 |  |
| 938 | 14.27 | Tower rigging-up (attached lifting equipment) | manual | 1eh | 2030-07-24 12:15 | 2030-07-24 13:15 | 937 | 0.000000 | OFFSHORE | 27 | 27 | G1 |
| 939 | 14.28 | Tower Lifting (safe-to-safe) | manual | 3.5eh | 2030-07-24 13:15 | 2030-07-24 16:45 | 938 | 0.000000 | OFFSHORE | 28 | 27 | G1 |
| 940 | 14.29 | Tower derigging (remove lifting equipment) | manual | 0.5eh | 2030-07-24 16:45 | 2030-07-24 17:15 | 939 | 0.000000 | OFFSHORE | 29 | 27 | G1 |
| 941 | 14.30 | Nacelle preparation and rigging | manual | 0.5eh | 2030-07-24 17:15 | 2030-07-24 17:45 | 940 | 0.000000 | OFFSHORE | 30 | 27 | G2 |
| 942 | 14.31 | Nacelle Lifting (safe-to-safe) | manual | 2.25eh | 2030-07-24 17:45 | 2030-07-24 20:00 | 941 | 0.000000 | OFFSHORE | 31 | 27 | G2 |
| 943 | 14.32 | Nacelle derigging (remove lifting equipment) | manual | 0.5eh | 2030-07-24 20:00 | 2030-07-24 20:30 | 942 | 0.000000 | OFFSHORE | 32 | 27 | G2 |
| 944 | 14.33 | Blade yoke rigging and attachement to Blade #1 | manual | 0.5eh | 2030-07-24 20:30 | 2030-07-24 21:00 | 943 | 0.000000 | OFFSHORE | 33 | 27 | G3 |
| 945 | 14.34 | Blade #1 Lifting (safe-to-safe) | manual | 1.75eh | 2030-07-24 21:00 | 2030-07-24 22:45 | 944 | 0.000000 | OFFSHORE | 34 | 27 | G3 |
| 946 | 14.35 | Blade #1 completion work, re-locate blade yoke to next blade | manual | 1.5eh | 2030-07-24 22:45 | 2030-07-25 00:15 | 945 | 0.000000 | OFFSHORE | 35 | 27 | G3 |
| 947 | 14.36 | Blade #2 Lifting (safe-to-safe) | manual | 1.75eh | 2030-07-25 00:15 | 2030-07-25 03:45 | 946 | 0.072917 | OFFSHORE | 36 | 27 | G4 |
| 948 | 14.37 | Balde #2 completion work, re-locate blade yoke to next blade | manual | 1.5eh | 2030-07-25 03:45 | 2030-07-25 05:15 | 947 | 0.000000 | OFFSHORE | 37 | 27 | G4 |
| 949 | 14.38 | Blade #3 Lifting (safe-to-safe) | manual | 1.75eh | 2030-07-25 05:15 | 2030-07-25 07:00 | 948 | 0.000000 | OFFSHORE | 38 | 27 | G5 |
| 950 | 14.39 | Blade #3 completion work, blade yoke de-rigging | manual | 1.5eh | 2030-07-25 07:00 | 2030-07-25 08:30 | 949 | 0.000000 | OFFSHORE | 39 | 27 | G5 |
| 951 | 14.40 | Handling HSBM and lifting tools | manual | 1eh | 2030-07-25 08:30 | 2030-07-25 09:30 | 950 | 0.000000 | OFFSHORE | 40 | 27 |  |
| 952 | 14.41 | Lifting HSBM and lifting tools from Nacelle | manual | 1eh | 2030-07-25 09:30 | 2030-07-25 10:30 | 951 | 0.000000 | OFFSHORE | 41 | 27 |  |
| 953 | 14.42 | Turbine general completion works | manual | 3eh | 2030-07-25 10:30 | 2030-07-25 13:30 | 952 | 0.000000 | OFFSHORE | 42 | 27 |  |
| 954 | 14.43 | Secure of crane, gangway etc. Preparation for jacking down and sailing | manual | 3eh | 2030-07-25 13:30 | 2030-07-25 16:30 | 953 | 0.000000 | OFFSHORE | 43 | 27 |  |
| 955 | 14.44 | Jacking down at site | manual | 2eh | 2030-07-25 16:30 | 2030-07-25 18:30 | 954 | 0.000000 | OFFSHORE | 44 | 27 |  |
| 956 | 14.45 | Transit to next foundation | manual | 1eh | 2030-07-25 18:30 | 2030-07-25 19:30 | 955 | 0.000000 | OFFSHORE | 21 | 28 |  |
| 957 | 14.46 | Positioning at WTG location | manual | 1eh | 2030-07-25 19:30 | 2030-07-25 20:30 | 956 | 0.000000 | OFFSHORE | 22 | 28 |  |
| 958 | 14.47 | Preload and jacking up at site | manual | 4eh | 2030-07-25 20:30 | 2030-07-26 00:30 | 957 | 0.000000 | OFFSHORE | 23 | 28 |  |
| 959 | 14.48 | Release crane, gangway and prep for lifting | manual | 3eh | 2030-07-26 00:30 | 2030-07-26 03:30 | 958 | 0.000000 | OFFSHORE | 24 | 28 |  |
| 960 | 14.49 | Remove TP cover and Preparation of TP | manual | 1eh | 2030-07-26 03:30 | 2030-07-26 14:00 | 959 | 0.395833 | OFFSHORE | 25 | 28 |  |
| 961 | 14.50 | Tower preparation, removal of seafastening bolts | manual | 2eh | 2030-07-26 14:00 | 2030-07-26 16:00 | 960 | 0.000000 | OFFSHORE | 26 | 28 |  |
| 962 | 14.51 | Tower rigging-up (attached lifting equipment) | manual | 1eh | 2030-07-26 16:00 | 2030-07-26 17:00 | 961 | 0.000000 | OFFSHORE | 27 | 28 | G1 |
| 963 | 14.52 | Tower Lifting (safe-to-safe) | manual | 3.5eh | 2030-07-26 17:00 | 2030-07-26 20:30 | 962 | 0.000000 | OFFSHORE | 28 | 28 | G1 |
| 964 | 14.53 | Tower derigging (remove lifting equipment) | manual | 0.5eh | 2030-07-26 20:30 | 2030-07-26 21:00 | 963 | 0.000000 | OFFSHORE | 29 | 28 | G1 |
| 965 | 14.54 | Nacelle preparation and rigging | manual | 0.5eh | 2030-07-26 21:00 | 2030-07-26 21:30 | 964 | 0.000000 | OFFSHORE | 30 | 28 | G2 |
| 966 | 14.55 | Nacelle Lifting (safe-to-safe) | manual | 2.25eh | 2030-07-26 21:30 | 2030-07-26 23:45 | 965 | 0.000000 | OFFSHORE | 31 | 28 | G2 |
| 967 | 14.56 | Nacelle derigging (remove lifting equipment) | manual | 0.5eh | 2030-07-26 23:45 | 2030-07-27 00:15 | 966 | 0.000000 | OFFSHORE | 32 | 28 | G2 |
| 968 | 14.57 | Blade yoke rigging and attachement to Blade #1 | manual | 0.5eh | 2030-07-27 00:15 | 2030-07-27 00:45 | 967 | 0.000000 | OFFSHORE | 33 | 28 | G3 |
| 969 | 14.58 | Blade #1 Lifting (safe-to-safe) | manual | 1.75eh | 2030-07-27 00:45 | 2030-07-27 02:30 | 968 | 0.000000 | OFFSHORE | 34 | 28 | G3 |
| 970 | 14.59 | Blade #1 completion work, re-locate blade yoke to next blade | manual | 1.5eh | 2030-07-27 02:30 | 2030-07-27 04:00 | 969 | 0.000000 | OFFSHORE | 35 | 28 | G3 |
| 971 | 14.60 | Blade #2 Lifting (safe-to-safe) | manual | 1.75eh | 2030-07-27 04:00 | 2030-07-27 05:45 | 970 | 0.000000 | OFFSHORE | 36 | 28 | G4 |
| 972 | 14.61 | Balde #2 completion work, re-locate blade yoke to next blade | manual | 1.5eh | 2030-07-27 05:45 | 2030-07-27 07:15 | 971 | 0.000000 | OFFSHORE | 37 | 28 | G4 |
| 973 | 14.62 | Blade #3 Lifting (safe-to-safe) | manual | 1.75eh | 2030-07-27 07:15 | 2030-07-27 09:00 | 972 | 0.000000 | OFFSHORE | 38 | 28 | G5 |
| 974 | 14.63 | Blade #3 completion work, blade yoke de-rigging | manual | 1.5eh | 2030-07-27 09:00 | 2030-07-27 10:30 | 973 | 0.000000 | OFFSHORE | 39 | 28 | G5 |
| 975 | 14.64 | Handling HSBM and lifting tools | manual | 1eh | 2030-07-27 10:30 | 2030-07-27 11:30 | 974 | 0.000000 | OFFSHORE | 40 | 28 |  |
| 976 | 14.65 | Lifting HSBM and lifting tools from Nacelle | manual | 1eh | 2030-07-27 11:30 | 2030-07-27 12:30 | 975 | 0.000000 | OFFSHORE | 41 | 28 |  |
| 977 | 14.66 | Turbine general completion works | manual | 3eh | 2030-07-27 12:30 | 2030-07-27 15:30 | 976 | 0.000000 | OFFSHORE | 42 | 28 |  |
| 978 | 14.67 | Secure of crane, gangway etc. Preparation for jacking down and sailing | manual | 3eh | 2030-07-27 15:30 | 2030-07-27 18:30 | 977 | 0.000000 | OFFSHORE | 43 | 28 |  |
| 979 | 14.68 | Jacking down at site | manual | 2eh | 2030-07-27 18:30 | 2030-07-27 20:30 | 978 | 0.000000 | OFFSHORE | 44 | 28 |  |
| 980 | 14.69 | Transit from site to port | manual | 5.2eh | 2030-07-27 20:30 | 2030-07-28 01:45 | 979 | 0.000000 | OFFSHORE | 45 |  |  |

Notes:
- 911: P50 representative hindcast year 1984; cycle 14; baseline duration 5.163 days; downtime 0.969 days; elapsed duration 6.135 days.
- 912: Scenario: P50; P50 representative hindcast year 1984; cycle: 14; activity ID: 1; location: OFFSHORE; position: n/a; safe-to-safe group: none; baseline duration: 1.000 h; weather/operational downtime: 0.000 h; elapsed duration: 1.000 h.
- 913: Scenario: P50; P50 representative hindcast year 1984; cycle: 14; activity ID: 2; location: OFFSHORE; position: n/a; safe-to-safe group: none; baseline duration: 2.000 h; weather/operational downtime: 0.000 h; elapsed duration: 2.000 h.
- 914: Scenario: P50; P50 representative hindcast year 1984; cycle: 14; activity ID: 3; location: OFFSHORE; position: n/a; safe-to-safe group: none; baseline duration: 3.000 h; weather/operational downtime: 0.000 h; elapsed duration: 3.000 h.
- 915: Scenario: P50; P50 representative hindcast year 1984; cycle: 14; activity ID: 4; location: OFFSHORE; position: n/a; safe-to-safe group: none; baseline duration: 1.000 h; weather/operational downtime: 0.000 h; elapsed duration: 1.000 h.
- 916: Scenario: P50; P50 representative hindcast year 1984; cycle: 14; activity ID: 5; location: OFFSHORE; position: n/a; safe-to-safe group: none; baseline duration: 2.250 h; weather/operational downtime: 0.000 h; elapsed duration: 2.250 h.
- 917: Scenario: P50; P50 representative hindcast year 1984; cycle: 14; activity ID: 6; location: OFFSHORE; position: n/a; safe-to-safe group: none; baseline duration: 2.250 h; weather/operational downtime: 0.000 h; elapsed duration: 2.250 h.
- 918: Scenario: P50; P50 representative hindcast year 1984; cycle: 14; activity ID: 7; location: OFFSHORE; position: n/a; safe-to-safe group: none; baseline duration: 1.500 h; weather/operational downtime: 0.000 h; elapsed duration: 1.500 h.
- 919: Scenario: P50; P50 representative hindcast year 1984; cycle: 14; activity ID: 8; location: OFFSHORE; position: n/a; safe-to-safe group: none; baseline duration: 1.500 h; weather/operational downtime: 11.500 h; elapsed duration: 13.000 h.
- 920: Scenario: P50; P50 representative hindcast year 1984; cycle: 14; activity ID: 9; location: OFFSHORE; position: n/a; safe-to-safe group: none; baseline duration: 1.500 h; weather/operational downtime: 0.000 h; elapsed duration: 1.500 h.
- 921: Scenario: P50; P50 representative hindcast year 1984; cycle: 14; activity ID: 10; location: OFFSHORE; position: n/a; safe-to-safe group: none; baseline duration: 1.000 h; weather/operational downtime: 0.000 h; elapsed duration: 1.000 h.
- 922: Scenario: P50; P50 representative hindcast year 1984; cycle: 14; activity ID: 11; location: OFFSHORE; position: n/a; safe-to-safe group: none; baseline duration: 2.250 h; weather/operational downtime: 0.000 h; elapsed duration: 2.250 h.
- 923: Scenario: P50; P50 representative hindcast year 1984; cycle: 14; activity ID: 12; location: OFFSHORE; position: n/a; safe-to-safe group: none; baseline duration: 2.250 h; weather/operational downtime: 0.000 h; elapsed duration: 2.250 h.
- 924: Scenario: P50; P50 representative hindcast year 1984; cycle: 14; activity ID: 13; location: OFFSHORE; position: n/a; safe-to-safe group: none; baseline duration: 1.500 h; weather/operational downtime: 0.500 h; elapsed duration: 2.000 h.
- 925: Scenario: P50; P50 representative hindcast year 1984; cycle: 14; activity ID: 14; location: OFFSHORE; position: n/a; safe-to-safe group: none; baseline duration: 1.500 h; weather/operational downtime: 0.000 h; elapsed duration: 1.500 h.
- 926: Scenario: P50; P50 representative hindcast year 1984; cycle: 14; activity ID: 15; location: OFFSHORE; position: n/a; safe-to-safe group: none; baseline duration: 1.500 h; weather/operational downtime: 0.000 h; elapsed duration: 1.500 h.
- 927: Scenario: P50; P50 representative hindcast year 1984; cycle: 14; activity ID: 16; location: OFFSHORE; position: n/a; safe-to-safe group: none; baseline duration: 3.000 h; weather/operational downtime: 0.000 h; elapsed duration: 3.000 h.
- 928: Scenario: P50; P50 representative hindcast year 1984; cycle: 14; activity ID: 17; location: OFFSHORE; position: n/a; safe-to-safe group: none; baseline duration: 2.000 h; weather/operational downtime: 0.000 h; elapsed duration: 2.000 h.
- 929: Scenario: P50; P50 representative hindcast year 1984; cycle: 14; activity ID: 18; location: OFFSHORE; position: n/a; safe-to-safe group: none; baseline duration: 1.000 h; weather/operational downtime: 0.000 h; elapsed duration: 1.000 h.
- 930: Scenario: P50; P50 representative hindcast year 1984; cycle: 14; activity ID: 19; location: OFFSHORE; position: n/a; safe-to-safe group: none; baseline duration: 5.200 h; weather/operational downtime: 0.000 h; elapsed duration: 5.250 h.
- 931: Scenario: P50; P50 representative hindcast year 1984; cycle: 14; activity ID: 20; location: OFFSHORE; position: n/a; safe-to-safe group: none; baseline duration: 0.500 h; weather/operational downtime: 0.000 h; elapsed duration: 0.500 h.
- 932: Scenario: P50; P50 representative hindcast year 1984; cycle: 14; activity ID: 21; location: OFFSHORE; position: 27; safe-to-safe group: none; baseline duration: 1.000 h; weather/operational downtime: 0.000 h; elapsed duration: 1.000 h.
- 933: Scenario: P50; P50 representative hindcast year 1984; cycle: 14; activity ID: 22; location: OFFSHORE; position: 27; safe-to-safe group: none; baseline duration: 1.000 h; weather/operational downtime: 0.000 h; elapsed duration: 1.000 h.
- 934: Scenario: P50; P50 representative hindcast year 1984; cycle: 14; activity ID: 23; location: OFFSHORE; position: 27; safe-to-safe group: none; baseline duration: 4.000 h; weather/operational downtime: 0.000 h; elapsed duration: 4.000 h.
- 935: Scenario: P50; P50 representative hindcast year 1984; cycle: 14; activity ID: 24; location: OFFSHORE; position: 27; safe-to-safe group: none; baseline duration: 3.000 h; weather/operational downtime: 0.000 h; elapsed duration: 3.000 h.
- 936: Scenario: P50; P50 representative hindcast year 1984; cycle: 14; activity ID: 25; location: OFFSHORE; position: 27; safe-to-safe group: none; baseline duration: 1.000 h; weather/operational downtime: 0.000 h; elapsed duration: 1.000 h.
- 937: Scenario: P50; P50 representative hindcast year 1984; cycle: 14; activity ID: 26; location: OFFSHORE; position: 27; safe-to-safe group: none; baseline duration: 2.000 h; weather/operational downtime: 0.000 h; elapsed duration: 2.000 h.
- 938: Scenario: P50; P50 representative hindcast year 1984; cycle: 14; activity ID: 27; location: OFFSHORE; position: 27; safe-to-safe group: G1; baseline duration: 1.000 h; weather/operational downtime: 0.000 h; elapsed duration: 1.000 h.
- 939: Scenario: P50; P50 representative hindcast year 1984; cycle: 14; activity ID: 28; location: OFFSHORE; position: 27; safe-to-safe group: G1; baseline duration: 3.500 h; weather/operational downtime: 0.000 h; elapsed duration: 3.500 h.
- 940: Scenario: P50; P50 representative hindcast year 1984; cycle: 14; activity ID: 29; location: OFFSHORE; position: 27; safe-to-safe group: G1; baseline duration: 0.500 h; weather/operational downtime: 0.000 h; elapsed duration: 0.500 h.
- 941: Scenario: P50; P50 representative hindcast year 1984; cycle: 14; activity ID: 30; location: OFFSHORE; position: 27; safe-to-safe group: G2; baseline duration: 0.500 h; weather/operational downtime: 0.000 h; elapsed duration: 0.500 h.
- 942: Scenario: P50; P50 representative hindcast year 1984; cycle: 14; activity ID: 31; location: OFFSHORE; position: 27; safe-to-safe group: G2; baseline duration: 2.250 h; weather/operational downtime: 0.000 h; elapsed duration: 2.250 h.
- 943: Scenario: P50; P50 representative hindcast year 1984; cycle: 14; activity ID: 32; location: OFFSHORE; position: 27; safe-to-safe group: G2; baseline duration: 0.500 h; weather/operational downtime: 0.000 h; elapsed duration: 0.500 h.
- 944: Scenario: P50; P50 representative hindcast year 1984; cycle: 14; activity ID: 33; location: OFFSHORE; position: 27; safe-to-safe group: G3; baseline duration: 0.500 h; weather/operational downtime: 0.000 h; elapsed duration: 0.500 h.
- 945: Scenario: P50; P50 representative hindcast year 1984; cycle: 14; activity ID: 34; location: OFFSHORE; position: 27; safe-to-safe group: G3; baseline duration: 1.750 h; weather/operational downtime: 0.000 h; elapsed duration: 1.750 h.
- 946: Scenario: P50; P50 representative hindcast year 1984; cycle: 14; activity ID: 35; location: OFFSHORE; position: 27; safe-to-safe group: G3; baseline duration: 1.500 h; weather/operational downtime: 0.000 h; elapsed duration: 1.500 h.
- 947: Scenario: P50; P50 representative hindcast year 1984; cycle: 14; activity ID: 36; location: OFFSHORE; position: 27; safe-to-safe group: G4; baseline duration: 1.750 h; weather/operational downtime: 1.750 h; elapsed duration: 3.500 h.
- 948: Scenario: P50; P50 representative hindcast year 1984; cycle: 14; activity ID: 37; location: OFFSHORE; position: 27; safe-to-safe group: G4; baseline duration: 1.500 h; weather/operational downtime: 0.000 h; elapsed duration: 1.500 h.
- 949: Scenario: P50; P50 representative hindcast year 1984; cycle: 14; activity ID: 38; location: OFFSHORE; position: 27; safe-to-safe group: G5; baseline duration: 1.750 h; weather/operational downtime: 0.000 h; elapsed duration: 1.750 h.
- 950: Scenario: P50; P50 representative hindcast year 1984; cycle: 14; activity ID: 39; location: OFFSHORE; position: 27; safe-to-safe group: G5; baseline duration: 1.500 h; weather/operational downtime: 0.000 h; elapsed duration: 1.500 h.
- 951: Scenario: P50; P50 representative hindcast year 1984; cycle: 14; activity ID: 40; location: OFFSHORE; position: 27; safe-to-safe group: none; baseline duration: 1.000 h; weather/operational downtime: 0.000 h; elapsed duration: 1.000 h.
- 952: Scenario: P50; P50 representative hindcast year 1984; cycle: 14; activity ID: 41; location: OFFSHORE; position: 27; safe-to-safe group: none; baseline duration: 1.000 h; weather/operational downtime: 0.000 h; elapsed duration: 1.000 h.
- 953: Scenario: P50; P50 representative hindcast year 1984; cycle: 14; activity ID: 42; location: OFFSHORE; position: 27; safe-to-safe group: none; baseline duration: 3.000 h; weather/operational downtime: 0.000 h; elapsed duration: 3.000 h.
- 954: Scenario: P50; P50 representative hindcast year 1984; cycle: 14; activity ID: 43; location: OFFSHORE; position: 27; safe-to-safe group: none; baseline duration: 3.000 h; weather/operational downtime: 0.000 h; elapsed duration: 3.000 h.
- 955: Scenario: P50; P50 representative hindcast year 1984; cycle: 14; activity ID: 44; location: OFFSHORE; position: 27; safe-to-safe group: none; baseline duration: 2.000 h; weather/operational downtime: 0.000 h; elapsed duration: 2.000 h.
- 956: Scenario: P50; P50 representative hindcast year 1984; cycle: 14; activity ID: 21; location: OFFSHORE; position: 28; safe-to-safe group: none; baseline duration: 1.000 h; weather/operational downtime: 0.000 h; elapsed duration: 1.000 h.
- 957: Scenario: P50; P50 representative hindcast year 1984; cycle: 14; activity ID: 22; location: OFFSHORE; position: 28; safe-to-safe group: none; baseline duration: 1.000 h; weather/operational downtime: 0.000 h; elapsed duration: 1.000 h.
- 958: Scenario: P50; P50 representative hindcast year 1984; cycle: 14; activity ID: 23; location: OFFSHORE; position: 28; safe-to-safe group: none; baseline duration: 4.000 h; weather/operational downtime: 0.000 h; elapsed duration: 4.000 h.
- 959: Scenario: P50; P50 representative hindcast year 1984; cycle: 14; activity ID: 24; location: OFFSHORE; position: 28; safe-to-safe group: none; baseline duration: 3.000 h; weather/operational downtime: 0.000 h; elapsed duration: 3.000 h.
- 960: Scenario: P50; P50 representative hindcast year 1984; cycle: 14; activity ID: 25; location: OFFSHORE; position: 28; safe-to-safe group: none; baseline duration: 1.000 h; weather/operational downtime: 9.500 h; elapsed duration: 10.500 h.
- 961: Scenario: P50; P50 representative hindcast year 1984; cycle: 14; activity ID: 26; location: OFFSHORE; position: 28; safe-to-safe group: none; baseline duration: 2.000 h; weather/operational downtime: 0.000 h; elapsed duration: 2.000 h.
- 962: Scenario: P50; P50 representative hindcast year 1984; cycle: 14; activity ID: 27; location: OFFSHORE; position: 28; safe-to-safe group: G1; baseline duration: 1.000 h; weather/operational downtime: 0.000 h; elapsed duration: 1.000 h.
- 963: Scenario: P50; P50 representative hindcast year 1984; cycle: 14; activity ID: 28; location: OFFSHORE; position: 28; safe-to-safe group: G1; baseline duration: 3.500 h; weather/operational downtime: 0.000 h; elapsed duration: 3.500 h.
- 964: Scenario: P50; P50 representative hindcast year 1984; cycle: 14; activity ID: 29; location: OFFSHORE; position: 28; safe-to-safe group: G1; baseline duration: 0.500 h; weather/operational downtime: 0.000 h; elapsed duration: 0.500 h.
- 965: Scenario: P50; P50 representative hindcast year 1984; cycle: 14; activity ID: 30; location: OFFSHORE; position: 28; safe-to-safe group: G2; baseline duration: 0.500 h; weather/operational downtime: 0.000 h; elapsed duration: 0.500 h.
- 966: Scenario: P50; P50 representative hindcast year 1984; cycle: 14; activity ID: 31; location: OFFSHORE; position: 28; safe-to-safe group: G2; baseline duration: 2.250 h; weather/operational downtime: 0.000 h; elapsed duration: 2.250 h.
- 967: Scenario: P50; P50 representative hindcast year 1984; cycle: 14; activity ID: 32; location: OFFSHORE; position: 28; safe-to-safe group: G2; baseline duration: 0.500 h; weather/operational downtime: 0.000 h; elapsed duration: 0.500 h.
- 968: Scenario: P50; P50 representative hindcast year 1984; cycle: 14; activity ID: 33; location: OFFSHORE; position: 28; safe-to-safe group: G3; baseline duration: 0.500 h; weather/operational downtime: 0.000 h; elapsed duration: 0.500 h.
- 969: Scenario: P50; P50 representative hindcast year 1984; cycle: 14; activity ID: 34; location: OFFSHORE; position: 28; safe-to-safe group: G3; baseline duration: 1.750 h; weather/operational downtime: 0.000 h; elapsed duration: 1.750 h.
- 970: Scenario: P50; P50 representative hindcast year 1984; cycle: 14; activity ID: 35; location: OFFSHORE; position: 28; safe-to-safe group: G3; baseline duration: 1.500 h; weather/operational downtime: 0.000 h; elapsed duration: 1.500 h.
- 971: Scenario: P50; P50 representative hindcast year 1984; cycle: 14; activity ID: 36; location: OFFSHORE; position: 28; safe-to-safe group: G4; baseline duration: 1.750 h; weather/operational downtime: 0.000 h; elapsed duration: 1.750 h.
- 972: Scenario: P50; P50 representative hindcast year 1984; cycle: 14; activity ID: 37; location: OFFSHORE; position: 28; safe-to-safe group: G4; baseline duration: 1.500 h; weather/operational downtime: 0.000 h; elapsed duration: 1.500 h.
- 973: Scenario: P50; P50 representative hindcast year 1984; cycle: 14; activity ID: 38; location: OFFSHORE; position: 28; safe-to-safe group: G5; baseline duration: 1.750 h; weather/operational downtime: 0.000 h; elapsed duration: 1.750 h.
- 974: Scenario: P50; P50 representative hindcast year 1984; cycle: 14; activity ID: 39; location: OFFSHORE; position: 28; safe-to-safe group: G5; baseline duration: 1.500 h; weather/operational downtime: 0.000 h; elapsed duration: 1.500 h.
- 975: Scenario: P50; P50 representative hindcast year 1984; cycle: 14; activity ID: 40; location: OFFSHORE; position: 28; safe-to-safe group: none; baseline duration: 1.000 h; weather/operational downtime: 0.000 h; elapsed duration: 1.000 h.
- 976: Scenario: P50; P50 representative hindcast year 1984; cycle: 14; activity ID: 41; location: OFFSHORE; position: 28; safe-to-safe group: none; baseline duration: 1.000 h; weather/operational downtime: 0.000 h; elapsed duration: 1.000 h.
- 977: Scenario: P50; P50 representative hindcast year 1984; cycle: 14; activity ID: 42; location: OFFSHORE; position: 28; safe-to-safe group: none; baseline duration: 3.000 h; weather/operational downtime: 0.000 h; elapsed duration: 3.000 h.
- 978: Scenario: P50; P50 representative hindcast year 1984; cycle: 14; activity ID: 43; location: OFFSHORE; position: 28; safe-to-safe group: none; baseline duration: 3.000 h; weather/operational downtime: 0.000 h; elapsed duration: 3.000 h.
- 979: Scenario: P50; P50 representative hindcast year 1984; cycle: 14; activity ID: 44; location: OFFSHORE; position: 28; safe-to-safe group: none; baseline duration: 2.000 h; weather/operational downtime: 0.000 h; elapsed duration: 2.000 h.
- 980: Scenario: P50; P50 representative hindcast year 1984; cycle: 14; activity ID: 45; location: OFFSHORE; position: n/a; safe-to-safe group: none; baseline duration: 5.200 h; weather/operational downtime: 0.000 h; elapsed duration: 5.250 h.

| ID | WBS | Task | Type | Duration | Start | Finish | Predecessors | Duration WDT [days] | Location | Activity ID | Position | Safe-to-safe group |
| --- | --- | --- | --- | --- | --- | --- | --- | --- | --- | --- | --- | --- |
| 981 | 15 | **Cycle 15 — Positions 29–30** |  | 123.9eh | 2030-07-28 01:45 | 2030-08-02 20:45 |  | 0.625000 |  |  |  |  |
| 982 | 15.1 | Port maneuvering | manual | 1eh | 2030-07-28 01:45 | 2030-07-28 02:45 | 980 | 0.000000 | OFFSHORE | 1 |  |  |
| 983 | 15.2 | Preload and jacking up at port | manual | 2eh | 2030-07-28 02:45 | 2030-07-28 04:45 | 982 | 0.000000 | OFFSHORE | 2 |  |  |
| 984 | 15.3 | Release crane, gangway etc and prep for lifting | manual | 3eh | 2030-07-28 04:45 | 2030-07-28 07:45 | 983 | 0.000000 | OFFSHORE | 3 |  |  |
| 985 | 15.4 | Load in/out WTG supplier equipment | manual | 1eh | 2030-07-28 07:45 | 2030-07-28 08:45 | 984 | 0.000000 | OFFSHORE | 4 |  |  |
| 986 | 15.5 | Loadout Nacelle #1 | manual | 2.25eh | 2030-07-28 08:45 | 2030-07-28 11:00 | 985 | 0.000000 | OFFSHORE | 5 |  |  |
| 987 | 15.6 | Loadout Tower #1 | manual | 2.25eh | 2030-07-28 11:00 | 2030-07-28 13:15 | 986 | 0.000000 | OFFSHORE | 6 |  |  |
| 988 | 15.7 | Loadout Blade 1 | manual | 1.5eh | 2030-07-28 13:15 | 2030-07-28 14:45 | 987 | 0.000000 | OFFSHORE | 7 |  |  |
| 989 | 15.8 | Loadout Blade 2 | manual | 1.5eh | 2030-07-28 14:45 | 2030-07-28 16:15 | 988 | 0.000000 | OFFSHORE | 8 |  |  |
| 990 | 15.9 | Loadout Blade 3 | manual | 1.5eh | 2030-07-28 16:15 | 2030-07-28 17:45 | 989 | 0.000000 | OFFSHORE | 9 |  |  |
| 991 | 15.10 | Load in/out WTG supplier equipment | manual | 1eh | 2030-07-28 17:45 | 2030-07-28 18:45 | 990 | 0.000000 | OFFSHORE | 10 |  |  |
| 992 | 15.11 | Loadout Nacelle #2 | manual | 2.25eh | 2030-07-28 18:45 | 2030-07-28 21:00 | 991 | 0.000000 | OFFSHORE | 11 |  |  |
| 993 | 15.12 | Loadout Tower #2 | manual | 2.25eh | 2030-07-28 21:00 | 2030-07-28 23:15 | 992 | 0.000000 | OFFSHORE | 12 |  |  |
| 994 | 15.13 | Loadout Blade 1 | manual | 1.5eh | 2030-07-28 23:15 | 2030-07-29 00:45 | 993 | 0.000000 | OFFSHORE | 13 |  |  |
| 995 | 15.14 | Loadout Blade 2 | manual | 1.5eh | 2030-07-29 00:45 | 2030-07-29 02:15 | 994 | 0.000000 | OFFSHORE | 14 |  |  |
| 996 | 15.15 | Loadout Blade 3 | manual | 1.5eh | 2030-07-29 02:15 | 2030-07-29 03:45 | 995 | 0.000000 | OFFSHORE | 15 |  |  |
| 997 | 15.16 | Secure of crane, gangway (at port)) | manual | 3eh | 2030-07-29 03:45 | 2030-07-29 06:45 | 996 | 0.000000 | OFFSHORE | 16 |  |  |
| 998 | 15.17 | Jacking down at port | manual | 2eh | 2030-07-29 06:45 | 2030-07-29 08:45 | 997 | 0.000000 | OFFSHORE | 17 |  |  |
| 999 | 15.18 | Port maneuvering | manual | 1eh | 2030-07-29 08:45 | 2030-07-29 09:45 | 998 | 0.000000 | OFFSHORE | 18 |  |  |
| 1000 | 15.19 | Transit from port to site | manual | 5.2eh | 2030-07-29 09:45 | 2030-07-29 15:00 | 999 | 0.000000 | OFFSHORE | 19 |  |  |
| 1001 | 15.20 | DP field check | manual | 0.5eh | 2030-07-29 15:00 | 2030-07-29 15:30 | 1000 | 0.000000 | OFFSHORE | 20 |  |  |
| 1002 | 15.21 | Transit to next foundation | manual | 1eh | 2030-07-29 15:30 | 2030-07-29 16:30 | 1001 | 0.000000 | OFFSHORE | 21 | 29 |  |
| 1003 | 15.22 | Positioning at WTG location | manual | 1eh | 2030-07-29 16:30 | 2030-07-29 17:30 | 1002 | 0.000000 | OFFSHORE | 22 | 29 |  |
| 1004 | 15.23 | Preload and jacking up at site | manual | 4eh | 2030-07-29 17:30 | 2030-07-29 21:30 | 1003 | 0.000000 | OFFSHORE | 23 | 29 |  |
| 1005 | 15.24 | Release crane, gangway and prep for lifting | manual | 3eh | 2030-07-29 21:30 | 2030-07-30 00:30 | 1004 | 0.000000 | OFFSHORE | 24 | 29 |  |
| 1006 | 15.25 | Remove TP cover and Preparation of TP | manual | 1eh | 2030-07-30 00:30 | 2030-07-30 01:30 | 1005 | 0.000000 | OFFSHORE | 25 | 29 |  |
| 1007 | 15.26 | Tower preparation, removal of seafastening bolts | manual | 2eh | 2030-07-30 01:30 | 2030-07-30 03:30 | 1006 | 0.000000 | OFFSHORE | 26 | 29 |  |
| 1008 | 15.27 | Tower rigging-up (attached lifting equipment) | manual | 1eh | 2030-07-30 03:30 | 2030-07-30 04:30 | 1007 | 0.000000 | OFFSHORE | 27 | 29 | G1 |
| 1009 | 15.28 | Tower Lifting (safe-to-safe) | manual | 3.5eh | 2030-07-30 04:30 | 2030-07-30 08:00 | 1008 | 0.000000 | OFFSHORE | 28 | 29 | G1 |
| 1010 | 15.29 | Tower derigging (remove lifting equipment) | manual | 0.5eh | 2030-07-30 08:00 | 2030-07-30 08:30 | 1009 | 0.000000 | OFFSHORE | 29 | 29 | G1 |
| 1011 | 15.30 | Nacelle preparation and rigging | manual | 0.5eh | 2030-07-30 08:30 | 2030-07-30 09:00 | 1010 | 0.000000 | OFFSHORE | 30 | 29 | G2 |
| 1012 | 15.31 | Nacelle Lifting (safe-to-safe) | manual | 2.25eh | 2030-07-30 09:00 | 2030-07-30 11:15 | 1011 | 0.000000 | OFFSHORE | 31 | 29 | G2 |
| 1013 | 15.32 | Nacelle derigging (remove lifting equipment) | manual | 0.5eh | 2030-07-30 11:15 | 2030-07-30 11:45 | 1012 | 0.000000 | OFFSHORE | 32 | 29 | G2 |
| 1014 | 15.33 | Blade yoke rigging and attachement to Blade #1 | manual | 0.5eh | 2030-07-30 11:45 | 2030-07-30 12:15 | 1013 | 0.000000 | OFFSHORE | 33 | 29 | G3 |
| 1015 | 15.34 | Blade #1 Lifting (safe-to-safe) | manual | 1.75eh | 2030-07-30 12:15 | 2030-07-30 14:00 | 1014 | 0.000000 | OFFSHORE | 34 | 29 | G3 |
| 1016 | 15.35 | Blade #1 completion work, re-locate blade yoke to next blade | manual | 1.5eh | 2030-07-30 14:00 | 2030-07-30 15:30 | 1015 | 0.000000 | OFFSHORE | 35 | 29 | G3 |
| 1017 | 15.36 | Blade #2 Lifting (safe-to-safe) | manual | 1.75eh | 2030-07-30 15:30 | 2030-07-30 17:15 | 1016 | 0.000000 | OFFSHORE | 36 | 29 | G4 |
| 1018 | 15.37 | Balde #2 completion work, re-locate blade yoke to next blade | manual | 1.5eh | 2030-07-30 17:15 | 2030-07-30 18:45 | 1017 | 0.000000 | OFFSHORE | 37 | 29 | G4 |
| 1019 | 15.38 | Blade #3 Lifting (safe-to-safe) | manual | 1.75eh | 2030-07-30 18:45 | 2030-07-31 02:45 | 1018 | 0.260417 | OFFSHORE | 38 | 29 | G5 |
| 1020 | 15.39 | Blade #3 completion work, blade yoke de-rigging | manual | 1.5eh | 2030-07-31 02:45 | 2030-07-31 04:15 | 1019 | 0.000000 | OFFSHORE | 39 | 29 | G5 |
| 1021 | 15.40 | Handling HSBM and lifting tools | manual | 1eh | 2030-07-31 04:15 | 2030-07-31 05:15 | 1020 | 0.000000 | OFFSHORE | 40 | 29 |  |
| 1022 | 15.41 | Lifting HSBM and lifting tools from Nacelle | manual | 1eh | 2030-07-31 05:15 | 2030-07-31 06:15 | 1021 | 0.000000 | OFFSHORE | 41 | 29 |  |
| 1023 | 15.42 | Turbine general completion works | manual | 3eh | 2030-07-31 06:15 | 2030-07-31 09:15 | 1022 | 0.000000 | OFFSHORE | 42 | 29 |  |
| 1024 | 15.43 | Secure of crane, gangway etc. Preparation for jacking down and sailing | manual | 3eh | 2030-07-31 09:15 | 2030-07-31 12:15 | 1023 | 0.000000 | OFFSHORE | 43 | 29 |  |
| 1025 | 15.44 | Jacking down at site | manual | 2eh | 2030-07-31 12:15 | 2030-07-31 23:00 | 1024 | 0.364583 | OFFSHORE | 44 | 29 |  |
| 1026 | 15.45 | Transit to next foundation | manual | 1eh | 2030-07-31 23:00 | 2030-08-01 00:00 | 1025 | 0.000000 | OFFSHORE | 21 | 30 |  |
| 1027 | 15.46 | Positioning at WTG location | manual | 1eh | 2030-08-01 00:00 | 2030-08-01 01:00 | 1026 | 0.000000 | OFFSHORE | 22 | 30 |  |
| 1028 | 15.47 | Preload and jacking up at site | manual | 4eh | 2030-08-01 01:00 | 2030-08-01 05:00 | 1027 | 0.000000 | OFFSHORE | 23 | 30 |  |
| 1029 | 15.48 | Release crane, gangway and prep for lifting | manual | 3eh | 2030-08-01 05:00 | 2030-08-01 08:00 | 1028 | 0.000000 | OFFSHORE | 24 | 30 |  |
| 1030 | 15.49 | Remove TP cover and Preparation of TP | manual | 1eh | 2030-08-01 08:00 | 2030-08-01 09:00 | 1029 | 0.000000 | OFFSHORE | 25 | 30 |  |
| 1031 | 15.50 | Tower preparation, removal of seafastening bolts | manual | 2eh | 2030-08-01 09:00 | 2030-08-01 11:00 | 1030 | 0.000000 | OFFSHORE | 26 | 30 |  |
| 1032 | 15.51 | Tower rigging-up (attached lifting equipment) | manual | 1eh | 2030-08-01 11:00 | 2030-08-01 12:00 | 1031 | 0.000000 | OFFSHORE | 27 | 30 | G1 |
| 1033 | 15.52 | Tower Lifting (safe-to-safe) | manual | 3.5eh | 2030-08-01 12:00 | 2030-08-01 15:30 | 1032 | 0.000000 | OFFSHORE | 28 | 30 | G1 |
| 1034 | 15.53 | Tower derigging (remove lifting equipment) | manual | 0.5eh | 2030-08-01 15:30 | 2030-08-01 16:00 | 1033 | 0.000000 | OFFSHORE | 29 | 30 | G1 |
| 1035 | 15.54 | Nacelle preparation and rigging | manual | 0.5eh | 2030-08-01 16:00 | 2030-08-01 16:30 | 1034 | 0.000000 | OFFSHORE | 30 | 30 | G2 |
| 1036 | 15.55 | Nacelle Lifting (safe-to-safe) | manual | 2.25eh | 2030-08-01 16:30 | 2030-08-01 18:45 | 1035 | 0.000000 | OFFSHORE | 31 | 30 | G2 |
| 1037 | 15.56 | Nacelle derigging (remove lifting equipment) | manual | 0.5eh | 2030-08-01 18:45 | 2030-08-01 19:15 | 1036 | 0.000000 | OFFSHORE | 32 | 30 | G2 |
| 1038 | 15.57 | Blade yoke rigging and attachement to Blade #1 | manual | 0.5eh | 2030-08-01 19:15 | 2030-08-01 19:45 | 1037 | 0.000000 | OFFSHORE | 33 | 30 | G3 |
| 1039 | 15.58 | Blade #1 Lifting (safe-to-safe) | manual | 1.75eh | 2030-08-01 19:45 | 2030-08-01 21:30 | 1038 | 0.000000 | OFFSHORE | 34 | 30 | G3 |
| 1040 | 15.59 | Blade #1 completion work, re-locate blade yoke to next blade | manual | 1.5eh | 2030-08-01 21:30 | 2030-08-01 23:00 | 1039 | 0.000000 | OFFSHORE | 35 | 30 | G3 |
| 1041 | 15.60 | Blade #2 Lifting (safe-to-safe) | manual | 1.75eh | 2030-08-01 23:00 | 2030-08-02 00:45 | 1040 | 0.000000 | OFFSHORE | 36 | 30 | G4 |
| 1042 | 15.61 | Balde #2 completion work, re-locate blade yoke to next blade | manual | 1.5eh | 2030-08-02 00:45 | 2030-08-02 02:15 | 1041 | 0.000000 | OFFSHORE | 37 | 30 | G4 |
| 1043 | 15.62 | Blade #3 Lifting (safe-to-safe) | manual | 1.75eh | 2030-08-02 02:15 | 2030-08-02 04:00 | 1042 | 0.000000 | OFFSHORE | 38 | 30 | G5 |
| 1044 | 15.63 | Blade #3 completion work, blade yoke de-rigging | manual | 1.5eh | 2030-08-02 04:00 | 2030-08-02 05:30 | 1043 | 0.000000 | OFFSHORE | 39 | 30 | G5 |
| 1045 | 15.64 | Handling HSBM and lifting tools | manual | 1eh | 2030-08-02 05:30 | 2030-08-02 06:30 | 1044 | 0.000000 | OFFSHORE | 40 | 30 |  |
| 1046 | 15.65 | Lifting HSBM and lifting tools from Nacelle | manual | 1eh | 2030-08-02 06:30 | 2030-08-02 07:30 | 1045 | 0.000000 | OFFSHORE | 41 | 30 |  |
| 1047 | 15.66 | Turbine general completion works | manual | 3eh | 2030-08-02 07:30 | 2030-08-02 10:30 | 1046 | 0.000000 | OFFSHORE | 42 | 30 |  |
| 1048 | 15.67 | Secure of crane, gangway etc. Preparation for jacking down and sailing | manual | 3eh | 2030-08-02 10:30 | 2030-08-02 13:30 | 1047 | 0.000000 | OFFSHORE | 43 | 30 |  |
| 1049 | 15.68 | Jacking down at site | manual | 2eh | 2030-08-02 13:30 | 2030-08-02 15:30 | 1048 | 0.000000 | OFFSHORE | 44 | 30 |  |
| 1050 | 15.69 | Transit from site to port | manual | 5.2eh | 2030-08-02 15:30 | 2030-08-02 20:45 | 1049 | 0.000000 | OFFSHORE | 45 |  |  |

Notes:
- 981: P50 representative hindcast year 1984; cycle 15; baseline duration 5.163 days; downtime 0.625 days; elapsed duration 5.792 days.
- 982: Scenario: P50; P50 representative hindcast year 1984; cycle: 15; activity ID: 1; location: OFFSHORE; position: n/a; safe-to-safe group: none; baseline duration: 1.000 h; weather/operational downtime: 0.000 h; elapsed duration: 1.000 h.
- 983: Scenario: P50; P50 representative hindcast year 1984; cycle: 15; activity ID: 2; location: OFFSHORE; position: n/a; safe-to-safe group: none; baseline duration: 2.000 h; weather/operational downtime: 0.000 h; elapsed duration: 2.000 h.
- 984: Scenario: P50; P50 representative hindcast year 1984; cycle: 15; activity ID: 3; location: OFFSHORE; position: n/a; safe-to-safe group: none; baseline duration: 3.000 h; weather/operational downtime: 0.000 h; elapsed duration: 3.000 h.
- 985: Scenario: P50; P50 representative hindcast year 1984; cycle: 15; activity ID: 4; location: OFFSHORE; position: n/a; safe-to-safe group: none; baseline duration: 1.000 h; weather/operational downtime: 0.000 h; elapsed duration: 1.000 h.
- 986: Scenario: P50; P50 representative hindcast year 1984; cycle: 15; activity ID: 5; location: OFFSHORE; position: n/a; safe-to-safe group: none; baseline duration: 2.250 h; weather/operational downtime: 0.000 h; elapsed duration: 2.250 h.
- 987: Scenario: P50; P50 representative hindcast year 1984; cycle: 15; activity ID: 6; location: OFFSHORE; position: n/a; safe-to-safe group: none; baseline duration: 2.250 h; weather/operational downtime: 0.000 h; elapsed duration: 2.250 h.
- 988: Scenario: P50; P50 representative hindcast year 1984; cycle: 15; activity ID: 7; location: OFFSHORE; position: n/a; safe-to-safe group: none; baseline duration: 1.500 h; weather/operational downtime: 0.000 h; elapsed duration: 1.500 h.
- 989: Scenario: P50; P50 representative hindcast year 1984; cycle: 15; activity ID: 8; location: OFFSHORE; position: n/a; safe-to-safe group: none; baseline duration: 1.500 h; weather/operational downtime: 0.000 h; elapsed duration: 1.500 h.
- 990: Scenario: P50; P50 representative hindcast year 1984; cycle: 15; activity ID: 9; location: OFFSHORE; position: n/a; safe-to-safe group: none; baseline duration: 1.500 h; weather/operational downtime: 0.000 h; elapsed duration: 1.500 h.
- 991: Scenario: P50; P50 representative hindcast year 1984; cycle: 15; activity ID: 10; location: OFFSHORE; position: n/a; safe-to-safe group: none; baseline duration: 1.000 h; weather/operational downtime: 0.000 h; elapsed duration: 1.000 h.
- 992: Scenario: P50; P50 representative hindcast year 1984; cycle: 15; activity ID: 11; location: OFFSHORE; position: n/a; safe-to-safe group: none; baseline duration: 2.250 h; weather/operational downtime: 0.000 h; elapsed duration: 2.250 h.
- 993: Scenario: P50; P50 representative hindcast year 1984; cycle: 15; activity ID: 12; location: OFFSHORE; position: n/a; safe-to-safe group: none; baseline duration: 2.250 h; weather/operational downtime: 0.000 h; elapsed duration: 2.250 h.
- 994: Scenario: P50; P50 representative hindcast year 1984; cycle: 15; activity ID: 13; location: OFFSHORE; position: n/a; safe-to-safe group: none; baseline duration: 1.500 h; weather/operational downtime: 0.000 h; elapsed duration: 1.500 h.
- 995: Scenario: P50; P50 representative hindcast year 1984; cycle: 15; activity ID: 14; location: OFFSHORE; position: n/a; safe-to-safe group: none; baseline duration: 1.500 h; weather/operational downtime: 0.000 h; elapsed duration: 1.500 h.
- 996: Scenario: P50; P50 representative hindcast year 1984; cycle: 15; activity ID: 15; location: OFFSHORE; position: n/a; safe-to-safe group: none; baseline duration: 1.500 h; weather/operational downtime: 0.000 h; elapsed duration: 1.500 h.
- 997: Scenario: P50; P50 representative hindcast year 1984; cycle: 15; activity ID: 16; location: OFFSHORE; position: n/a; safe-to-safe group: none; baseline duration: 3.000 h; weather/operational downtime: 0.000 h; elapsed duration: 3.000 h.
- 998: Scenario: P50; P50 representative hindcast year 1984; cycle: 15; activity ID: 17; location: OFFSHORE; position: n/a; safe-to-safe group: none; baseline duration: 2.000 h; weather/operational downtime: 0.000 h; elapsed duration: 2.000 h.
- 999: Scenario: P50; P50 representative hindcast year 1984; cycle: 15; activity ID: 18; location: OFFSHORE; position: n/a; safe-to-safe group: none; baseline duration: 1.000 h; weather/operational downtime: 0.000 h; elapsed duration: 1.000 h.
- 1000: Scenario: P50; P50 representative hindcast year 1984; cycle: 15; activity ID: 19; location: OFFSHORE; position: n/a; safe-to-safe group: none; baseline duration: 5.200 h; weather/operational downtime: 0.000 h; elapsed duration: 5.250 h.
- 1001: Scenario: P50; P50 representative hindcast year 1984; cycle: 15; activity ID: 20; location: OFFSHORE; position: n/a; safe-to-safe group: none; baseline duration: 0.500 h; weather/operational downtime: 0.000 h; elapsed duration: 0.500 h.
- 1002: Scenario: P50; P50 representative hindcast year 1984; cycle: 15; activity ID: 21; location: OFFSHORE; position: 29; safe-to-safe group: none; baseline duration: 1.000 h; weather/operational downtime: 0.000 h; elapsed duration: 1.000 h.
- 1003: Scenario: P50; P50 representative hindcast year 1984; cycle: 15; activity ID: 22; location: OFFSHORE; position: 29; safe-to-safe group: none; baseline duration: 1.000 h; weather/operational downtime: 0.000 h; elapsed duration: 1.000 h.
- 1004: Scenario: P50; P50 representative hindcast year 1984; cycle: 15; activity ID: 23; location: OFFSHORE; position: 29; safe-to-safe group: none; baseline duration: 4.000 h; weather/operational downtime: 0.000 h; elapsed duration: 4.000 h.
- 1005: Scenario: P50; P50 representative hindcast year 1984; cycle: 15; activity ID: 24; location: OFFSHORE; position: 29; safe-to-safe group: none; baseline duration: 3.000 h; weather/operational downtime: 0.000 h; elapsed duration: 3.000 h.
- 1006: Scenario: P50; P50 representative hindcast year 1984; cycle: 15; activity ID: 25; location: OFFSHORE; position: 29; safe-to-safe group: none; baseline duration: 1.000 h; weather/operational downtime: 0.000 h; elapsed duration: 1.000 h.
- 1007: Scenario: P50; P50 representative hindcast year 1984; cycle: 15; activity ID: 26; location: OFFSHORE; position: 29; safe-to-safe group: none; baseline duration: 2.000 h; weather/operational downtime: 0.000 h; elapsed duration: 2.000 h.
- 1008: Scenario: P50; P50 representative hindcast year 1984; cycle: 15; activity ID: 27; location: OFFSHORE; position: 29; safe-to-safe group: G1; baseline duration: 1.000 h; weather/operational downtime: 0.000 h; elapsed duration: 1.000 h.
- 1009: Scenario: P50; P50 representative hindcast year 1984; cycle: 15; activity ID: 28; location: OFFSHORE; position: 29; safe-to-safe group: G1; baseline duration: 3.500 h; weather/operational downtime: 0.000 h; elapsed duration: 3.500 h.
- 1010: Scenario: P50; P50 representative hindcast year 1984; cycle: 15; activity ID: 29; location: OFFSHORE; position: 29; safe-to-safe group: G1; baseline duration: 0.500 h; weather/operational downtime: 0.000 h; elapsed duration: 0.500 h.
- 1011: Scenario: P50; P50 representative hindcast year 1984; cycle: 15; activity ID: 30; location: OFFSHORE; position: 29; safe-to-safe group: G2; baseline duration: 0.500 h; weather/operational downtime: 0.000 h; elapsed duration: 0.500 h.
- 1012: Scenario: P50; P50 representative hindcast year 1984; cycle: 15; activity ID: 31; location: OFFSHORE; position: 29; safe-to-safe group: G2; baseline duration: 2.250 h; weather/operational downtime: 0.000 h; elapsed duration: 2.250 h.
- 1013: Scenario: P50; P50 representative hindcast year 1984; cycle: 15; activity ID: 32; location: OFFSHORE; position: 29; safe-to-safe group: G2; baseline duration: 0.500 h; weather/operational downtime: 0.000 h; elapsed duration: 0.500 h.
- 1014: Scenario: P50; P50 representative hindcast year 1984; cycle: 15; activity ID: 33; location: OFFSHORE; position: 29; safe-to-safe group: G3; baseline duration: 0.500 h; weather/operational downtime: 0.000 h; elapsed duration: 0.500 h.
- 1015: Scenario: P50; P50 representative hindcast year 1984; cycle: 15; activity ID: 34; location: OFFSHORE; position: 29; safe-to-safe group: G3; baseline duration: 1.750 h; weather/operational downtime: 0.000 h; elapsed duration: 1.750 h.
- 1016: Scenario: P50; P50 representative hindcast year 1984; cycle: 15; activity ID: 35; location: OFFSHORE; position: 29; safe-to-safe group: G3; baseline duration: 1.500 h; weather/operational downtime: 0.000 h; elapsed duration: 1.500 h.
- 1017: Scenario: P50; P50 representative hindcast year 1984; cycle: 15; activity ID: 36; location: OFFSHORE; position: 29; safe-to-safe group: G4; baseline duration: 1.750 h; weather/operational downtime: 0.000 h; elapsed duration: 1.750 h.
- 1018: Scenario: P50; P50 representative hindcast year 1984; cycle: 15; activity ID: 37; location: OFFSHORE; position: 29; safe-to-safe group: G4; baseline duration: 1.500 h; weather/operational downtime: 0.000 h; elapsed duration: 1.500 h.
- 1019: Scenario: P50; P50 representative hindcast year 1984; cycle: 15; activity ID: 38; location: OFFSHORE; position: 29; safe-to-safe group: G5; baseline duration: 1.750 h; weather/operational downtime: 6.250 h; elapsed duration: 8.000 h.
- 1020: Scenario: P50; P50 representative hindcast year 1984; cycle: 15; activity ID: 39; location: OFFSHORE; position: 29; safe-to-safe group: G5; baseline duration: 1.500 h; weather/operational downtime: 0.000 h; elapsed duration: 1.500 h.
- 1021: Scenario: P50; P50 representative hindcast year 1984; cycle: 15; activity ID: 40; location: OFFSHORE; position: 29; safe-to-safe group: none; baseline duration: 1.000 h; weather/operational downtime: 0.000 h; elapsed duration: 1.000 h.
- 1022: Scenario: P50; P50 representative hindcast year 1984; cycle: 15; activity ID: 41; location: OFFSHORE; position: 29; safe-to-safe group: none; baseline duration: 1.000 h; weather/operational downtime: 0.000 h; elapsed duration: 1.000 h.
- 1023: Scenario: P50; P50 representative hindcast year 1984; cycle: 15; activity ID: 42; location: OFFSHORE; position: 29; safe-to-safe group: none; baseline duration: 3.000 h; weather/operational downtime: 0.000 h; elapsed duration: 3.000 h.
- 1024: Scenario: P50; P50 representative hindcast year 1984; cycle: 15; activity ID: 43; location: OFFSHORE; position: 29; safe-to-safe group: none; baseline duration: 3.000 h; weather/operational downtime: 0.000 h; elapsed duration: 3.000 h.
- 1025: Scenario: P50; P50 representative hindcast year 1984; cycle: 15; activity ID: 44; location: OFFSHORE; position: 29; safe-to-safe group: none; baseline duration: 2.000 h; weather/operational downtime: 8.750 h; elapsed duration: 10.750 h.
- 1026: Scenario: P50; P50 representative hindcast year 1984; cycle: 15; activity ID: 21; location: OFFSHORE; position: 30; safe-to-safe group: none; baseline duration: 1.000 h; weather/operational downtime: 0.000 h; elapsed duration: 1.000 h.
- 1027: Scenario: P50; P50 representative hindcast year 1984; cycle: 15; activity ID: 22; location: OFFSHORE; position: 30; safe-to-safe group: none; baseline duration: 1.000 h; weather/operational downtime: 0.000 h; elapsed duration: 1.000 h.
- 1028: Scenario: P50; P50 representative hindcast year 1984; cycle: 15; activity ID: 23; location: OFFSHORE; position: 30; safe-to-safe group: none; baseline duration: 4.000 h; weather/operational downtime: 0.000 h; elapsed duration: 4.000 h.
- 1029: Scenario: P50; P50 representative hindcast year 1984; cycle: 15; activity ID: 24; location: OFFSHORE; position: 30; safe-to-safe group: none; baseline duration: 3.000 h; weather/operational downtime: 0.000 h; elapsed duration: 3.000 h.
- 1030: Scenario: P50; P50 representative hindcast year 1984; cycle: 15; activity ID: 25; location: OFFSHORE; position: 30; safe-to-safe group: none; baseline duration: 1.000 h; weather/operational downtime: 0.000 h; elapsed duration: 1.000 h.
- 1031: Scenario: P50; P50 representative hindcast year 1984; cycle: 15; activity ID: 26; location: OFFSHORE; position: 30; safe-to-safe group: none; baseline duration: 2.000 h; weather/operational downtime: 0.000 h; elapsed duration: 2.000 h.
- 1032: Scenario: P50; P50 representative hindcast year 1984; cycle: 15; activity ID: 27; location: OFFSHORE; position: 30; safe-to-safe group: G1; baseline duration: 1.000 h; weather/operational downtime: 0.000 h; elapsed duration: 1.000 h.
- 1033: Scenario: P50; P50 representative hindcast year 1984; cycle: 15; activity ID: 28; location: OFFSHORE; position: 30; safe-to-safe group: G1; baseline duration: 3.500 h; weather/operational downtime: 0.000 h; elapsed duration: 3.500 h.
- 1034: Scenario: P50; P50 representative hindcast year 1984; cycle: 15; activity ID: 29; location: OFFSHORE; position: 30; safe-to-safe group: G1; baseline duration: 0.500 h; weather/operational downtime: 0.000 h; elapsed duration: 0.500 h.
- 1035: Scenario: P50; P50 representative hindcast year 1984; cycle: 15; activity ID: 30; location: OFFSHORE; position: 30; safe-to-safe group: G2; baseline duration: 0.500 h; weather/operational downtime: 0.000 h; elapsed duration: 0.500 h.
- 1036: Scenario: P50; P50 representative hindcast year 1984; cycle: 15; activity ID: 31; location: OFFSHORE; position: 30; safe-to-safe group: G2; baseline duration: 2.250 h; weather/operational downtime: 0.000 h; elapsed duration: 2.250 h.
- 1037: Scenario: P50; P50 representative hindcast year 1984; cycle: 15; activity ID: 32; location: OFFSHORE; position: 30; safe-to-safe group: G2; baseline duration: 0.500 h; weather/operational downtime: 0.000 h; elapsed duration: 0.500 h.
- 1038: Scenario: P50; P50 representative hindcast year 1984; cycle: 15; activity ID: 33; location: OFFSHORE; position: 30; safe-to-safe group: G3; baseline duration: 0.500 h; weather/operational downtime: 0.000 h; elapsed duration: 0.500 h.
- 1039: Scenario: P50; P50 representative hindcast year 1984; cycle: 15; activity ID: 34; location: OFFSHORE; position: 30; safe-to-safe group: G3; baseline duration: 1.750 h; weather/operational downtime: 0.000 h; elapsed duration: 1.750 h.
- 1040: Scenario: P50; P50 representative hindcast year 1984; cycle: 15; activity ID: 35; location: OFFSHORE; position: 30; safe-to-safe group: G3; baseline duration: 1.500 h; weather/operational downtime: 0.000 h; elapsed duration: 1.500 h.
- 1041: Scenario: P50; P50 representative hindcast year 1984; cycle: 15; activity ID: 36; location: OFFSHORE; position: 30; safe-to-safe group: G4; baseline duration: 1.750 h; weather/operational downtime: 0.000 h; elapsed duration: 1.750 h.
- 1042: Scenario: P50; P50 representative hindcast year 1984; cycle: 15; activity ID: 37; location: OFFSHORE; position: 30; safe-to-safe group: G4; baseline duration: 1.500 h; weather/operational downtime: 0.000 h; elapsed duration: 1.500 h.
- 1043: Scenario: P50; P50 representative hindcast year 1984; cycle: 15; activity ID: 38; location: OFFSHORE; position: 30; safe-to-safe group: G5; baseline duration: 1.750 h; weather/operational downtime: 0.000 h; elapsed duration: 1.750 h.
- 1044: Scenario: P50; P50 representative hindcast year 1984; cycle: 15; activity ID: 39; location: OFFSHORE; position: 30; safe-to-safe group: G5; baseline duration: 1.500 h; weather/operational downtime: 0.000 h; elapsed duration: 1.500 h.
- 1045: Scenario: P50; P50 representative hindcast year 1984; cycle: 15; activity ID: 40; location: OFFSHORE; position: 30; safe-to-safe group: none; baseline duration: 1.000 h; weather/operational downtime: 0.000 h; elapsed duration: 1.000 h.
- 1046: Scenario: P50; P50 representative hindcast year 1984; cycle: 15; activity ID: 41; location: OFFSHORE; position: 30; safe-to-safe group: none; baseline duration: 1.000 h; weather/operational downtime: 0.000 h; elapsed duration: 1.000 h.
- 1047: Scenario: P50; P50 representative hindcast year 1984; cycle: 15; activity ID: 42; location: OFFSHORE; position: 30; safe-to-safe group: none; baseline duration: 3.000 h; weather/operational downtime: 0.000 h; elapsed duration: 3.000 h.
- 1048: Scenario: P50; P50 representative hindcast year 1984; cycle: 15; activity ID: 43; location: OFFSHORE; position: 30; safe-to-safe group: none; baseline duration: 3.000 h; weather/operational downtime: 0.000 h; elapsed duration: 3.000 h.
- 1049: Scenario: P50; P50 representative hindcast year 1984; cycle: 15; activity ID: 44; location: OFFSHORE; position: 30; safe-to-safe group: none; baseline duration: 2.000 h; weather/operational downtime: 0.000 h; elapsed duration: 2.000 h.
- 1050: Scenario: P50; P50 representative hindcast year 1984; cycle: 15; activity ID: 45; location: OFFSHORE; position: n/a; safe-to-safe group: none; baseline duration: 5.200 h; weather/operational downtime: 0.000 h; elapsed duration: 5.250 h.

| ID | WBS | Task | Type | Duration | Start | Finish | Predecessors | Duration WDT [days] | Location | Activity ID | Position | Safe-to-safe group |
| --- | --- | --- | --- | --- | --- | --- | --- | --- | --- | --- | --- | --- |
| 1051 | 16 | **Cycle 16 — Positions 31–32** |  | 123.9eh | 2030-08-02 20:45 | 2030-08-09 08:30 |  | 1.322917 |  |  |  |  |
| 1052 | 16.1 | Port maneuvering | manual | 1eh | 2030-08-02 20:45 | 2030-08-02 21:45 | 1050 | 0.000000 | OFFSHORE | 1 |  |  |
| 1053 | 16.2 | Preload and jacking up at port | manual | 2eh | 2030-08-02 21:45 | 2030-08-02 23:45 | 1052 | 0.000000 | OFFSHORE | 2 |  |  |
| 1054 | 16.3 | Release crane, gangway etc and prep for lifting | manual | 3eh | 2030-08-02 23:45 | 2030-08-03 02:45 | 1053 | 0.000000 | OFFSHORE | 3 |  |  |
| 1055 | 16.4 | Load in/out WTG supplier equipment | manual | 1eh | 2030-08-03 02:45 | 2030-08-03 03:45 | 1054 | 0.000000 | OFFSHORE | 4 |  |  |
| 1056 | 16.5 | Loadout Nacelle #1 | manual | 2.25eh | 2030-08-03 03:45 | 2030-08-03 06:00 | 1055 | 0.000000 | OFFSHORE | 5 |  |  |
| 1057 | 16.6 | Loadout Tower #1 | manual | 2.25eh | 2030-08-03 06:00 | 2030-08-03 08:15 | 1056 | 0.000000 | OFFSHORE | 6 |  |  |
| 1058 | 16.7 | Loadout Blade 1 | manual | 1.5eh | 2030-08-03 08:15 | 2030-08-03 09:45 | 1057 | 0.000000 | OFFSHORE | 7 |  |  |
| 1059 | 16.8 | Loadout Blade 2 | manual | 1.5eh | 2030-08-03 09:45 | 2030-08-03 11:15 | 1058 | 0.000000 | OFFSHORE | 8 |  |  |
| 1060 | 16.9 | Loadout Blade 3 | manual | 1.5eh | 2030-08-03 11:15 | 2030-08-03 12:45 | 1059 | 0.000000 | OFFSHORE | 9 |  |  |
| 1061 | 16.10 | Load in/out WTG supplier equipment | manual | 1eh | 2030-08-03 12:45 | 2030-08-03 13:45 | 1060 | 0.000000 | OFFSHORE | 10 |  |  |
| 1062 | 16.11 | Loadout Nacelle #2 | manual | 2.25eh | 2030-08-03 13:45 | 2030-08-03 16:00 | 1061 | 0.000000 | OFFSHORE | 11 |  |  |
| 1063 | 16.12 | Loadout Tower #2 | manual | 2.25eh | 2030-08-03 16:00 | 2030-08-03 18:15 | 1062 | 0.000000 | OFFSHORE | 12 |  |  |
| 1064 | 16.13 | Loadout Blade 1 | manual | 1.5eh | 2030-08-03 18:15 | 2030-08-03 19:45 | 1063 | 0.000000 | OFFSHORE | 13 |  |  |
| 1065 | 16.14 | Loadout Blade 2 | manual | 1.5eh | 2030-08-03 19:45 | 2030-08-03 21:15 | 1064 | 0.000000 | OFFSHORE | 14 |  |  |
| 1066 | 16.15 | Loadout Blade 3 | manual | 1.5eh | 2030-08-03 21:15 | 2030-08-03 22:45 | 1065 | 0.000000 | OFFSHORE | 15 |  |  |
| 1067 | 16.16 | Secure of crane, gangway (at port)) | manual | 3eh | 2030-08-03 22:45 | 2030-08-04 01:45 | 1066 | 0.000000 | OFFSHORE | 16 |  |  |
| 1068 | 16.17 | Jacking down at port | manual | 2eh | 2030-08-04 01:45 | 2030-08-04 03:45 | 1067 | 0.000000 | OFFSHORE | 17 |  |  |
| 1069 | 16.18 | Port maneuvering | manual | 1eh | 2030-08-04 03:45 | 2030-08-04 04:45 | 1068 | 0.000000 | OFFSHORE | 18 |  |  |
| 1070 | 16.19 | Transit from port to site | manual | 5.2eh | 2030-08-04 04:45 | 2030-08-04 10:00 | 1069 | 0.000000 | OFFSHORE | 19 |  |  |
| 1071 | 16.20 | DP field check | manual | 0.5eh | 2030-08-04 10:00 | 2030-08-04 10:30 | 1070 | 0.000000 | OFFSHORE | 20 |  |  |
| 1072 | 16.21 | Transit to next foundation | manual | 1eh | 2030-08-04 10:30 | 2030-08-04 11:30 | 1071 | 0.000000 | OFFSHORE | 21 | 31 |  |
| 1073 | 16.22 | Positioning at WTG location | manual | 1eh | 2030-08-04 11:30 | 2030-08-04 12:30 | 1072 | 0.000000 | OFFSHORE | 22 | 31 |  |
| 1074 | 16.23 | Preload and jacking up at site | manual | 4eh | 2030-08-04 12:30 | 2030-08-04 21:00 | 1073 | 0.187500 | OFFSHORE | 23 | 31 |  |
| 1075 | 16.24 | Release crane, gangway and prep for lifting | manual | 3eh | 2030-08-04 21:00 | 2030-08-05 00:00 | 1074 | 0.000000 | OFFSHORE | 24 | 31 |  |
| 1076 | 16.25 | Remove TP cover and Preparation of TP | manual | 1eh | 2030-08-05 00:00 | 2030-08-05 01:00 | 1075 | 0.000000 | OFFSHORE | 25 | 31 |  |
| 1077 | 16.26 | Tower preparation, removal of seafastening bolts | manual | 2eh | 2030-08-05 01:00 | 2030-08-05 03:00 | 1076 | 0.000000 | OFFSHORE | 26 | 31 |  |
| 1078 | 16.27 | Tower rigging-up (attached lifting equipment) | manual | 1eh | 2030-08-05 03:00 | 2030-08-05 04:00 | 1077 | 0.000000 | OFFSHORE | 27 | 31 | G1 |
| 1079 | 16.28 | Tower Lifting (safe-to-safe) | manual | 3.5eh | 2030-08-05 04:00 | 2030-08-05 07:30 | 1078 | 0.000000 | OFFSHORE | 28 | 31 | G1 |
| 1080 | 16.29 | Tower derigging (remove lifting equipment) | manual | 0.5eh | 2030-08-05 07:30 | 2030-08-05 08:00 | 1079 | 0.000000 | OFFSHORE | 29 | 31 | G1 |
| 1081 | 16.30 | Nacelle preparation and rigging | manual | 0.5eh | 2030-08-05 08:00 | 2030-08-05 08:30 | 1080 | 0.000000 | OFFSHORE | 30 | 31 | G2 |
| 1082 | 16.31 | Nacelle Lifting (safe-to-safe) | manual | 2.25eh | 2030-08-05 08:30 | 2030-08-05 10:45 | 1081 | 0.000000 | OFFSHORE | 31 | 31 | G2 |
| 1083 | 16.32 | Nacelle derigging (remove lifting equipment) | manual | 0.5eh | 2030-08-05 10:45 | 2030-08-05 11:15 | 1082 | 0.000000 | OFFSHORE | 32 | 31 | G2 |
| 1084 | 16.33 | Blade yoke rigging and attachement to Blade #1 | manual | 0.5eh | 2030-08-05 11:15 | 2030-08-05 11:45 | 1083 | 0.000000 | OFFSHORE | 33 | 31 | G3 |
| 1085 | 16.34 | Blade #1 Lifting (safe-to-safe) | manual | 1.75eh | 2030-08-05 11:45 | 2030-08-05 13:30 | 1084 | 0.000000 | OFFSHORE | 34 | 31 | G3 |
| 1086 | 16.35 | Blade #1 completion work, re-locate blade yoke to next blade | manual | 1.5eh | 2030-08-05 13:30 | 2030-08-05 15:00 | 1085 | 0.000000 | OFFSHORE | 35 | 31 | G3 |
| 1087 | 16.36 | Blade #2 Lifting (safe-to-safe) | manual | 1.75eh | 2030-08-05 15:00 | 2030-08-05 16:45 | 1086 | 0.000000 | OFFSHORE | 36 | 31 | G4 |
| 1088 | 16.37 | Balde #2 completion work, re-locate blade yoke to next blade | manual | 1.5eh | 2030-08-05 16:45 | 2030-08-05 18:15 | 1087 | 0.000000 | OFFSHORE | 37 | 31 | G4 |
| 1089 | 16.38 | Blade #3 Lifting (safe-to-safe) | manual | 1.75eh | 2030-08-05 18:15 | 2030-08-05 20:00 | 1088 | 0.000000 | OFFSHORE | 38 | 31 | G5 |
| 1090 | 16.39 | Blade #3 completion work, blade yoke de-rigging | manual | 1.5eh | 2030-08-05 20:00 | 2030-08-05 21:30 | 1089 | 0.000000 | OFFSHORE | 39 | 31 | G5 |
| 1091 | 16.40 | Handling HSBM and lifting tools | manual | 1eh | 2030-08-05 21:30 | 2030-08-05 22:30 | 1090 | 0.000000 | OFFSHORE | 40 | 31 |  |
| 1092 | 16.41 | Lifting HSBM and lifting tools from Nacelle | manual | 1eh | 2030-08-05 22:30 | 2030-08-05 23:30 | 1091 | 0.000000 | OFFSHORE | 41 | 31 |  |
| 1093 | 16.42 | Turbine general completion works | manual | 3eh | 2030-08-05 23:30 | 2030-08-06 02:30 | 1092 | 0.000000 | OFFSHORE | 42 | 31 |  |
| 1094 | 16.43 | Secure of crane, gangway etc. Preparation for jacking down and sailing | manual | 3eh | 2030-08-06 02:30 | 2030-08-06 05:30 | 1093 | 0.000000 | OFFSHORE | 43 | 31 |  |
| 1095 | 16.44 | Jacking down at site | manual | 2eh | 2030-08-06 05:30 | 2030-08-06 07:30 | 1094 | 0.000000 | OFFSHORE | 44 | 31 |  |
| 1096 | 16.45 | Transit to next foundation | manual | 1eh | 2030-08-06 07:30 | 2030-08-06 08:30 | 1095 | 0.000000 | OFFSHORE | 21 | 32 |  |
| 1097 | 16.46 | Positioning at WTG location | manual | 1eh | 2030-08-06 08:30 | 2030-08-06 12:00 | 1096 | 0.104167 | OFFSHORE | 22 | 32 |  |
| 1098 | 16.47 | Preload and jacking up at site | manual | 4eh | 2030-08-06 12:00 | 2030-08-06 16:00 | 1097 | 0.000000 | OFFSHORE | 23 | 32 |  |
| 1099 | 16.48 | Release crane, gangway and prep for lifting | manual | 3eh | 2030-08-06 16:00 | 2030-08-06 19:00 | 1098 | 0.000000 | OFFSHORE | 24 | 32 |  |
| 1100 | 16.49 | Remove TP cover and Preparation of TP | manual | 1eh | 2030-08-06 19:00 | 2030-08-07 08:00 | 1099 | 0.500000 | OFFSHORE | 25 | 32 |  |
| 1101 | 16.50 | Tower preparation, removal of seafastening bolts | manual | 2eh | 2030-08-07 08:00 | 2030-08-07 10:00 | 1100 | 0.000000 | OFFSHORE | 26 | 32 |  |
| 1102 | 16.51 | Tower rigging-up (attached lifting equipment) | manual | 1eh | 2030-08-07 10:00 | 2030-08-07 11:00 | 1101 | 0.000000 | OFFSHORE | 27 | 32 | G1 |
| 1103 | 16.52 | Tower Lifting (safe-to-safe) | manual | 3.5eh | 2030-08-07 11:00 | 2030-08-07 14:30 | 1102 | 0.000000 | OFFSHORE | 28 | 32 | G1 |
| 1104 | 16.53 | Tower derigging (remove lifting equipment) | manual | 0.5eh | 2030-08-07 14:30 | 2030-08-07 15:00 | 1103 | 0.000000 | OFFSHORE | 29 | 32 | G1 |
| 1105 | 16.54 | Nacelle preparation and rigging | manual | 0.5eh | 2030-08-07 15:00 | 2030-08-07 15:30 | 1104 | 0.000000 | OFFSHORE | 30 | 32 | G2 |
| 1106 | 16.55 | Nacelle Lifting (safe-to-safe) | manual | 2.25eh | 2030-08-07 15:30 | 2030-08-07 17:45 | 1105 | 0.000000 | OFFSHORE | 31 | 32 | G2 |
| 1107 | 16.56 | Nacelle derigging (remove lifting equipment) | manual | 0.5eh | 2030-08-07 17:45 | 2030-08-07 18:15 | 1106 | 0.000000 | OFFSHORE | 32 | 32 | G2 |
| 1108 | 16.57 | Blade yoke rigging and attachement to Blade #1 | manual | 0.5eh | 2030-08-07 18:15 | 2030-08-08 07:30 | 1107 | 0.531250 | OFFSHORE | 33 | 32 | G3 |
| 1109 | 16.58 | Blade #1 Lifting (safe-to-safe) | manual | 1.75eh | 2030-08-08 07:30 | 2030-08-08 09:15 | 1108 | 0.000000 | OFFSHORE | 34 | 32 | G3 |
| 1110 | 16.59 | Blade #1 completion work, re-locate blade yoke to next blade | manual | 1.5eh | 2030-08-08 09:15 | 2030-08-08 10:45 | 1109 | 0.000000 | OFFSHORE | 35 | 32 | G3 |
| 1111 | 16.60 | Blade #2 Lifting (safe-to-safe) | manual | 1.75eh | 2030-08-08 10:45 | 2030-08-08 12:30 | 1110 | 0.000000 | OFFSHORE | 36 | 32 | G4 |
| 1112 | 16.61 | Balde #2 completion work, re-locate blade yoke to next blade | manual | 1.5eh | 2030-08-08 12:30 | 2030-08-08 14:00 | 1111 | 0.000000 | OFFSHORE | 37 | 32 | G4 |
| 1113 | 16.62 | Blade #3 Lifting (safe-to-safe) | manual | 1.75eh | 2030-08-08 14:00 | 2030-08-08 15:45 | 1112 | 0.000000 | OFFSHORE | 38 | 32 | G5 |
| 1114 | 16.63 | Blade #3 completion work, blade yoke de-rigging | manual | 1.5eh | 2030-08-08 15:45 | 2030-08-08 17:15 | 1113 | 0.000000 | OFFSHORE | 39 | 32 | G5 |
| 1115 | 16.64 | Handling HSBM and lifting tools | manual | 1eh | 2030-08-08 17:15 | 2030-08-08 18:15 | 1114 | 0.000000 | OFFSHORE | 40 | 32 |  |
| 1116 | 16.65 | Lifting HSBM and lifting tools from Nacelle | manual | 1eh | 2030-08-08 18:15 | 2030-08-08 19:15 | 1115 | 0.000000 | OFFSHORE | 41 | 32 |  |
| 1117 | 16.66 | Turbine general completion works | manual | 3eh | 2030-08-08 19:15 | 2030-08-08 22:15 | 1116 | 0.000000 | OFFSHORE | 42 | 32 |  |
| 1118 | 16.67 | Secure of crane, gangway etc. Preparation for jacking down and sailing | manual | 3eh | 2030-08-08 22:15 | 2030-08-09 01:15 | 1117 | 0.000000 | OFFSHORE | 43 | 32 |  |
| 1119 | 16.68 | Jacking down at site | manual | 2eh | 2030-08-09 01:15 | 2030-08-09 03:15 | 1118 | 0.000000 | OFFSHORE | 44 | 32 |  |
| 1120 | 16.69 | Transit from site to port | manual | 5.2eh | 2030-08-09 03:15 | 2030-08-09 08:30 | 1119 | 0.000000 | OFFSHORE | 45 |  |  |

Notes:
- 1051: P50 representative hindcast year 1984; cycle 16; baseline duration 5.163 days; downtime 1.323 days; elapsed duration 6.490 days.
- 1052: Scenario: P50; P50 representative hindcast year 1984; cycle: 16; activity ID: 1; location: OFFSHORE; position: n/a; safe-to-safe group: none; baseline duration: 1.000 h; weather/operational downtime: 0.000 h; elapsed duration: 1.000 h.
- 1053: Scenario: P50; P50 representative hindcast year 1984; cycle: 16; activity ID: 2; location: OFFSHORE; position: n/a; safe-to-safe group: none; baseline duration: 2.000 h; weather/operational downtime: 0.000 h; elapsed duration: 2.000 h.
- 1054: Scenario: P50; P50 representative hindcast year 1984; cycle: 16; activity ID: 3; location: OFFSHORE; position: n/a; safe-to-safe group: none; baseline duration: 3.000 h; weather/operational downtime: 0.000 h; elapsed duration: 3.000 h.
- 1055: Scenario: P50; P50 representative hindcast year 1984; cycle: 16; activity ID: 4; location: OFFSHORE; position: n/a; safe-to-safe group: none; baseline duration: 1.000 h; weather/operational downtime: 0.000 h; elapsed duration: 1.000 h.
- 1056: Scenario: P50; P50 representative hindcast year 1984; cycle: 16; activity ID: 5; location: OFFSHORE; position: n/a; safe-to-safe group: none; baseline duration: 2.250 h; weather/operational downtime: 0.000 h; elapsed duration: 2.250 h.
- 1057: Scenario: P50; P50 representative hindcast year 1984; cycle: 16; activity ID: 6; location: OFFSHORE; position: n/a; safe-to-safe group: none; baseline duration: 2.250 h; weather/operational downtime: 0.000 h; elapsed duration: 2.250 h.
- 1058: Scenario: P50; P50 representative hindcast year 1984; cycle: 16; activity ID: 7; location: OFFSHORE; position: n/a; safe-to-safe group: none; baseline duration: 1.500 h; weather/operational downtime: 0.000 h; elapsed duration: 1.500 h.
- 1059: Scenario: P50; P50 representative hindcast year 1984; cycle: 16; activity ID: 8; location: OFFSHORE; position: n/a; safe-to-safe group: none; baseline duration: 1.500 h; weather/operational downtime: 0.000 h; elapsed duration: 1.500 h.
- 1060: Scenario: P50; P50 representative hindcast year 1984; cycle: 16; activity ID: 9; location: OFFSHORE; position: n/a; safe-to-safe group: none; baseline duration: 1.500 h; weather/operational downtime: 0.000 h; elapsed duration: 1.500 h.
- 1061: Scenario: P50; P50 representative hindcast year 1984; cycle: 16; activity ID: 10; location: OFFSHORE; position: n/a; safe-to-safe group: none; baseline duration: 1.000 h; weather/operational downtime: 0.000 h; elapsed duration: 1.000 h.
- 1062: Scenario: P50; P50 representative hindcast year 1984; cycle: 16; activity ID: 11; location: OFFSHORE; position: n/a; safe-to-safe group: none; baseline duration: 2.250 h; weather/operational downtime: 0.000 h; elapsed duration: 2.250 h.
- 1063: Scenario: P50; P50 representative hindcast year 1984; cycle: 16; activity ID: 12; location: OFFSHORE; position: n/a; safe-to-safe group: none; baseline duration: 2.250 h; weather/operational downtime: 0.000 h; elapsed duration: 2.250 h.
- 1064: Scenario: P50; P50 representative hindcast year 1984; cycle: 16; activity ID: 13; location: OFFSHORE; position: n/a; safe-to-safe group: none; baseline duration: 1.500 h; weather/operational downtime: 0.000 h; elapsed duration: 1.500 h.
- 1065: Scenario: P50; P50 representative hindcast year 1984; cycle: 16; activity ID: 14; location: OFFSHORE; position: n/a; safe-to-safe group: none; baseline duration: 1.500 h; weather/operational downtime: 0.000 h; elapsed duration: 1.500 h.
- 1066: Scenario: P50; P50 representative hindcast year 1984; cycle: 16; activity ID: 15; location: OFFSHORE; position: n/a; safe-to-safe group: none; baseline duration: 1.500 h; weather/operational downtime: 0.000 h; elapsed duration: 1.500 h.
- 1067: Scenario: P50; P50 representative hindcast year 1984; cycle: 16; activity ID: 16; location: OFFSHORE; position: n/a; safe-to-safe group: none; baseline duration: 3.000 h; weather/operational downtime: 0.000 h; elapsed duration: 3.000 h.
- 1068: Scenario: P50; P50 representative hindcast year 1984; cycle: 16; activity ID: 17; location: OFFSHORE; position: n/a; safe-to-safe group: none; baseline duration: 2.000 h; weather/operational downtime: 0.000 h; elapsed duration: 2.000 h.
- 1069: Scenario: P50; P50 representative hindcast year 1984; cycle: 16; activity ID: 18; location: OFFSHORE; position: n/a; safe-to-safe group: none; baseline duration: 1.000 h; weather/operational downtime: 0.000 h; elapsed duration: 1.000 h.
- 1070: Scenario: P50; P50 representative hindcast year 1984; cycle: 16; activity ID: 19; location: OFFSHORE; position: n/a; safe-to-safe group: none; baseline duration: 5.200 h; weather/operational downtime: 0.000 h; elapsed duration: 5.250 h.
- 1071: Scenario: P50; P50 representative hindcast year 1984; cycle: 16; activity ID: 20; location: OFFSHORE; position: n/a; safe-to-safe group: none; baseline duration: 0.500 h; weather/operational downtime: 0.000 h; elapsed duration: 0.500 h.
- 1072: Scenario: P50; P50 representative hindcast year 1984; cycle: 16; activity ID: 21; location: OFFSHORE; position: 31; safe-to-safe group: none; baseline duration: 1.000 h; weather/operational downtime: 0.000 h; elapsed duration: 1.000 h.
- 1073: Scenario: P50; P50 representative hindcast year 1984; cycle: 16; activity ID: 22; location: OFFSHORE; position: 31; safe-to-safe group: none; baseline duration: 1.000 h; weather/operational downtime: 0.000 h; elapsed duration: 1.000 h.
- 1074: Scenario: P50; P50 representative hindcast year 1984; cycle: 16; activity ID: 23; location: OFFSHORE; position: 31; safe-to-safe group: none; baseline duration: 4.000 h; weather/operational downtime: 4.500 h; elapsed duration: 8.500 h.
- 1075: Scenario: P50; P50 representative hindcast year 1984; cycle: 16; activity ID: 24; location: OFFSHORE; position: 31; safe-to-safe group: none; baseline duration: 3.000 h; weather/operational downtime: 0.000 h; elapsed duration: 3.000 h.
- 1076: Scenario: P50; P50 representative hindcast year 1984; cycle: 16; activity ID: 25; location: OFFSHORE; position: 31; safe-to-safe group: none; baseline duration: 1.000 h; weather/operational downtime: 0.000 h; elapsed duration: 1.000 h.
- 1077: Scenario: P50; P50 representative hindcast year 1984; cycle: 16; activity ID: 26; location: OFFSHORE; position: 31; safe-to-safe group: none; baseline duration: 2.000 h; weather/operational downtime: 0.000 h; elapsed duration: 2.000 h.
- 1078: Scenario: P50; P50 representative hindcast year 1984; cycle: 16; activity ID: 27; location: OFFSHORE; position: 31; safe-to-safe group: G1; baseline duration: 1.000 h; weather/operational downtime: 0.000 h; elapsed duration: 1.000 h.
- 1079: Scenario: P50; P50 representative hindcast year 1984; cycle: 16; activity ID: 28; location: OFFSHORE; position: 31; safe-to-safe group: G1; baseline duration: 3.500 h; weather/operational downtime: 0.000 h; elapsed duration: 3.500 h.
- 1080: Scenario: P50; P50 representative hindcast year 1984; cycle: 16; activity ID: 29; location: OFFSHORE; position: 31; safe-to-safe group: G1; baseline duration: 0.500 h; weather/operational downtime: 0.000 h; elapsed duration: 0.500 h.
- 1081: Scenario: P50; P50 representative hindcast year 1984; cycle: 16; activity ID: 30; location: OFFSHORE; position: 31; safe-to-safe group: G2; baseline duration: 0.500 h; weather/operational downtime: 0.000 h; elapsed duration: 0.500 h.
- 1082: Scenario: P50; P50 representative hindcast year 1984; cycle: 16; activity ID: 31; location: OFFSHORE; position: 31; safe-to-safe group: G2; baseline duration: 2.250 h; weather/operational downtime: 0.000 h; elapsed duration: 2.250 h.
- 1083: Scenario: P50; P50 representative hindcast year 1984; cycle: 16; activity ID: 32; location: OFFSHORE; position: 31; safe-to-safe group: G2; baseline duration: 0.500 h; weather/operational downtime: 0.000 h; elapsed duration: 0.500 h.
- 1084: Scenario: P50; P50 representative hindcast year 1984; cycle: 16; activity ID: 33; location: OFFSHORE; position: 31; safe-to-safe group: G3; baseline duration: 0.500 h; weather/operational downtime: 0.000 h; elapsed duration: 0.500 h.
- 1085: Scenario: P50; P50 representative hindcast year 1984; cycle: 16; activity ID: 34; location: OFFSHORE; position: 31; safe-to-safe group: G3; baseline duration: 1.750 h; weather/operational downtime: 0.000 h; elapsed duration: 1.750 h.
- 1086: Scenario: P50; P50 representative hindcast year 1984; cycle: 16; activity ID: 35; location: OFFSHORE; position: 31; safe-to-safe group: G3; baseline duration: 1.500 h; weather/operational downtime: 0.000 h; elapsed duration: 1.500 h.
- 1087: Scenario: P50; P50 representative hindcast year 1984; cycle: 16; activity ID: 36; location: OFFSHORE; position: 31; safe-to-safe group: G4; baseline duration: 1.750 h; weather/operational downtime: 0.000 h; elapsed duration: 1.750 h.
- 1088: Scenario: P50; P50 representative hindcast year 1984; cycle: 16; activity ID: 37; location: OFFSHORE; position: 31; safe-to-safe group: G4; baseline duration: 1.500 h; weather/operational downtime: 0.000 h; elapsed duration: 1.500 h.
- 1089: Scenario: P50; P50 representative hindcast year 1984; cycle: 16; activity ID: 38; location: OFFSHORE; position: 31; safe-to-safe group: G5; baseline duration: 1.750 h; weather/operational downtime: 0.000 h; elapsed duration: 1.750 h.
- 1090: Scenario: P50; P50 representative hindcast year 1984; cycle: 16; activity ID: 39; location: OFFSHORE; position: 31; safe-to-safe group: G5; baseline duration: 1.500 h; weather/operational downtime: 0.000 h; elapsed duration: 1.500 h.
- 1091: Scenario: P50; P50 representative hindcast year 1984; cycle: 16; activity ID: 40; location: OFFSHORE; position: 31; safe-to-safe group: none; baseline duration: 1.000 h; weather/operational downtime: 0.000 h; elapsed duration: 1.000 h.
- 1092: Scenario: P50; P50 representative hindcast year 1984; cycle: 16; activity ID: 41; location: OFFSHORE; position: 31; safe-to-safe group: none; baseline duration: 1.000 h; weather/operational downtime: 0.000 h; elapsed duration: 1.000 h.
- 1093: Scenario: P50; P50 representative hindcast year 1984; cycle: 16; activity ID: 42; location: OFFSHORE; position: 31; safe-to-safe group: none; baseline duration: 3.000 h; weather/operational downtime: 0.000 h; elapsed duration: 3.000 h.
- 1094: Scenario: P50; P50 representative hindcast year 1984; cycle: 16; activity ID: 43; location: OFFSHORE; position: 31; safe-to-safe group: none; baseline duration: 3.000 h; weather/operational downtime: 0.000 h; elapsed duration: 3.000 h.
- 1095: Scenario: P50; P50 representative hindcast year 1984; cycle: 16; activity ID: 44; location: OFFSHORE; position: 31; safe-to-safe group: none; baseline duration: 2.000 h; weather/operational downtime: 0.000 h; elapsed duration: 2.000 h.
- 1096: Scenario: P50; P50 representative hindcast year 1984; cycle: 16; activity ID: 21; location: OFFSHORE; position: 32; safe-to-safe group: none; baseline duration: 1.000 h; weather/operational downtime: 0.000 h; elapsed duration: 1.000 h.
- 1097: Scenario: P50; P50 representative hindcast year 1984; cycle: 16; activity ID: 22; location: OFFSHORE; position: 32; safe-to-safe group: none; baseline duration: 1.000 h; weather/operational downtime: 2.500 h; elapsed duration: 3.500 h.
- 1098: Scenario: P50; P50 representative hindcast year 1984; cycle: 16; activity ID: 23; location: OFFSHORE; position: 32; safe-to-safe group: none; baseline duration: 4.000 h; weather/operational downtime: 0.000 h; elapsed duration: 4.000 h.
- 1099: Scenario: P50; P50 representative hindcast year 1984; cycle: 16; activity ID: 24; location: OFFSHORE; position: 32; safe-to-safe group: none; baseline duration: 3.000 h; weather/operational downtime: 0.000 h; elapsed duration: 3.000 h.
- 1100: Scenario: P50; P50 representative hindcast year 1984; cycle: 16; activity ID: 25; location: OFFSHORE; position: 32; safe-to-safe group: none; baseline duration: 1.000 h; weather/operational downtime: 12.000 h; elapsed duration: 13.000 h.
- 1101: Scenario: P50; P50 representative hindcast year 1984; cycle: 16; activity ID: 26; location: OFFSHORE; position: 32; safe-to-safe group: none; baseline duration: 2.000 h; weather/operational downtime: 0.000 h; elapsed duration: 2.000 h.
- 1102: Scenario: P50; P50 representative hindcast year 1984; cycle: 16; activity ID: 27; location: OFFSHORE; position: 32; safe-to-safe group: G1; baseline duration: 1.000 h; weather/operational downtime: 0.000 h; elapsed duration: 1.000 h.
- 1103: Scenario: P50; P50 representative hindcast year 1984; cycle: 16; activity ID: 28; location: OFFSHORE; position: 32; safe-to-safe group: G1; baseline duration: 3.500 h; weather/operational downtime: 0.000 h; elapsed duration: 3.500 h.
- 1104: Scenario: P50; P50 representative hindcast year 1984; cycle: 16; activity ID: 29; location: OFFSHORE; position: 32; safe-to-safe group: G1; baseline duration: 0.500 h; weather/operational downtime: 0.000 h; elapsed duration: 0.500 h.
- 1105: Scenario: P50; P50 representative hindcast year 1984; cycle: 16; activity ID: 30; location: OFFSHORE; position: 32; safe-to-safe group: G2; baseline duration: 0.500 h; weather/operational downtime: 0.000 h; elapsed duration: 0.500 h.
- 1106: Scenario: P50; P50 representative hindcast year 1984; cycle: 16; activity ID: 31; location: OFFSHORE; position: 32; safe-to-safe group: G2; baseline duration: 2.250 h; weather/operational downtime: 0.000 h; elapsed duration: 2.250 h.
- 1107: Scenario: P50; P50 representative hindcast year 1984; cycle: 16; activity ID: 32; location: OFFSHORE; position: 32; safe-to-safe group: G2; baseline duration: 0.500 h; weather/operational downtime: 0.000 h; elapsed duration: 0.500 h.
- 1108: Scenario: P50; P50 representative hindcast year 1984; cycle: 16; activity ID: 33; location: OFFSHORE; position: 32; safe-to-safe group: G3; baseline duration: 0.500 h; weather/operational downtime: 12.750 h; elapsed duration: 13.250 h.
- 1109: Scenario: P50; P50 representative hindcast year 1984; cycle: 16; activity ID: 34; location: OFFSHORE; position: 32; safe-to-safe group: G3; baseline duration: 1.750 h; weather/operational downtime: 0.000 h; elapsed duration: 1.750 h.
- 1110: Scenario: P50; P50 representative hindcast year 1984; cycle: 16; activity ID: 35; location: OFFSHORE; position: 32; safe-to-safe group: G3; baseline duration: 1.500 h; weather/operational downtime: 0.000 h; elapsed duration: 1.500 h.
- 1111: Scenario: P50; P50 representative hindcast year 1984; cycle: 16; activity ID: 36; location: OFFSHORE; position: 32; safe-to-safe group: G4; baseline duration: 1.750 h; weather/operational downtime: 0.000 h; elapsed duration: 1.750 h.
- 1112: Scenario: P50; P50 representative hindcast year 1984; cycle: 16; activity ID: 37; location: OFFSHORE; position: 32; safe-to-safe group: G4; baseline duration: 1.500 h; weather/operational downtime: 0.000 h; elapsed duration: 1.500 h.
- 1113: Scenario: P50; P50 representative hindcast year 1984; cycle: 16; activity ID: 38; location: OFFSHORE; position: 32; safe-to-safe group: G5; baseline duration: 1.750 h; weather/operational downtime: 0.000 h; elapsed duration: 1.750 h.
- 1114: Scenario: P50; P50 representative hindcast year 1984; cycle: 16; activity ID: 39; location: OFFSHORE; position: 32; safe-to-safe group: G5; baseline duration: 1.500 h; weather/operational downtime: 0.000 h; elapsed duration: 1.500 h.
- 1115: Scenario: P50; P50 representative hindcast year 1984; cycle: 16; activity ID: 40; location: OFFSHORE; position: 32; safe-to-safe group: none; baseline duration: 1.000 h; weather/operational downtime: 0.000 h; elapsed duration: 1.000 h.
- 1116: Scenario: P50; P50 representative hindcast year 1984; cycle: 16; activity ID: 41; location: OFFSHORE; position: 32; safe-to-safe group: none; baseline duration: 1.000 h; weather/operational downtime: 0.000 h; elapsed duration: 1.000 h.
- 1117: Scenario: P50; P50 representative hindcast year 1984; cycle: 16; activity ID: 42; location: OFFSHORE; position: 32; safe-to-safe group: none; baseline duration: 3.000 h; weather/operational downtime: 0.000 h; elapsed duration: 3.000 h.
- 1118: Scenario: P50; P50 representative hindcast year 1984; cycle: 16; activity ID: 43; location: OFFSHORE; position: 32; safe-to-safe group: none; baseline duration: 3.000 h; weather/operational downtime: 0.000 h; elapsed duration: 3.000 h.
- 1119: Scenario: P50; P50 representative hindcast year 1984; cycle: 16; activity ID: 44; location: OFFSHORE; position: 32; safe-to-safe group: none; baseline duration: 2.000 h; weather/operational downtime: 0.000 h; elapsed duration: 2.000 h.
- 1120: Scenario: P50; P50 representative hindcast year 1984; cycle: 16; activity ID: 45; location: OFFSHORE; position: n/a; safe-to-safe group: none; baseline duration: 5.200 h; weather/operational downtime: 0.000 h; elapsed duration: 5.250 h.

| ID | WBS | Task | Type | Duration | Start | Finish | Predecessors | Duration WDT [days] | Location | Activity ID | Position | Safe-to-safe group |
| --- | --- | --- | --- | --- | --- | --- | --- | --- | --- | --- | --- | --- |
| 1121 | 17 | **Cycle 17 — Positions 33–34** |  | 123.9eh | 2030-08-09 08:30 | 2030-08-15 00:45 |  | 0.510417 |  |  |  |  |
| 1122 | 17.1 | Port maneuvering | manual | 1eh | 2030-08-09 08:30 | 2030-08-09 09:30 | 1120 | 0.000000 | OFFSHORE | 1 |  |  |
| 1123 | 17.2 | Preload and jacking up at port | manual | 2eh | 2030-08-09 09:30 | 2030-08-09 11:30 | 1122 | 0.000000 | OFFSHORE | 2 |  |  |
| 1124 | 17.3 | Release crane, gangway etc and prep for lifting | manual | 3eh | 2030-08-09 11:30 | 2030-08-09 14:30 | 1123 | 0.000000 | OFFSHORE | 3 |  |  |
| 1125 | 17.4 | Load in/out WTG supplier equipment | manual | 1eh | 2030-08-09 14:30 | 2030-08-09 15:30 | 1124 | 0.000000 | OFFSHORE | 4 |  |  |
| 1126 | 17.5 | Loadout Nacelle #1 | manual | 2.25eh | 2030-08-09 15:30 | 2030-08-09 17:45 | 1125 | 0.000000 | OFFSHORE | 5 |  |  |
| 1127 | 17.6 | Loadout Tower #1 | manual | 2.25eh | 2030-08-09 17:45 | 2030-08-09 20:00 | 1126 | 0.000000 | OFFSHORE | 6 |  |  |
| 1128 | 17.7 | Loadout Blade 1 | manual | 1.5eh | 2030-08-09 20:00 | 2030-08-09 21:30 | 1127 | 0.000000 | OFFSHORE | 7 |  |  |
| 1129 | 17.8 | Loadout Blade 2 | manual | 1.5eh | 2030-08-09 21:30 | 2030-08-09 23:00 | 1128 | 0.000000 | OFFSHORE | 8 |  |  |
| 1130 | 17.9 | Loadout Blade 3 | manual | 1.5eh | 2030-08-09 23:00 | 2030-08-10 00:30 | 1129 | 0.000000 | OFFSHORE | 9 |  |  |
| 1131 | 17.10 | Load in/out WTG supplier equipment | manual | 1eh | 2030-08-10 00:30 | 2030-08-10 01:30 | 1130 | 0.000000 | OFFSHORE | 10 |  |  |
| 1132 | 17.11 | Loadout Nacelle #2 | manual | 2.25eh | 2030-08-10 01:30 | 2030-08-10 03:45 | 1131 | 0.000000 | OFFSHORE | 11 |  |  |
| 1133 | 17.12 | Loadout Tower #2 | manual | 2.25eh | 2030-08-10 03:45 | 2030-08-10 06:00 | 1132 | 0.000000 | OFFSHORE | 12 |  |  |
| 1134 | 17.13 | Loadout Blade 1 | manual | 1.5eh | 2030-08-10 06:00 | 2030-08-10 10:30 | 1133 | 0.125000 | OFFSHORE | 13 |  |  |
| 1135 | 17.14 | Loadout Blade 2 | manual | 1.5eh | 2030-08-10 10:30 | 2030-08-10 12:00 | 1134 | 0.000000 | OFFSHORE | 14 |  |  |
| 1136 | 17.15 | Loadout Blade 3 | manual | 1.5eh | 2030-08-10 12:00 | 2030-08-10 13:30 | 1135 | 0.000000 | OFFSHORE | 15 |  |  |
| 1137 | 17.16 | Secure of crane, gangway (at port)) | manual | 3eh | 2030-08-10 13:30 | 2030-08-10 16:30 | 1136 | 0.000000 | OFFSHORE | 16 |  |  |
| 1138 | 17.17 | Jacking down at port | manual | 2eh | 2030-08-10 16:30 | 2030-08-10 18:30 | 1137 | 0.000000 | OFFSHORE | 17 |  |  |
| 1139 | 17.18 | Port maneuvering | manual | 1eh | 2030-08-10 18:30 | 2030-08-10 19:30 | 1138 | 0.000000 | OFFSHORE | 18 |  |  |
| 1140 | 17.19 | Transit from port to site | manual | 5.2eh | 2030-08-10 19:30 | 2030-08-11 00:45 | 1139 | 0.000000 | OFFSHORE | 19 |  |  |
| 1141 | 17.20 | DP field check | manual | 0.5eh | 2030-08-11 00:45 | 2030-08-11 01:15 | 1140 | 0.000000 | OFFSHORE | 20 |  |  |
| 1142 | 17.21 | Transit to next foundation | manual | 1eh | 2030-08-11 01:15 | 2030-08-11 02:15 | 1141 | 0.000000 | OFFSHORE | 21 | 33 |  |
| 1143 | 17.22 | Positioning at WTG location | manual | 1eh | 2030-08-11 02:15 | 2030-08-11 03:15 | 1142 | 0.000000 | OFFSHORE | 22 | 33 |  |
| 1144 | 17.23 | Preload and jacking up at site | manual | 4eh | 2030-08-11 03:15 | 2030-08-11 07:15 | 1143 | 0.000000 | OFFSHORE | 23 | 33 |  |
| 1145 | 17.24 | Release crane, gangway and prep for lifting | manual | 3eh | 2030-08-11 07:15 | 2030-08-11 10:15 | 1144 | 0.000000 | OFFSHORE | 24 | 33 |  |
| 1146 | 17.25 | Remove TP cover and Preparation of TP | manual | 1eh | 2030-08-11 10:15 | 2030-08-11 11:15 | 1145 | 0.000000 | OFFSHORE | 25 | 33 |  |
| 1147 | 17.26 | Tower preparation, removal of seafastening bolts | manual | 2eh | 2030-08-11 11:15 | 2030-08-11 13:15 | 1146 | 0.000000 | OFFSHORE | 26 | 33 |  |
| 1148 | 17.27 | Tower rigging-up (attached lifting equipment) | manual | 1eh | 2030-08-11 13:15 | 2030-08-11 14:15 | 1147 | 0.000000 | OFFSHORE | 27 | 33 | G1 |
| 1149 | 17.28 | Tower Lifting (safe-to-safe) | manual | 3.5eh | 2030-08-11 14:15 | 2030-08-11 17:45 | 1148 | 0.000000 | OFFSHORE | 28 | 33 | G1 |
| 1150 | 17.29 | Tower derigging (remove lifting equipment) | manual | 0.5eh | 2030-08-11 17:45 | 2030-08-11 18:15 | 1149 | 0.000000 | OFFSHORE | 29 | 33 | G1 |
| 1151 | 17.30 | Nacelle preparation and rigging | manual | 0.5eh | 2030-08-11 18:15 | 2030-08-11 18:45 | 1150 | 0.000000 | OFFSHORE | 30 | 33 | G2 |
| 1152 | 17.31 | Nacelle Lifting (safe-to-safe) | manual | 2.25eh | 2030-08-11 18:45 | 2030-08-11 21:00 | 1151 | 0.000000 | OFFSHORE | 31 | 33 | G2 |
| 1153 | 17.32 | Nacelle derigging (remove lifting equipment) | manual | 0.5eh | 2030-08-11 21:00 | 2030-08-11 21:30 | 1152 | 0.000000 | OFFSHORE | 32 | 33 | G2 |
| 1154 | 17.33 | Blade yoke rigging and attachement to Blade #1 | manual | 0.5eh | 2030-08-11 21:30 | 2030-08-11 22:00 | 1153 | 0.000000 | OFFSHORE | 33 | 33 | G3 |
| 1155 | 17.34 | Blade #1 Lifting (safe-to-safe) | manual | 1.75eh | 2030-08-11 22:00 | 2030-08-11 23:45 | 1154 | 0.000000 | OFFSHORE | 34 | 33 | G3 |
| 1156 | 17.35 | Blade #1 completion work, re-locate blade yoke to next blade | manual | 1.5eh | 2030-08-11 23:45 | 2030-08-12 01:15 | 1155 | 0.000000 | OFFSHORE | 35 | 33 | G3 |
| 1157 | 17.36 | Blade #2 Lifting (safe-to-safe) | manual | 1.75eh | 2030-08-12 01:15 | 2030-08-12 03:00 | 1156 | 0.000000 | OFFSHORE | 36 | 33 | G4 |
| 1158 | 17.37 | Balde #2 completion work, re-locate blade yoke to next blade | manual | 1.5eh | 2030-08-12 03:00 | 2030-08-12 04:30 | 1157 | 0.000000 | OFFSHORE | 37 | 33 | G4 |
| 1159 | 17.38 | Blade #3 Lifting (safe-to-safe) | manual | 1.75eh | 2030-08-12 04:30 | 2030-08-12 12:45 | 1158 | 0.270833 | OFFSHORE | 38 | 33 | G5 |
| 1160 | 17.39 | Blade #3 completion work, blade yoke de-rigging | manual | 1.5eh | 2030-08-12 12:45 | 2030-08-12 14:15 | 1159 | 0.000000 | OFFSHORE | 39 | 33 | G5 |
| 1161 | 17.40 | Handling HSBM and lifting tools | manual | 1eh | 2030-08-12 14:15 | 2030-08-12 15:15 | 1160 | 0.000000 | OFFSHORE | 40 | 33 |  |
| 1162 | 17.41 | Lifting HSBM and lifting tools from Nacelle | manual | 1eh | 2030-08-12 15:15 | 2030-08-12 16:15 | 1161 | 0.000000 | OFFSHORE | 41 | 33 |  |
| 1163 | 17.42 | Turbine general completion works | manual | 3eh | 2030-08-12 16:15 | 2030-08-12 19:15 | 1162 | 0.000000 | OFFSHORE | 42 | 33 |  |
| 1164 | 17.43 | Secure of crane, gangway etc. Preparation for jacking down and sailing | manual | 3eh | 2030-08-12 19:15 | 2030-08-12 22:15 | 1163 | 0.000000 | OFFSHORE | 43 | 33 |  |
| 1165 | 17.44 | Jacking down at site | manual | 2eh | 2030-08-12 22:15 | 2030-08-13 00:15 | 1164 | 0.000000 | OFFSHORE | 44 | 33 |  |
| 1166 | 17.45 | Transit to next foundation | manual | 1eh | 2030-08-13 00:15 | 2030-08-13 01:15 | 1165 | 0.000000 | OFFSHORE | 21 | 34 |  |
| 1167 | 17.46 | Positioning at WTG location | manual | 1eh | 2030-08-13 01:15 | 2030-08-13 02:15 | 1166 | 0.000000 | OFFSHORE | 22 | 34 |  |
| 1168 | 17.47 | Preload and jacking up at site | manual | 4eh | 2030-08-13 02:15 | 2030-08-13 06:15 | 1167 | 0.000000 | OFFSHORE | 23 | 34 |  |
| 1169 | 17.48 | Release crane, gangway and prep for lifting | manual | 3eh | 2030-08-13 06:15 | 2030-08-13 09:15 | 1168 | 0.000000 | OFFSHORE | 24 | 34 |  |
| 1170 | 17.49 | Remove TP cover and Preparation of TP | manual | 1eh | 2030-08-13 09:15 | 2030-08-13 10:15 | 1169 | 0.000000 | OFFSHORE | 25 | 34 |  |
| 1171 | 17.50 | Tower preparation, removal of seafastening bolts | manual | 2eh | 2030-08-13 10:15 | 2030-08-13 12:15 | 1170 | 0.000000 | OFFSHORE | 26 | 34 |  |
| 1172 | 17.51 | Tower rigging-up (attached lifting equipment) | manual | 1eh | 2030-08-13 12:15 | 2030-08-13 16:00 | 1171 | 0.114583 | OFFSHORE | 27 | 34 | G1 |
| 1173 | 17.52 | Tower Lifting (safe-to-safe) | manual | 3.5eh | 2030-08-13 16:00 | 2030-08-13 19:30 | 1172 | 0.000000 | OFFSHORE | 28 | 34 | G1 |
| 1174 | 17.53 | Tower derigging (remove lifting equipment) | manual | 0.5eh | 2030-08-13 19:30 | 2030-08-13 20:00 | 1173 | 0.000000 | OFFSHORE | 29 | 34 | G1 |
| 1175 | 17.54 | Nacelle preparation and rigging | manual | 0.5eh | 2030-08-13 20:00 | 2030-08-13 20:30 | 1174 | 0.000000 | OFFSHORE | 30 | 34 | G2 |
| 1176 | 17.55 | Nacelle Lifting (safe-to-safe) | manual | 2.25eh | 2030-08-13 20:30 | 2030-08-13 22:45 | 1175 | 0.000000 | OFFSHORE | 31 | 34 | G2 |
| 1177 | 17.56 | Nacelle derigging (remove lifting equipment) | manual | 0.5eh | 2030-08-13 22:45 | 2030-08-13 23:15 | 1176 | 0.000000 | OFFSHORE | 32 | 34 | G2 |
| 1178 | 17.57 | Blade yoke rigging and attachement to Blade #1 | manual | 0.5eh | 2030-08-13 23:15 | 2030-08-13 23:45 | 1177 | 0.000000 | OFFSHORE | 33 | 34 | G3 |
| 1179 | 17.58 | Blade #1 Lifting (safe-to-safe) | manual | 1.75eh | 2030-08-13 23:45 | 2030-08-14 01:30 | 1178 | 0.000000 | OFFSHORE | 34 | 34 | G3 |
| 1180 | 17.59 | Blade #1 completion work, re-locate blade yoke to next blade | manual | 1.5eh | 2030-08-14 01:30 | 2030-08-14 03:00 | 1179 | 0.000000 | OFFSHORE | 35 | 34 | G3 |
| 1181 | 17.60 | Blade #2 Lifting (safe-to-safe) | manual | 1.75eh | 2030-08-14 03:00 | 2030-08-14 04:45 | 1180 | 0.000000 | OFFSHORE | 36 | 34 | G4 |
| 1182 | 17.61 | Balde #2 completion work, re-locate blade yoke to next blade | manual | 1.5eh | 2030-08-14 04:45 | 2030-08-14 06:15 | 1181 | 0.000000 | OFFSHORE | 37 | 34 | G4 |
| 1183 | 17.62 | Blade #3 Lifting (safe-to-safe) | manual | 1.75eh | 2030-08-14 06:15 | 2030-08-14 08:00 | 1182 | 0.000000 | OFFSHORE | 38 | 34 | G5 |
| 1184 | 17.63 | Blade #3 completion work, blade yoke de-rigging | manual | 1.5eh | 2030-08-14 08:00 | 2030-08-14 09:30 | 1183 | 0.000000 | OFFSHORE | 39 | 34 | G5 |
| 1185 | 17.64 | Handling HSBM and lifting tools | manual | 1eh | 2030-08-14 09:30 | 2030-08-14 10:30 | 1184 | 0.000000 | OFFSHORE | 40 | 34 |  |
| 1186 | 17.65 | Lifting HSBM and lifting tools from Nacelle | manual | 1eh | 2030-08-14 10:30 | 2030-08-14 11:30 | 1185 | 0.000000 | OFFSHORE | 41 | 34 |  |
| 1187 | 17.66 | Turbine general completion works | manual | 3eh | 2030-08-14 11:30 | 2030-08-14 14:30 | 1186 | 0.000000 | OFFSHORE | 42 | 34 |  |
| 1188 | 17.67 | Secure of crane, gangway etc. Preparation for jacking down and sailing | manual | 3eh | 2030-08-14 14:30 | 2030-08-14 17:30 | 1187 | 0.000000 | OFFSHORE | 43 | 34 |  |
| 1189 | 17.68 | Jacking down at site | manual | 2eh | 2030-08-14 17:30 | 2030-08-14 19:30 | 1188 | 0.000000 | OFFSHORE | 44 | 34 |  |
| 1190 | 17.69 | Transit from site to port | manual | 5.2eh | 2030-08-14 19:30 | 2030-08-15 00:45 | 1189 | 0.000000 | OFFSHORE | 45 |  |  |

Notes:
- 1121: P50 representative hindcast year 1984; cycle 17; baseline duration 5.163 days; downtime 0.510 days; elapsed duration 5.677 days.
- 1122: Scenario: P50; P50 representative hindcast year 1984; cycle: 17; activity ID: 1; location: OFFSHORE; position: n/a; safe-to-safe group: none; baseline duration: 1.000 h; weather/operational downtime: 0.000 h; elapsed duration: 1.000 h.
- 1123: Scenario: P50; P50 representative hindcast year 1984; cycle: 17; activity ID: 2; location: OFFSHORE; position: n/a; safe-to-safe group: none; baseline duration: 2.000 h; weather/operational downtime: 0.000 h; elapsed duration: 2.000 h.
- 1124: Scenario: P50; P50 representative hindcast year 1984; cycle: 17; activity ID: 3; location: OFFSHORE; position: n/a; safe-to-safe group: none; baseline duration: 3.000 h; weather/operational downtime: 0.000 h; elapsed duration: 3.000 h.
- 1125: Scenario: P50; P50 representative hindcast year 1984; cycle: 17; activity ID: 4; location: OFFSHORE; position: n/a; safe-to-safe group: none; baseline duration: 1.000 h; weather/operational downtime: 0.000 h; elapsed duration: 1.000 h.
- 1126: Scenario: P50; P50 representative hindcast year 1984; cycle: 17; activity ID: 5; location: OFFSHORE; position: n/a; safe-to-safe group: none; baseline duration: 2.250 h; weather/operational downtime: 0.000 h; elapsed duration: 2.250 h.
- 1127: Scenario: P50; P50 representative hindcast year 1984; cycle: 17; activity ID: 6; location: OFFSHORE; position: n/a; safe-to-safe group: none; baseline duration: 2.250 h; weather/operational downtime: 0.000 h; elapsed duration: 2.250 h.
- 1128: Scenario: P50; P50 representative hindcast year 1984; cycle: 17; activity ID: 7; location: OFFSHORE; position: n/a; safe-to-safe group: none; baseline duration: 1.500 h; weather/operational downtime: 0.000 h; elapsed duration: 1.500 h.
- 1129: Scenario: P50; P50 representative hindcast year 1984; cycle: 17; activity ID: 8; location: OFFSHORE; position: n/a; safe-to-safe group: none; baseline duration: 1.500 h; weather/operational downtime: 0.000 h; elapsed duration: 1.500 h.
- 1130: Scenario: P50; P50 representative hindcast year 1984; cycle: 17; activity ID: 9; location: OFFSHORE; position: n/a; safe-to-safe group: none; baseline duration: 1.500 h; weather/operational downtime: 0.000 h; elapsed duration: 1.500 h.
- 1131: Scenario: P50; P50 representative hindcast year 1984; cycle: 17; activity ID: 10; location: OFFSHORE; position: n/a; safe-to-safe group: none; baseline duration: 1.000 h; weather/operational downtime: 0.000 h; elapsed duration: 1.000 h.
- 1132: Scenario: P50; P50 representative hindcast year 1984; cycle: 17; activity ID: 11; location: OFFSHORE; position: n/a; safe-to-safe group: none; baseline duration: 2.250 h; weather/operational downtime: 0.000 h; elapsed duration: 2.250 h.
- 1133: Scenario: P50; P50 representative hindcast year 1984; cycle: 17; activity ID: 12; location: OFFSHORE; position: n/a; safe-to-safe group: none; baseline duration: 2.250 h; weather/operational downtime: 0.000 h; elapsed duration: 2.250 h.
- 1134: Scenario: P50; P50 representative hindcast year 1984; cycle: 17; activity ID: 13; location: OFFSHORE; position: n/a; safe-to-safe group: none; baseline duration: 1.500 h; weather/operational downtime: 3.000 h; elapsed duration: 4.500 h.
- 1135: Scenario: P50; P50 representative hindcast year 1984; cycle: 17; activity ID: 14; location: OFFSHORE; position: n/a; safe-to-safe group: none; baseline duration: 1.500 h; weather/operational downtime: 0.000 h; elapsed duration: 1.500 h.
- 1136: Scenario: P50; P50 representative hindcast year 1984; cycle: 17; activity ID: 15; location: OFFSHORE; position: n/a; safe-to-safe group: none; baseline duration: 1.500 h; weather/operational downtime: 0.000 h; elapsed duration: 1.500 h.
- 1137: Scenario: P50; P50 representative hindcast year 1984; cycle: 17; activity ID: 16; location: OFFSHORE; position: n/a; safe-to-safe group: none; baseline duration: 3.000 h; weather/operational downtime: 0.000 h; elapsed duration: 3.000 h.
- 1138: Scenario: P50; P50 representative hindcast year 1984; cycle: 17; activity ID: 17; location: OFFSHORE; position: n/a; safe-to-safe group: none; baseline duration: 2.000 h; weather/operational downtime: 0.000 h; elapsed duration: 2.000 h.
- 1139: Scenario: P50; P50 representative hindcast year 1984; cycle: 17; activity ID: 18; location: OFFSHORE; position: n/a; safe-to-safe group: none; baseline duration: 1.000 h; weather/operational downtime: 0.000 h; elapsed duration: 1.000 h.
- 1140: Scenario: P50; P50 representative hindcast year 1984; cycle: 17; activity ID: 19; location: OFFSHORE; position: n/a; safe-to-safe group: none; baseline duration: 5.200 h; weather/operational downtime: 0.000 h; elapsed duration: 5.250 h.
- 1141: Scenario: P50; P50 representative hindcast year 1984; cycle: 17; activity ID: 20; location: OFFSHORE; position: n/a; safe-to-safe group: none; baseline duration: 0.500 h; weather/operational downtime: 0.000 h; elapsed duration: 0.500 h.
- 1142: Scenario: P50; P50 representative hindcast year 1984; cycle: 17; activity ID: 21; location: OFFSHORE; position: 33; safe-to-safe group: none; baseline duration: 1.000 h; weather/operational downtime: 0.000 h; elapsed duration: 1.000 h.
- 1143: Scenario: P50; P50 representative hindcast year 1984; cycle: 17; activity ID: 22; location: OFFSHORE; position: 33; safe-to-safe group: none; baseline duration: 1.000 h; weather/operational downtime: 0.000 h; elapsed duration: 1.000 h.
- 1144: Scenario: P50; P50 representative hindcast year 1984; cycle: 17; activity ID: 23; location: OFFSHORE; position: 33; safe-to-safe group: none; baseline duration: 4.000 h; weather/operational downtime: 0.000 h; elapsed duration: 4.000 h.
- 1145: Scenario: P50; P50 representative hindcast year 1984; cycle: 17; activity ID: 24; location: OFFSHORE; position: 33; safe-to-safe group: none; baseline duration: 3.000 h; weather/operational downtime: 0.000 h; elapsed duration: 3.000 h.
- 1146: Scenario: P50; P50 representative hindcast year 1984; cycle: 17; activity ID: 25; location: OFFSHORE; position: 33; safe-to-safe group: none; baseline duration: 1.000 h; weather/operational downtime: 0.000 h; elapsed duration: 1.000 h.
- 1147: Scenario: P50; P50 representative hindcast year 1984; cycle: 17; activity ID: 26; location: OFFSHORE; position: 33; safe-to-safe group: none; baseline duration: 2.000 h; weather/operational downtime: 0.000 h; elapsed duration: 2.000 h.
- 1148: Scenario: P50; P50 representative hindcast year 1984; cycle: 17; activity ID: 27; location: OFFSHORE; position: 33; safe-to-safe group: G1; baseline duration: 1.000 h; weather/operational downtime: 0.000 h; elapsed duration: 1.000 h.
- 1149: Scenario: P50; P50 representative hindcast year 1984; cycle: 17; activity ID: 28; location: OFFSHORE; position: 33; safe-to-safe group: G1; baseline duration: 3.500 h; weather/operational downtime: 0.000 h; elapsed duration: 3.500 h.
- 1150: Scenario: P50; P50 representative hindcast year 1984; cycle: 17; activity ID: 29; location: OFFSHORE; position: 33; safe-to-safe group: G1; baseline duration: 0.500 h; weather/operational downtime: 0.000 h; elapsed duration: 0.500 h.
- 1151: Scenario: P50; P50 representative hindcast year 1984; cycle: 17; activity ID: 30; location: OFFSHORE; position: 33; safe-to-safe group: G2; baseline duration: 0.500 h; weather/operational downtime: 0.000 h; elapsed duration: 0.500 h.
- 1152: Scenario: P50; P50 representative hindcast year 1984; cycle: 17; activity ID: 31; location: OFFSHORE; position: 33; safe-to-safe group: G2; baseline duration: 2.250 h; weather/operational downtime: 0.000 h; elapsed duration: 2.250 h.
- 1153: Scenario: P50; P50 representative hindcast year 1984; cycle: 17; activity ID: 32; location: OFFSHORE; position: 33; safe-to-safe group: G2; baseline duration: 0.500 h; weather/operational downtime: 0.000 h; elapsed duration: 0.500 h.
- 1154: Scenario: P50; P50 representative hindcast year 1984; cycle: 17; activity ID: 33; location: OFFSHORE; position: 33; safe-to-safe group: G3; baseline duration: 0.500 h; weather/operational downtime: 0.000 h; elapsed duration: 0.500 h.
- 1155: Scenario: P50; P50 representative hindcast year 1984; cycle: 17; activity ID: 34; location: OFFSHORE; position: 33; safe-to-safe group: G3; baseline duration: 1.750 h; weather/operational downtime: 0.000 h; elapsed duration: 1.750 h.
- 1156: Scenario: P50; P50 representative hindcast year 1984; cycle: 17; activity ID: 35; location: OFFSHORE; position: 33; safe-to-safe group: G3; baseline duration: 1.500 h; weather/operational downtime: 0.000 h; elapsed duration: 1.500 h.
- 1157: Scenario: P50; P50 representative hindcast year 1984; cycle: 17; activity ID: 36; location: OFFSHORE; position: 33; safe-to-safe group: G4; baseline duration: 1.750 h; weather/operational downtime: 0.000 h; elapsed duration: 1.750 h.
- 1158: Scenario: P50; P50 representative hindcast year 1984; cycle: 17; activity ID: 37; location: OFFSHORE; position: 33; safe-to-safe group: G4; baseline duration: 1.500 h; weather/operational downtime: 0.000 h; elapsed duration: 1.500 h.
- 1159: Scenario: P50; P50 representative hindcast year 1984; cycle: 17; activity ID: 38; location: OFFSHORE; position: 33; safe-to-safe group: G5; baseline duration: 1.750 h; weather/operational downtime: 6.500 h; elapsed duration: 8.250 h.
- 1160: Scenario: P50; P50 representative hindcast year 1984; cycle: 17; activity ID: 39; location: OFFSHORE; position: 33; safe-to-safe group: G5; baseline duration: 1.500 h; weather/operational downtime: 0.000 h; elapsed duration: 1.500 h.
- 1161: Scenario: P50; P50 representative hindcast year 1984; cycle: 17; activity ID: 40; location: OFFSHORE; position: 33; safe-to-safe group: none; baseline duration: 1.000 h; weather/operational downtime: 0.000 h; elapsed duration: 1.000 h.
- 1162: Scenario: P50; P50 representative hindcast year 1984; cycle: 17; activity ID: 41; location: OFFSHORE; position: 33; safe-to-safe group: none; baseline duration: 1.000 h; weather/operational downtime: 0.000 h; elapsed duration: 1.000 h.
- 1163: Scenario: P50; P50 representative hindcast year 1984; cycle: 17; activity ID: 42; location: OFFSHORE; position: 33; safe-to-safe group: none; baseline duration: 3.000 h; weather/operational downtime: 0.000 h; elapsed duration: 3.000 h.
- 1164: Scenario: P50; P50 representative hindcast year 1984; cycle: 17; activity ID: 43; location: OFFSHORE; position: 33; safe-to-safe group: none; baseline duration: 3.000 h; weather/operational downtime: 0.000 h; elapsed duration: 3.000 h.
- 1165: Scenario: P50; P50 representative hindcast year 1984; cycle: 17; activity ID: 44; location: OFFSHORE; position: 33; safe-to-safe group: none; baseline duration: 2.000 h; weather/operational downtime: 0.000 h; elapsed duration: 2.000 h.
- 1166: Scenario: P50; P50 representative hindcast year 1984; cycle: 17; activity ID: 21; location: OFFSHORE; position: 34; safe-to-safe group: none; baseline duration: 1.000 h; weather/operational downtime: 0.000 h; elapsed duration: 1.000 h.
- 1167: Scenario: P50; P50 representative hindcast year 1984; cycle: 17; activity ID: 22; location: OFFSHORE; position: 34; safe-to-safe group: none; baseline duration: 1.000 h; weather/operational downtime: 0.000 h; elapsed duration: 1.000 h.
- 1168: Scenario: P50; P50 representative hindcast year 1984; cycle: 17; activity ID: 23; location: OFFSHORE; position: 34; safe-to-safe group: none; baseline duration: 4.000 h; weather/operational downtime: 0.000 h; elapsed duration: 4.000 h.
- 1169: Scenario: P50; P50 representative hindcast year 1984; cycle: 17; activity ID: 24; location: OFFSHORE; position: 34; safe-to-safe group: none; baseline duration: 3.000 h; weather/operational downtime: 0.000 h; elapsed duration: 3.000 h.
- 1170: Scenario: P50; P50 representative hindcast year 1984; cycle: 17; activity ID: 25; location: OFFSHORE; position: 34; safe-to-safe group: none; baseline duration: 1.000 h; weather/operational downtime: 0.000 h; elapsed duration: 1.000 h.
- 1171: Scenario: P50; P50 representative hindcast year 1984; cycle: 17; activity ID: 26; location: OFFSHORE; position: 34; safe-to-safe group: none; baseline duration: 2.000 h; weather/operational downtime: 0.000 h; elapsed duration: 2.000 h.
- 1172: Scenario: P50; P50 representative hindcast year 1984; cycle: 17; activity ID: 27; location: OFFSHORE; position: 34; safe-to-safe group: G1; baseline duration: 1.000 h; weather/operational downtime: 2.750 h; elapsed duration: 3.750 h.
- 1173: Scenario: P50; P50 representative hindcast year 1984; cycle: 17; activity ID: 28; location: OFFSHORE; position: 34; safe-to-safe group: G1; baseline duration: 3.500 h; weather/operational downtime: 0.000 h; elapsed duration: 3.500 h.
- 1174: Scenario: P50; P50 representative hindcast year 1984; cycle: 17; activity ID: 29; location: OFFSHORE; position: 34; safe-to-safe group: G1; baseline duration: 0.500 h; weather/operational downtime: 0.000 h; elapsed duration: 0.500 h.
- 1175: Scenario: P50; P50 representative hindcast year 1984; cycle: 17; activity ID: 30; location: OFFSHORE; position: 34; safe-to-safe group: G2; baseline duration: 0.500 h; weather/operational downtime: 0.000 h; elapsed duration: 0.500 h.
- 1176: Scenario: P50; P50 representative hindcast year 1984; cycle: 17; activity ID: 31; location: OFFSHORE; position: 34; safe-to-safe group: G2; baseline duration: 2.250 h; weather/operational downtime: 0.000 h; elapsed duration: 2.250 h.
- 1177: Scenario: P50; P50 representative hindcast year 1984; cycle: 17; activity ID: 32; location: OFFSHORE; position: 34; safe-to-safe group: G2; baseline duration: 0.500 h; weather/operational downtime: 0.000 h; elapsed duration: 0.500 h.
- 1178: Scenario: P50; P50 representative hindcast year 1984; cycle: 17; activity ID: 33; location: OFFSHORE; position: 34; safe-to-safe group: G3; baseline duration: 0.500 h; weather/operational downtime: 0.000 h; elapsed duration: 0.500 h.
- 1179: Scenario: P50; P50 representative hindcast year 1984; cycle: 17; activity ID: 34; location: OFFSHORE; position: 34; safe-to-safe group: G3; baseline duration: 1.750 h; weather/operational downtime: 0.000 h; elapsed duration: 1.750 h.
- 1180: Scenario: P50; P50 representative hindcast year 1984; cycle: 17; activity ID: 35; location: OFFSHORE; position: 34; safe-to-safe group: G3; baseline duration: 1.500 h; weather/operational downtime: 0.000 h; elapsed duration: 1.500 h.
- 1181: Scenario: P50; P50 representative hindcast year 1984; cycle: 17; activity ID: 36; location: OFFSHORE; position: 34; safe-to-safe group: G4; baseline duration: 1.750 h; weather/operational downtime: 0.000 h; elapsed duration: 1.750 h.
- 1182: Scenario: P50; P50 representative hindcast year 1984; cycle: 17; activity ID: 37; location: OFFSHORE; position: 34; safe-to-safe group: G4; baseline duration: 1.500 h; weather/operational downtime: 0.000 h; elapsed duration: 1.500 h.
- 1183: Scenario: P50; P50 representative hindcast year 1984; cycle: 17; activity ID: 38; location: OFFSHORE; position: 34; safe-to-safe group: G5; baseline duration: 1.750 h; weather/operational downtime: 0.000 h; elapsed duration: 1.750 h.
- 1184: Scenario: P50; P50 representative hindcast year 1984; cycle: 17; activity ID: 39; location: OFFSHORE; position: 34; safe-to-safe group: G5; baseline duration: 1.500 h; weather/operational downtime: 0.000 h; elapsed duration: 1.500 h.
- 1185: Scenario: P50; P50 representative hindcast year 1984; cycle: 17; activity ID: 40; location: OFFSHORE; position: 34; safe-to-safe group: none; baseline duration: 1.000 h; weather/operational downtime: 0.000 h; elapsed duration: 1.000 h.
- 1186: Scenario: P50; P50 representative hindcast year 1984; cycle: 17; activity ID: 41; location: OFFSHORE; position: 34; safe-to-safe group: none; baseline duration: 1.000 h; weather/operational downtime: 0.000 h; elapsed duration: 1.000 h.
- 1187: Scenario: P50; P50 representative hindcast year 1984; cycle: 17; activity ID: 42; location: OFFSHORE; position: 34; safe-to-safe group: none; baseline duration: 3.000 h; weather/operational downtime: 0.000 h; elapsed duration: 3.000 h.
- 1188: Scenario: P50; P50 representative hindcast year 1984; cycle: 17; activity ID: 43; location: OFFSHORE; position: 34; safe-to-safe group: none; baseline duration: 3.000 h; weather/operational downtime: 0.000 h; elapsed duration: 3.000 h.
- 1189: Scenario: P50; P50 representative hindcast year 1984; cycle: 17; activity ID: 44; location: OFFSHORE; position: 34; safe-to-safe group: none; baseline duration: 2.000 h; weather/operational downtime: 0.000 h; elapsed duration: 2.000 h.
- 1190: Scenario: P50; P50 representative hindcast year 1984; cycle: 17; activity ID: 45; location: OFFSHORE; position: n/a; safe-to-safe group: none; baseline duration: 5.200 h; weather/operational downtime: 0.000 h; elapsed duration: 5.250 h.

| ID | WBS | Task | Type | Duration | Start | Finish | Predecessors | Duration WDT [days] | Location | Activity ID | Position | Safe-to-safe group |
| --- | --- | --- | --- | --- | --- | --- | --- | --- | --- | --- | --- | --- |
| 1191 | 18 | **Cycle 18 — Positions 35–36** |  | 123.9eh | 2030-08-15 00:45 | 2030-08-25 13:15 |  | 5.354167 |  |  |  |  |
| 1192 | 18.1 | Port maneuvering | manual | 1eh | 2030-08-15 00:45 | 2030-08-15 01:45 | 1190 | 0.000000 | OFFSHORE | 1 |  |  |
| 1193 | 18.2 | Preload and jacking up at port | manual | 2eh | 2030-08-15 01:45 | 2030-08-15 03:45 | 1192 | 0.000000 | OFFSHORE | 2 |  |  |
| 1194 | 18.3 | Release crane, gangway etc and prep for lifting | manual | 3eh | 2030-08-15 03:45 | 2030-08-15 06:45 | 1193 | 0.000000 | OFFSHORE | 3 |  |  |
| 1195 | 18.4 | Load in/out WTG supplier equipment | manual | 1eh | 2030-08-15 06:45 | 2030-08-15 07:45 | 1194 | 0.000000 | OFFSHORE | 4 |  |  |
| 1196 | 18.5 | Loadout Nacelle #1 | manual | 2.25eh | 2030-08-15 07:45 | 2030-08-19 01:15 | 1195 | 3.635417 | OFFSHORE | 5 |  |  |
| 1197 | 18.6 | Loadout Tower #1 | manual | 2.25eh | 2030-08-19 01:15 | 2030-08-19 03:30 | 1196 | 0.000000 | OFFSHORE | 6 |  |  |
| 1198 | 18.7 | Loadout Blade 1 | manual | 1.5eh | 2030-08-19 03:30 | 2030-08-19 05:00 | 1197 | 0.000000 | OFFSHORE | 7 |  |  |
| 1199 | 18.8 | Loadout Blade 2 | manual | 1.5eh | 2030-08-19 05:00 | 2030-08-19 06:30 | 1198 | 0.000000 | OFFSHORE | 8 |  |  |
| 1200 | 18.9 | Loadout Blade 3 | manual | 1.5eh | 2030-08-19 06:30 | 2030-08-19 08:00 | 1199 | 0.000000 | OFFSHORE | 9 |  |  |
| 1201 | 18.10 | Load in/out WTG supplier equipment | manual | 1eh | 2030-08-19 08:00 | 2030-08-19 09:00 | 1200 | 0.000000 | OFFSHORE | 10 |  |  |
| 1202 | 18.11 | Loadout Nacelle #2 | manual | 2.25eh | 2030-08-19 09:00 | 2030-08-19 11:15 | 1201 | 0.000000 | OFFSHORE | 11 |  |  |
| 1203 | 18.12 | Loadout Tower #2 | manual | 2.25eh | 2030-08-19 11:15 | 2030-08-19 13:30 | 1202 | 0.000000 | OFFSHORE | 12 |  |  |
| 1204 | 18.13 | Loadout Blade 1 | manual | 1.5eh | 2030-08-19 13:30 | 2030-08-19 15:00 | 1203 | 0.000000 | OFFSHORE | 13 |  |  |
| 1205 | 18.14 | Loadout Blade 2 | manual | 1.5eh | 2030-08-19 15:00 | 2030-08-19 16:30 | 1204 | 0.000000 | OFFSHORE | 14 |  |  |
| 1206 | 18.15 | Loadout Blade 3 | manual | 1.5eh | 2030-08-19 16:30 | 2030-08-19 18:00 | 1205 | 0.000000 | OFFSHORE | 15 |  |  |
| 1207 | 18.16 | Secure of crane, gangway (at port)) | manual | 3eh | 2030-08-19 18:00 | 2030-08-19 21:00 | 1206 | 0.000000 | OFFSHORE | 16 |  |  |
| 1208 | 18.17 | Jacking down at port | manual | 2eh | 2030-08-19 21:00 | 2030-08-19 23:00 | 1207 | 0.000000 | OFFSHORE | 17 |  |  |
| 1209 | 18.18 | Port maneuvering | manual | 1eh | 2030-08-19 23:00 | 2030-08-20 00:00 | 1208 | 0.000000 | OFFSHORE | 18 |  |  |
| 1210 | 18.19 | Transit from port to site | manual | 5.2eh | 2030-08-20 00:00 | 2030-08-20 05:15 | 1209 | 0.000000 | OFFSHORE | 19 |  |  |
| 1211 | 18.20 | DP field check | manual | 0.5eh | 2030-08-20 05:15 | 2030-08-21 15:30 | 1210 | 1.406250 | OFFSHORE | 20 |  |  |
| 1212 | 18.21 | Transit to next foundation | manual | 1eh | 2030-08-21 15:30 | 2030-08-21 16:30 | 1211 | 0.000000 | OFFSHORE | 21 | 35 |  |
| 1213 | 18.22 | Positioning at WTG location | manual | 1eh | 2030-08-21 16:30 | 2030-08-21 17:30 | 1212 | 0.000000 | OFFSHORE | 22 | 35 |  |
| 1214 | 18.23 | Preload and jacking up at site | manual | 4eh | 2030-08-21 17:30 | 2030-08-22 05:00 | 1213 | 0.312500 | OFFSHORE | 23 | 35 |  |
| 1215 | 18.24 | Release crane, gangway and prep for lifting | manual | 3eh | 2030-08-22 05:00 | 2030-08-22 08:00 | 1214 | 0.000000 | OFFSHORE | 24 | 35 |  |
| 1216 | 18.25 | Remove TP cover and Preparation of TP | manual | 1eh | 2030-08-22 08:00 | 2030-08-22 09:00 | 1215 | 0.000000 | OFFSHORE | 25 | 35 |  |
| 1217 | 18.26 | Tower preparation, removal of seafastening bolts | manual | 2eh | 2030-08-22 09:00 | 2030-08-22 11:00 | 1216 | 0.000000 | OFFSHORE | 26 | 35 |  |
| 1218 | 18.27 | Tower rigging-up (attached lifting equipment) | manual | 1eh | 2030-08-22 11:00 | 2030-08-22 12:00 | 1217 | 0.000000 | OFFSHORE | 27 | 35 | G1 |
| 1219 | 18.28 | Tower Lifting (safe-to-safe) | manual | 3.5eh | 2030-08-22 12:00 | 2030-08-22 15:30 | 1218 | 0.000000 | OFFSHORE | 28 | 35 | G1 |
| 1220 | 18.29 | Tower derigging (remove lifting equipment) | manual | 0.5eh | 2030-08-22 15:30 | 2030-08-22 16:00 | 1219 | 0.000000 | OFFSHORE | 29 | 35 | G1 |
| 1221 | 18.30 | Nacelle preparation and rigging | manual | 0.5eh | 2030-08-22 16:00 | 2030-08-22 16:30 | 1220 | 0.000000 | OFFSHORE | 30 | 35 | G2 |
| 1222 | 18.31 | Nacelle Lifting (safe-to-safe) | manual | 2.25eh | 2030-08-22 16:30 | 2030-08-22 18:45 | 1221 | 0.000000 | OFFSHORE | 31 | 35 | G2 |
| 1223 | 18.32 | Nacelle derigging (remove lifting equipment) | manual | 0.5eh | 2030-08-22 18:45 | 2030-08-22 19:15 | 1222 | 0.000000 | OFFSHORE | 32 | 35 | G2 |
| 1224 | 18.33 | Blade yoke rigging and attachement to Blade #1 | manual | 0.5eh | 2030-08-22 19:15 | 2030-08-22 19:45 | 1223 | 0.000000 | OFFSHORE | 33 | 35 | G3 |
| 1225 | 18.34 | Blade #1 Lifting (safe-to-safe) | manual | 1.75eh | 2030-08-22 19:45 | 2030-08-22 21:30 | 1224 | 0.000000 | OFFSHORE | 34 | 35 | G3 |
| 1226 | 18.35 | Blade #1 completion work, re-locate blade yoke to next blade | manual | 1.5eh | 2030-08-22 21:30 | 2030-08-22 23:00 | 1225 | 0.000000 | OFFSHORE | 35 | 35 | G3 |
| 1227 | 18.36 | Blade #2 Lifting (safe-to-safe) | manual | 1.75eh | 2030-08-22 23:00 | 2030-08-23 00:45 | 1226 | 0.000000 | OFFSHORE | 36 | 35 | G4 |
| 1228 | 18.37 | Balde #2 completion work, re-locate blade yoke to next blade | manual | 1.5eh | 2030-08-23 00:45 | 2030-08-23 02:15 | 1227 | 0.000000 | OFFSHORE | 37 | 35 | G4 |
| 1229 | 18.38 | Blade #3 Lifting (safe-to-safe) | manual | 1.75eh | 2030-08-23 02:15 | 2030-08-23 04:00 | 1228 | 0.000000 | OFFSHORE | 38 | 35 | G5 |
| 1230 | 18.39 | Blade #3 completion work, blade yoke de-rigging | manual | 1.5eh | 2030-08-23 04:00 | 2030-08-23 05:30 | 1229 | 0.000000 | OFFSHORE | 39 | 35 | G5 |
| 1231 | 18.40 | Handling HSBM and lifting tools | manual | 1eh | 2030-08-23 05:30 | 2030-08-23 06:30 | 1230 | 0.000000 | OFFSHORE | 40 | 35 |  |
| 1232 | 18.41 | Lifting HSBM and lifting tools from Nacelle | manual | 1eh | 2030-08-23 06:30 | 2030-08-23 07:30 | 1231 | 0.000000 | OFFSHORE | 41 | 35 |  |
| 1233 | 18.42 | Turbine general completion works | manual | 3eh | 2030-08-23 07:30 | 2030-08-23 10:30 | 1232 | 0.000000 | OFFSHORE | 42 | 35 |  |
| 1234 | 18.43 | Secure of crane, gangway etc. Preparation for jacking down and sailing | manual | 3eh | 2030-08-23 10:30 | 2030-08-23 13:30 | 1233 | 0.000000 | OFFSHORE | 43 | 35 |  |
| 1235 | 18.44 | Jacking down at site | manual | 2eh | 2030-08-23 13:30 | 2030-08-23 15:30 | 1234 | 0.000000 | OFFSHORE | 44 | 35 |  |
| 1236 | 18.45 | Transit to next foundation | manual | 1eh | 2030-08-23 15:30 | 2030-08-23 16:30 | 1235 | 0.000000 | OFFSHORE | 21 | 36 |  |
| 1237 | 18.46 | Positioning at WTG location | manual | 1eh | 2030-08-23 16:30 | 2030-08-23 17:30 | 1236 | 0.000000 | OFFSHORE | 22 | 36 |  |
| 1238 | 18.47 | Preload and jacking up at site | manual | 4eh | 2030-08-23 17:30 | 2030-08-23 21:30 | 1237 | 0.000000 | OFFSHORE | 23 | 36 |  |
| 1239 | 18.48 | Release crane, gangway and prep for lifting | manual | 3eh | 2030-08-23 21:30 | 2030-08-24 00:30 | 1238 | 0.000000 | OFFSHORE | 24 | 36 |  |
| 1240 | 18.49 | Remove TP cover and Preparation of TP | manual | 1eh | 2030-08-24 00:30 | 2030-08-24 01:30 | 1239 | 0.000000 | OFFSHORE | 25 | 36 |  |
| 1241 | 18.50 | Tower preparation, removal of seafastening bolts | manual | 2eh | 2030-08-24 01:30 | 2030-08-24 03:30 | 1240 | 0.000000 | OFFSHORE | 26 | 36 |  |
| 1242 | 18.51 | Tower rigging-up (attached lifting equipment) | manual | 1eh | 2030-08-24 03:30 | 2030-08-24 04:30 | 1241 | 0.000000 | OFFSHORE | 27 | 36 | G1 |
| 1243 | 18.52 | Tower Lifting (safe-to-safe) | manual | 3.5eh | 2030-08-24 04:30 | 2030-08-24 08:00 | 1242 | 0.000000 | OFFSHORE | 28 | 36 | G1 |
| 1244 | 18.53 | Tower derigging (remove lifting equipment) | manual | 0.5eh | 2030-08-24 08:00 | 2030-08-24 08:30 | 1243 | 0.000000 | OFFSHORE | 29 | 36 | G1 |
| 1245 | 18.54 | Nacelle preparation and rigging | manual | 0.5eh | 2030-08-24 08:30 | 2030-08-24 09:00 | 1244 | 0.000000 | OFFSHORE | 30 | 36 | G2 |
| 1246 | 18.55 | Nacelle Lifting (safe-to-safe) | manual | 2.25eh | 2030-08-24 09:00 | 2030-08-24 11:15 | 1245 | 0.000000 | OFFSHORE | 31 | 36 | G2 |
| 1247 | 18.56 | Nacelle derigging (remove lifting equipment) | manual | 0.5eh | 2030-08-24 11:15 | 2030-08-24 11:45 | 1246 | 0.000000 | OFFSHORE | 32 | 36 | G2 |
| 1248 | 18.57 | Blade yoke rigging and attachement to Blade #1 | manual | 0.5eh | 2030-08-24 11:45 | 2030-08-24 12:15 | 1247 | 0.000000 | OFFSHORE | 33 | 36 | G3 |
| 1249 | 18.58 | Blade #1 Lifting (safe-to-safe) | manual | 1.75eh | 2030-08-24 12:15 | 2030-08-24 14:00 | 1248 | 0.000000 | OFFSHORE | 34 | 36 | G3 |
| 1250 | 18.59 | Blade #1 completion work, re-locate blade yoke to next blade | manual | 1.5eh | 2030-08-24 14:00 | 2030-08-24 15:30 | 1249 | 0.000000 | OFFSHORE | 35 | 36 | G3 |
| 1251 | 18.60 | Blade #2 Lifting (safe-to-safe) | manual | 1.75eh | 2030-08-24 15:30 | 2030-08-24 17:15 | 1250 | 0.000000 | OFFSHORE | 36 | 36 | G4 |
| 1252 | 18.61 | Balde #2 completion work, re-locate blade yoke to next blade | manual | 1.5eh | 2030-08-24 17:15 | 2030-08-24 18:45 | 1251 | 0.000000 | OFFSHORE | 37 | 36 | G4 |
| 1253 | 18.62 | Blade #3 Lifting (safe-to-safe) | manual | 1.75eh | 2030-08-24 18:45 | 2030-08-24 20:30 | 1252 | 0.000000 | OFFSHORE | 38 | 36 | G5 |
| 1254 | 18.63 | Blade #3 completion work, blade yoke de-rigging | manual | 1.5eh | 2030-08-24 20:30 | 2030-08-24 22:00 | 1253 | 0.000000 | OFFSHORE | 39 | 36 | G5 |
| 1255 | 18.64 | Handling HSBM and lifting tools | manual | 1eh | 2030-08-24 22:00 | 2030-08-24 23:00 | 1254 | 0.000000 | OFFSHORE | 40 | 36 |  |
| 1256 | 18.65 | Lifting HSBM and lifting tools from Nacelle | manual | 1eh | 2030-08-24 23:00 | 2030-08-25 00:00 | 1255 | 0.000000 | OFFSHORE | 41 | 36 |  |
| 1257 | 18.66 | Turbine general completion works | manual | 3eh | 2030-08-25 00:00 | 2030-08-25 03:00 | 1256 | 0.000000 | OFFSHORE | 42 | 36 |  |
| 1258 | 18.67 | Secure of crane, gangway etc. Preparation for jacking down and sailing | manual | 3eh | 2030-08-25 03:00 | 2030-08-25 06:00 | 1257 | 0.000000 | OFFSHORE | 43 | 36 |  |
| 1259 | 18.68 | Jacking down at site | manual | 2eh | 2030-08-25 06:00 | 2030-08-25 08:00 | 1258 | 0.000000 | OFFSHORE | 44 | 36 |  |
| 1260 | 18.69 | Transit from site to port | manual | 5.2eh | 2030-08-25 08:00 | 2030-08-25 13:15 | 1259 | 0.000000 | OFFSHORE | 45 |  |  |

Notes:
- 1191: P50 representative hindcast year 1984; cycle 18; baseline duration 5.163 days; downtime 5.354 days; elapsed duration 10.521 days.
- 1192: Scenario: P50; P50 representative hindcast year 1984; cycle: 18; activity ID: 1; location: OFFSHORE; position: n/a; safe-to-safe group: none; baseline duration: 1.000 h; weather/operational downtime: 0.000 h; elapsed duration: 1.000 h.
- 1193: Scenario: P50; P50 representative hindcast year 1984; cycle: 18; activity ID: 2; location: OFFSHORE; position: n/a; safe-to-safe group: none; baseline duration: 2.000 h; weather/operational downtime: 0.000 h; elapsed duration: 2.000 h.
- 1194: Scenario: P50; P50 representative hindcast year 1984; cycle: 18; activity ID: 3; location: OFFSHORE; position: n/a; safe-to-safe group: none; baseline duration: 3.000 h; weather/operational downtime: 0.000 h; elapsed duration: 3.000 h.
- 1195: Scenario: P50; P50 representative hindcast year 1984; cycle: 18; activity ID: 4; location: OFFSHORE; position: n/a; safe-to-safe group: none; baseline duration: 1.000 h; weather/operational downtime: 0.000 h; elapsed duration: 1.000 h.
- 1196: Scenario: P50; P50 representative hindcast year 1984; cycle: 18; activity ID: 5; location: OFFSHORE; position: n/a; safe-to-safe group: none; baseline duration: 2.250 h; weather/operational downtime: 87.250 h; elapsed duration: 89.500 h.
- 1197: Scenario: P50; P50 representative hindcast year 1984; cycle: 18; activity ID: 6; location: OFFSHORE; position: n/a; safe-to-safe group: none; baseline duration: 2.250 h; weather/operational downtime: 0.000 h; elapsed duration: 2.250 h.
- 1198: Scenario: P50; P50 representative hindcast year 1984; cycle: 18; activity ID: 7; location: OFFSHORE; position: n/a; safe-to-safe group: none; baseline duration: 1.500 h; weather/operational downtime: 0.000 h; elapsed duration: 1.500 h.
- 1199: Scenario: P50; P50 representative hindcast year 1984; cycle: 18; activity ID: 8; location: OFFSHORE; position: n/a; safe-to-safe group: none; baseline duration: 1.500 h; weather/operational downtime: 0.000 h; elapsed duration: 1.500 h.
- 1200: Scenario: P50; P50 representative hindcast year 1984; cycle: 18; activity ID: 9; location: OFFSHORE; position: n/a; safe-to-safe group: none; baseline duration: 1.500 h; weather/operational downtime: 0.000 h; elapsed duration: 1.500 h.
- 1201: Scenario: P50; P50 representative hindcast year 1984; cycle: 18; activity ID: 10; location: OFFSHORE; position: n/a; safe-to-safe group: none; baseline duration: 1.000 h; weather/operational downtime: 0.000 h; elapsed duration: 1.000 h.
- 1202: Scenario: P50; P50 representative hindcast year 1984; cycle: 18; activity ID: 11; location: OFFSHORE; position: n/a; safe-to-safe group: none; baseline duration: 2.250 h; weather/operational downtime: 0.000 h; elapsed duration: 2.250 h.
- 1203: Scenario: P50; P50 representative hindcast year 1984; cycle: 18; activity ID: 12; location: OFFSHORE; position: n/a; safe-to-safe group: none; baseline duration: 2.250 h; weather/operational downtime: 0.000 h; elapsed duration: 2.250 h.
- 1204: Scenario: P50; P50 representative hindcast year 1984; cycle: 18; activity ID: 13; location: OFFSHORE; position: n/a; safe-to-safe group: none; baseline duration: 1.500 h; weather/operational downtime: 0.000 h; elapsed duration: 1.500 h.
- 1205: Scenario: P50; P50 representative hindcast year 1984; cycle: 18; activity ID: 14; location: OFFSHORE; position: n/a; safe-to-safe group: none; baseline duration: 1.500 h; weather/operational downtime: 0.000 h; elapsed duration: 1.500 h.
- 1206: Scenario: P50; P50 representative hindcast year 1984; cycle: 18; activity ID: 15; location: OFFSHORE; position: n/a; safe-to-safe group: none; baseline duration: 1.500 h; weather/operational downtime: 0.000 h; elapsed duration: 1.500 h.
- 1207: Scenario: P50; P50 representative hindcast year 1984; cycle: 18; activity ID: 16; location: OFFSHORE; position: n/a; safe-to-safe group: none; baseline duration: 3.000 h; weather/operational downtime: 0.000 h; elapsed duration: 3.000 h.
- 1208: Scenario: P50; P50 representative hindcast year 1984; cycle: 18; activity ID: 17; location: OFFSHORE; position: n/a; safe-to-safe group: none; baseline duration: 2.000 h; weather/operational downtime: 0.000 h; elapsed duration: 2.000 h.
- 1209: Scenario: P50; P50 representative hindcast year 1984; cycle: 18; activity ID: 18; location: OFFSHORE; position: n/a; safe-to-safe group: none; baseline duration: 1.000 h; weather/operational downtime: 0.000 h; elapsed duration: 1.000 h.
- 1210: Scenario: P50; P50 representative hindcast year 1984; cycle: 18; activity ID: 19; location: OFFSHORE; position: n/a; safe-to-safe group: none; baseline duration: 5.200 h; weather/operational downtime: 0.000 h; elapsed duration: 5.250 h.
- 1211: Scenario: P50; P50 representative hindcast year 1984; cycle: 18; activity ID: 20; location: OFFSHORE; position: n/a; safe-to-safe group: none; baseline duration: 0.500 h; weather/operational downtime: 33.750 h; elapsed duration: 34.250 h.
- 1212: Scenario: P50; P50 representative hindcast year 1984; cycle: 18; activity ID: 21; location: OFFSHORE; position: 35; safe-to-safe group: none; baseline duration: 1.000 h; weather/operational downtime: 0.000 h; elapsed duration: 1.000 h.
- 1213: Scenario: P50; P50 representative hindcast year 1984; cycle: 18; activity ID: 22; location: OFFSHORE; position: 35; safe-to-safe group: none; baseline duration: 1.000 h; weather/operational downtime: 0.000 h; elapsed duration: 1.000 h.
- 1214: Scenario: P50; P50 representative hindcast year 1984; cycle: 18; activity ID: 23; location: OFFSHORE; position: 35; safe-to-safe group: none; baseline duration: 4.000 h; weather/operational downtime: 7.500 h; elapsed duration: 11.500 h.
- 1215: Scenario: P50; P50 representative hindcast year 1984; cycle: 18; activity ID: 24; location: OFFSHORE; position: 35; safe-to-safe group: none; baseline duration: 3.000 h; weather/operational downtime: 0.000 h; elapsed duration: 3.000 h.
- 1216: Scenario: P50; P50 representative hindcast year 1984; cycle: 18; activity ID: 25; location: OFFSHORE; position: 35; safe-to-safe group: none; baseline duration: 1.000 h; weather/operational downtime: 0.000 h; elapsed duration: 1.000 h.
- 1217: Scenario: P50; P50 representative hindcast year 1984; cycle: 18; activity ID: 26; location: OFFSHORE; position: 35; safe-to-safe group: none; baseline duration: 2.000 h; weather/operational downtime: 0.000 h; elapsed duration: 2.000 h.
- 1218: Scenario: P50; P50 representative hindcast year 1984; cycle: 18; activity ID: 27; location: OFFSHORE; position: 35; safe-to-safe group: G1; baseline duration: 1.000 h; weather/operational downtime: 0.000 h; elapsed duration: 1.000 h.
- 1219: Scenario: P50; P50 representative hindcast year 1984; cycle: 18; activity ID: 28; location: OFFSHORE; position: 35; safe-to-safe group: G1; baseline duration: 3.500 h; weather/operational downtime: 0.000 h; elapsed duration: 3.500 h.
- 1220: Scenario: P50; P50 representative hindcast year 1984; cycle: 18; activity ID: 29; location: OFFSHORE; position: 35; safe-to-safe group: G1; baseline duration: 0.500 h; weather/operational downtime: 0.000 h; elapsed duration: 0.500 h.
- 1221: Scenario: P50; P50 representative hindcast year 1984; cycle: 18; activity ID: 30; location: OFFSHORE; position: 35; safe-to-safe group: G2; baseline duration: 0.500 h; weather/operational downtime: 0.000 h; elapsed duration: 0.500 h.
- 1222: Scenario: P50; P50 representative hindcast year 1984; cycle: 18; activity ID: 31; location: OFFSHORE; position: 35; safe-to-safe group: G2; baseline duration: 2.250 h; weather/operational downtime: 0.000 h; elapsed duration: 2.250 h.
- 1223: Scenario: P50; P50 representative hindcast year 1984; cycle: 18; activity ID: 32; location: OFFSHORE; position: 35; safe-to-safe group: G2; baseline duration: 0.500 h; weather/operational downtime: 0.000 h; elapsed duration: 0.500 h.
- 1224: Scenario: P50; P50 representative hindcast year 1984; cycle: 18; activity ID: 33; location: OFFSHORE; position: 35; safe-to-safe group: G3; baseline duration: 0.500 h; weather/operational downtime: 0.000 h; elapsed duration: 0.500 h.
- 1225: Scenario: P50; P50 representative hindcast year 1984; cycle: 18; activity ID: 34; location: OFFSHORE; position: 35; safe-to-safe group: G3; baseline duration: 1.750 h; weather/operational downtime: 0.000 h; elapsed duration: 1.750 h.
- 1226: Scenario: P50; P50 representative hindcast year 1984; cycle: 18; activity ID: 35; location: OFFSHORE; position: 35; safe-to-safe group: G3; baseline duration: 1.500 h; weather/operational downtime: 0.000 h; elapsed duration: 1.500 h.
- 1227: Scenario: P50; P50 representative hindcast year 1984; cycle: 18; activity ID: 36; location: OFFSHORE; position: 35; safe-to-safe group: G4; baseline duration: 1.750 h; weather/operational downtime: 0.000 h; elapsed duration: 1.750 h.
- 1228: Scenario: P50; P50 representative hindcast year 1984; cycle: 18; activity ID: 37; location: OFFSHORE; position: 35; safe-to-safe group: G4; baseline duration: 1.500 h; weather/operational downtime: 0.000 h; elapsed duration: 1.500 h.
- 1229: Scenario: P50; P50 representative hindcast year 1984; cycle: 18; activity ID: 38; location: OFFSHORE; position: 35; safe-to-safe group: G5; baseline duration: 1.750 h; weather/operational downtime: 0.000 h; elapsed duration: 1.750 h.
- 1230: Scenario: P50; P50 representative hindcast year 1984; cycle: 18; activity ID: 39; location: OFFSHORE; position: 35; safe-to-safe group: G5; baseline duration: 1.500 h; weather/operational downtime: 0.000 h; elapsed duration: 1.500 h.
- 1231: Scenario: P50; P50 representative hindcast year 1984; cycle: 18; activity ID: 40; location: OFFSHORE; position: 35; safe-to-safe group: none; baseline duration: 1.000 h; weather/operational downtime: 0.000 h; elapsed duration: 1.000 h.
- 1232: Scenario: P50; P50 representative hindcast year 1984; cycle: 18; activity ID: 41; location: OFFSHORE; position: 35; safe-to-safe group: none; baseline duration: 1.000 h; weather/operational downtime: 0.000 h; elapsed duration: 1.000 h.
- 1233: Scenario: P50; P50 representative hindcast year 1984; cycle: 18; activity ID: 42; location: OFFSHORE; position: 35; safe-to-safe group: none; baseline duration: 3.000 h; weather/operational downtime: 0.000 h; elapsed duration: 3.000 h.
- 1234: Scenario: P50; P50 representative hindcast year 1984; cycle: 18; activity ID: 43; location: OFFSHORE; position: 35; safe-to-safe group: none; baseline duration: 3.000 h; weather/operational downtime: 0.000 h; elapsed duration: 3.000 h.
- 1235: Scenario: P50; P50 representative hindcast year 1984; cycle: 18; activity ID: 44; location: OFFSHORE; position: 35; safe-to-safe group: none; baseline duration: 2.000 h; weather/operational downtime: 0.000 h; elapsed duration: 2.000 h.
- 1236: Scenario: P50; P50 representative hindcast year 1984; cycle: 18; activity ID: 21; location: OFFSHORE; position: 36; safe-to-safe group: none; baseline duration: 1.000 h; weather/operational downtime: 0.000 h; elapsed duration: 1.000 h.
- 1237: Scenario: P50; P50 representative hindcast year 1984; cycle: 18; activity ID: 22; location: OFFSHORE; position: 36; safe-to-safe group: none; baseline duration: 1.000 h; weather/operational downtime: 0.000 h; elapsed duration: 1.000 h.
- 1238: Scenario: P50; P50 representative hindcast year 1984; cycle: 18; activity ID: 23; location: OFFSHORE; position: 36; safe-to-safe group: none; baseline duration: 4.000 h; weather/operational downtime: 0.000 h; elapsed duration: 4.000 h.
- 1239: Scenario: P50; P50 representative hindcast year 1984; cycle: 18; activity ID: 24; location: OFFSHORE; position: 36; safe-to-safe group: none; baseline duration: 3.000 h; weather/operational downtime: 0.000 h; elapsed duration: 3.000 h.
- 1240: Scenario: P50; P50 representative hindcast year 1984; cycle: 18; activity ID: 25; location: OFFSHORE; position: 36; safe-to-safe group: none; baseline duration: 1.000 h; weather/operational downtime: 0.000 h; elapsed duration: 1.000 h.
- 1241: Scenario: P50; P50 representative hindcast year 1984; cycle: 18; activity ID: 26; location: OFFSHORE; position: 36; safe-to-safe group: none; baseline duration: 2.000 h; weather/operational downtime: 0.000 h; elapsed duration: 2.000 h.
- 1242: Scenario: P50; P50 representative hindcast year 1984; cycle: 18; activity ID: 27; location: OFFSHORE; position: 36; safe-to-safe group: G1; baseline duration: 1.000 h; weather/operational downtime: 0.000 h; elapsed duration: 1.000 h.
- 1243: Scenario: P50; P50 representative hindcast year 1984; cycle: 18; activity ID: 28; location: OFFSHORE; position: 36; safe-to-safe group: G1; baseline duration: 3.500 h; weather/operational downtime: 0.000 h; elapsed duration: 3.500 h.
- 1244: Scenario: P50; P50 representative hindcast year 1984; cycle: 18; activity ID: 29; location: OFFSHORE; position: 36; safe-to-safe group: G1; baseline duration: 0.500 h; weather/operational downtime: 0.000 h; elapsed duration: 0.500 h.
- 1245: Scenario: P50; P50 representative hindcast year 1984; cycle: 18; activity ID: 30; location: OFFSHORE; position: 36; safe-to-safe group: G2; baseline duration: 0.500 h; weather/operational downtime: 0.000 h; elapsed duration: 0.500 h.
- 1246: Scenario: P50; P50 representative hindcast year 1984; cycle: 18; activity ID: 31; location: OFFSHORE; position: 36; safe-to-safe group: G2; baseline duration: 2.250 h; weather/operational downtime: 0.000 h; elapsed duration: 2.250 h.
- 1247: Scenario: P50; P50 representative hindcast year 1984; cycle: 18; activity ID: 32; location: OFFSHORE; position: 36; safe-to-safe group: G2; baseline duration: 0.500 h; weather/operational downtime: 0.000 h; elapsed duration: 0.500 h.
- 1248: Scenario: P50; P50 representative hindcast year 1984; cycle: 18; activity ID: 33; location: OFFSHORE; position: 36; safe-to-safe group: G3; baseline duration: 0.500 h; weather/operational downtime: 0.000 h; elapsed duration: 0.500 h.
- 1249: Scenario: P50; P50 representative hindcast year 1984; cycle: 18; activity ID: 34; location: OFFSHORE; position: 36; safe-to-safe group: G3; baseline duration: 1.750 h; weather/operational downtime: 0.000 h; elapsed duration: 1.750 h.
- 1250: Scenario: P50; P50 representative hindcast year 1984; cycle: 18; activity ID: 35; location: OFFSHORE; position: 36; safe-to-safe group: G3; baseline duration: 1.500 h; weather/operational downtime: 0.000 h; elapsed duration: 1.500 h.
- 1251: Scenario: P50; P50 representative hindcast year 1984; cycle: 18; activity ID: 36; location: OFFSHORE; position: 36; safe-to-safe group: G4; baseline duration: 1.750 h; weather/operational downtime: 0.000 h; elapsed duration: 1.750 h.
- 1252: Scenario: P50; P50 representative hindcast year 1984; cycle: 18; activity ID: 37; location: OFFSHORE; position: 36; safe-to-safe group: G4; baseline duration: 1.500 h; weather/operational downtime: 0.000 h; elapsed duration: 1.500 h.
- 1253: Scenario: P50; P50 representative hindcast year 1984; cycle: 18; activity ID: 38; location: OFFSHORE; position: 36; safe-to-safe group: G5; baseline duration: 1.750 h; weather/operational downtime: 0.000 h; elapsed duration: 1.750 h.
- 1254: Scenario: P50; P50 representative hindcast year 1984; cycle: 18; activity ID: 39; location: OFFSHORE; position: 36; safe-to-safe group: G5; baseline duration: 1.500 h; weather/operational downtime: 0.000 h; elapsed duration: 1.500 h.
- 1255: Scenario: P50; P50 representative hindcast year 1984; cycle: 18; activity ID: 40; location: OFFSHORE; position: 36; safe-to-safe group: none; baseline duration: 1.000 h; weather/operational downtime: 0.000 h; elapsed duration: 1.000 h.
- 1256: Scenario: P50; P50 representative hindcast year 1984; cycle: 18; activity ID: 41; location: OFFSHORE; position: 36; safe-to-safe group: none; baseline duration: 1.000 h; weather/operational downtime: 0.000 h; elapsed duration: 1.000 h.
- 1257: Scenario: P50; P50 representative hindcast year 1984; cycle: 18; activity ID: 42; location: OFFSHORE; position: 36; safe-to-safe group: none; baseline duration: 3.000 h; weather/operational downtime: 0.000 h; elapsed duration: 3.000 h.
- 1258: Scenario: P50; P50 representative hindcast year 1984; cycle: 18; activity ID: 43; location: OFFSHORE; position: 36; safe-to-safe group: none; baseline duration: 3.000 h; weather/operational downtime: 0.000 h; elapsed duration: 3.000 h.
- 1259: Scenario: P50; P50 representative hindcast year 1984; cycle: 18; activity ID: 44; location: OFFSHORE; position: 36; safe-to-safe group: none; baseline duration: 2.000 h; weather/operational downtime: 0.000 h; elapsed duration: 2.000 h.
- 1260: Scenario: P50; P50 representative hindcast year 1984; cycle: 18; activity ID: 45; location: OFFSHORE; position: n/a; safe-to-safe group: none; baseline duration: 5.200 h; weather/operational downtime: 0.000 h; elapsed duration: 5.250 h.

| ID | WBS | Task | Type | Duration | Start | Finish | Predecessors | Duration WDT [days] | Location | Activity ID | Position | Safe-to-safe group |
| --- | --- | --- | --- | --- | --- | --- | --- | --- | --- | --- | --- | --- |
| 1261 | 19 | **Cycle 19 — Positions 37–38** |  | 123.9eh | 2030-08-25 13:15 | 2030-09-04 16:45 |  | 4.979167 |  |  |  |  |
| 1262 | 19.1 | Port maneuvering | manual | 1eh | 2030-08-25 13:15 | 2030-08-25 14:15 | 1260 | 0.000000 | OFFSHORE | 1 |  |  |
| 1263 | 19.2 | Preload and jacking up at port | manual | 2eh | 2030-08-25 14:15 | 2030-08-25 16:15 | 1262 | 0.000000 | OFFSHORE | 2 |  |  |
| 1264 | 19.3 | Release crane, gangway etc and prep for lifting | manual | 3eh | 2030-08-25 16:15 | 2030-08-25 19:15 | 1263 | 0.000000 | OFFSHORE | 3 |  |  |
| 1265 | 19.4 | Load in/out WTG supplier equipment | manual | 1eh | 2030-08-25 19:15 | 2030-08-25 20:15 | 1264 | 0.000000 | OFFSHORE | 4 |  |  |
| 1266 | 19.5 | Loadout Nacelle #1 | manual | 2.25eh | 2030-08-25 20:15 | 2030-08-25 22:30 | 1265 | 0.000000 | OFFSHORE | 5 |  |  |
| 1267 | 19.6 | Loadout Tower #1 | manual | 2.25eh | 2030-08-25 22:30 | 2030-08-26 00:45 | 1266 | 0.000000 | OFFSHORE | 6 |  |  |
| 1268 | 19.7 | Loadout Blade 1 | manual | 1.5eh | 2030-08-26 00:45 | 2030-08-26 02:15 | 1267 | 0.000000 | OFFSHORE | 7 |  |  |
| 1269 | 19.8 | Loadout Blade 2 | manual | 1.5eh | 2030-08-26 02:15 | 2030-08-26 03:45 | 1268 | 0.000000 | OFFSHORE | 8 |  |  |
| 1270 | 19.9 | Loadout Blade 3 | manual | 1.5eh | 2030-08-26 03:45 | 2030-08-26 05:15 | 1269 | 0.000000 | OFFSHORE | 9 |  |  |
| 1271 | 19.10 | Load in/out WTG supplier equipment | manual | 1eh | 2030-08-26 05:15 | 2030-08-26 06:15 | 1270 | 0.000000 | OFFSHORE | 10 |  |  |
| 1272 | 19.11 | Loadout Nacelle #2 | manual | 2.25eh | 2030-08-26 06:15 | 2030-08-26 08:30 | 1271 | 0.000000 | OFFSHORE | 11 |  |  |
| 1273 | 19.12 | Loadout Tower #2 | manual | 2.25eh | 2030-08-26 08:30 | 2030-08-26 10:45 | 1272 | 0.000000 | OFFSHORE | 12 |  |  |
| 1274 | 19.13 | Loadout Blade 1 | manual | 1.5eh | 2030-08-26 10:45 | 2030-08-26 12:15 | 1273 | 0.000000 | OFFSHORE | 13 |  |  |
| 1275 | 19.14 | Loadout Blade 2 | manual | 1.5eh | 2030-08-26 12:15 | 2030-08-26 13:45 | 1274 | 0.000000 | OFFSHORE | 14 |  |  |
| 1276 | 19.15 | Loadout Blade 3 | manual | 1.5eh | 2030-08-26 13:45 | 2030-08-26 15:15 | 1275 | 0.000000 | OFFSHORE | 15 |  |  |
| 1277 | 19.16 | Secure of crane, gangway (at port)) | manual | 3eh | 2030-08-26 15:15 | 2030-08-26 18:15 | 1276 | 0.000000 | OFFSHORE | 16 |  |  |
| 1278 | 19.17 | Jacking down at port | manual | 2eh | 2030-08-26 18:15 | 2030-08-26 20:15 | 1277 | 0.000000 | OFFSHORE | 17 |  |  |
| 1279 | 19.18 | Port maneuvering | manual | 1eh | 2030-08-26 20:15 | 2030-08-26 21:15 | 1278 | 0.000000 | OFFSHORE | 18 |  |  |
| 1280 | 19.19 | Transit from port to site | manual | 5.2eh | 2030-08-26 21:15 | 2030-08-27 02:30 | 1279 | 0.000000 | OFFSHORE | 19 |  |  |
| 1281 | 19.20 | DP field check | manual | 0.5eh | 2030-08-27 02:30 | 2030-08-27 05:30 | 1280 | 0.104167 | OFFSHORE | 20 |  |  |
| 1282 | 19.21 | Transit to next foundation | manual | 1eh | 2030-08-27 05:30 | 2030-08-27 06:30 | 1281 | 0.000000 | OFFSHORE | 21 | 37 |  |
| 1283 | 19.22 | Positioning at WTG location | manual | 1eh | 2030-08-27 06:30 | 2030-08-27 07:30 | 1282 | 0.000000 | OFFSHORE | 22 | 37 |  |
| 1284 | 19.23 | Preload and jacking up at site | manual | 4eh | 2030-08-27 07:30 | 2030-08-27 11:30 | 1283 | 0.000000 | OFFSHORE | 23 | 37 |  |
| 1285 | 19.24 | Release crane, gangway and prep for lifting | manual | 3eh | 2030-08-27 11:30 | 2030-08-27 14:30 | 1284 | 0.000000 | OFFSHORE | 24 | 37 |  |
| 1286 | 19.25 | Remove TP cover and Preparation of TP | manual | 1eh | 2030-08-27 14:30 | 2030-08-27 15:30 | 1285 | 0.000000 | OFFSHORE | 25 | 37 |  |
| 1287 | 19.26 | Tower preparation, removal of seafastening bolts | manual | 2eh | 2030-08-27 15:30 | 2030-08-27 17:30 | 1286 | 0.000000 | OFFSHORE | 26 | 37 |  |
| 1288 | 19.27 | Tower rigging-up (attached lifting equipment) | manual | 1eh | 2030-08-27 17:30 | 2030-08-27 18:30 | 1287 | 0.000000 | OFFSHORE | 27 | 37 | G1 |
| 1289 | 19.28 | Tower Lifting (safe-to-safe) | manual | 3.5eh | 2030-08-27 18:30 | 2030-08-27 22:00 | 1288 | 0.000000 | OFFSHORE | 28 | 37 | G1 |
| 1290 | 19.29 | Tower derigging (remove lifting equipment) | manual | 0.5eh | 2030-08-27 22:00 | 2030-08-27 22:30 | 1289 | 0.000000 | OFFSHORE | 29 | 37 | G1 |
| 1291 | 19.30 | Nacelle preparation and rigging | manual | 0.5eh | 2030-08-27 22:30 | 2030-08-27 23:00 | 1290 | 0.000000 | OFFSHORE | 30 | 37 | G2 |
| 1292 | 19.31 | Nacelle Lifting (safe-to-safe) | manual | 2.25eh | 2030-08-27 23:00 | 2030-08-28 01:15 | 1291 | 0.000000 | OFFSHORE | 31 | 37 | G2 |
| 1293 | 19.32 | Nacelle derigging (remove lifting equipment) | manual | 0.5eh | 2030-08-28 01:15 | 2030-08-28 01:45 | 1292 | 0.000000 | OFFSHORE | 32 | 37 | G2 |
| 1294 | 19.33 | Blade yoke rigging and attachement to Blade #1 | manual | 0.5eh | 2030-08-28 01:45 | 2030-08-28 02:15 | 1293 | 0.000000 | OFFSHORE | 33 | 37 | G3 |
| 1295 | 19.34 | Blade #1 Lifting (safe-to-safe) | manual | 1.75eh | 2030-08-28 02:15 | 2030-08-28 04:00 | 1294 | 0.000000 | OFFSHORE | 34 | 37 | G3 |
| 1296 | 19.35 | Blade #1 completion work, re-locate blade yoke to next blade | manual | 1.5eh | 2030-08-28 04:00 | 2030-08-28 05:30 | 1295 | 0.000000 | OFFSHORE | 35 | 37 | G3 |
| 1297 | 19.36 | Blade #2 Lifting (safe-to-safe) | manual | 1.75eh | 2030-08-28 05:30 | 2030-08-29 17:45 | 1296 | 1.437500 | OFFSHORE | 36 | 37 | G4 |
| 1298 | 19.37 | Balde #2 completion work, re-locate blade yoke to next blade | manual | 1.5eh | 2030-08-29 17:45 | 2030-08-29 19:15 | 1297 | 0.000000 | OFFSHORE | 37 | 37 | G4 |
| 1299 | 19.38 | Blade #3 Lifting (safe-to-safe) | manual | 1.75eh | 2030-08-29 19:15 | 2030-08-29 21:00 | 1298 | 0.000000 | OFFSHORE | 38 | 37 | G5 |
| 1300 | 19.39 | Blade #3 completion work, blade yoke de-rigging | manual | 1.5eh | 2030-08-29 21:00 | 2030-08-29 22:30 | 1299 | 0.000000 | OFFSHORE | 39 | 37 | G5 |
| 1301 | 19.40 | Handling HSBM and lifting tools | manual | 1eh | 2030-08-29 22:30 | 2030-08-29 23:30 | 1300 | 0.000000 | OFFSHORE | 40 | 37 |  |
| 1302 | 19.41 | Lifting HSBM and lifting tools from Nacelle | manual | 1eh | 2030-08-29 23:30 | 2030-08-30 00:30 | 1301 | 0.000000 | OFFSHORE | 41 | 37 |  |
| 1303 | 19.42 | Turbine general completion works | manual | 3eh | 2030-08-30 00:30 | 2030-08-30 03:30 | 1302 | 0.000000 | OFFSHORE | 42 | 37 |  |
| 1304 | 19.43 | Secure of crane, gangway etc. Preparation for jacking down and sailing | manual | 3eh | 2030-08-30 03:30 | 2030-08-30 06:30 | 1303 | 0.000000 | OFFSHORE | 43 | 37 |  |
| 1305 | 19.44 | Jacking down at site | manual | 2eh | 2030-08-30 06:30 | 2030-09-02 14:00 | 1304 | 3.229167 | OFFSHORE | 44 | 37 |  |
| 1306 | 19.45 | Transit to next foundation | manual | 1eh | 2030-09-02 14:00 | 2030-09-02 15:00 | 1305 | 0.000000 | OFFSHORE | 21 | 38 |  |
| 1307 | 19.46 | Positioning at WTG location | manual | 1eh | 2030-09-02 15:00 | 2030-09-02 16:00 | 1306 | 0.000000 | OFFSHORE | 22 | 38 |  |
| 1308 | 19.47 | Preload and jacking up at site | manual | 4eh | 2030-09-02 16:00 | 2030-09-02 20:00 | 1307 | 0.000000 | OFFSHORE | 23 | 38 |  |
| 1309 | 19.48 | Release crane, gangway and prep for lifting | manual | 3eh | 2030-09-02 20:00 | 2030-09-02 23:00 | 1308 | 0.000000 | OFFSHORE | 24 | 38 |  |
| 1310 | 19.49 | Remove TP cover and Preparation of TP | manual | 1eh | 2030-09-02 23:00 | 2030-09-03 05:00 | 1309 | 0.208333 | OFFSHORE | 25 | 38 |  |
| 1311 | 19.50 | Tower preparation, removal of seafastening bolts | manual | 2eh | 2030-09-03 05:00 | 2030-09-03 07:00 | 1310 | 0.000000 | OFFSHORE | 26 | 38 |  |
| 1312 | 19.51 | Tower rigging-up (attached lifting equipment) | manual | 1eh | 2030-09-03 07:00 | 2030-09-03 08:00 | 1311 | 0.000000 | OFFSHORE | 27 | 38 | G1 |
| 1313 | 19.52 | Tower Lifting (safe-to-safe) | manual | 3.5eh | 2030-09-03 08:00 | 2030-09-03 11:30 | 1312 | 0.000000 | OFFSHORE | 28 | 38 | G1 |
| 1314 | 19.53 | Tower derigging (remove lifting equipment) | manual | 0.5eh | 2030-09-03 11:30 | 2030-09-03 12:00 | 1313 | 0.000000 | OFFSHORE | 29 | 38 | G1 |
| 1315 | 19.54 | Nacelle preparation and rigging | manual | 0.5eh | 2030-09-03 12:00 | 2030-09-03 12:30 | 1314 | 0.000000 | OFFSHORE | 30 | 38 | G2 |
| 1316 | 19.55 | Nacelle Lifting (safe-to-safe) | manual | 2.25eh | 2030-09-03 12:30 | 2030-09-03 14:45 | 1315 | 0.000000 | OFFSHORE | 31 | 38 | G2 |
| 1317 | 19.56 | Nacelle derigging (remove lifting equipment) | manual | 0.5eh | 2030-09-03 14:45 | 2030-09-03 15:15 | 1316 | 0.000000 | OFFSHORE | 32 | 38 | G2 |
| 1318 | 19.57 | Blade yoke rigging and attachement to Blade #1 | manual | 0.5eh | 2030-09-03 15:15 | 2030-09-03 15:45 | 1317 | 0.000000 | OFFSHORE | 33 | 38 | G3 |
| 1319 | 19.58 | Blade #1 Lifting (safe-to-safe) | manual | 1.75eh | 2030-09-03 15:45 | 2030-09-03 17:30 | 1318 | 0.000000 | OFFSHORE | 34 | 38 | G3 |
| 1320 | 19.59 | Blade #1 completion work, re-locate blade yoke to next blade | manual | 1.5eh | 2030-09-03 17:30 | 2030-09-03 19:00 | 1319 | 0.000000 | OFFSHORE | 35 | 38 | G3 |
| 1321 | 19.60 | Blade #2 Lifting (safe-to-safe) | manual | 1.75eh | 2030-09-03 19:00 | 2030-09-03 20:45 | 1320 | 0.000000 | OFFSHORE | 36 | 38 | G4 |
| 1322 | 19.61 | Balde #2 completion work, re-locate blade yoke to next blade | manual | 1.5eh | 2030-09-03 20:45 | 2030-09-03 22:15 | 1321 | 0.000000 | OFFSHORE | 37 | 38 | G4 |
| 1323 | 19.62 | Blade #3 Lifting (safe-to-safe) | manual | 1.75eh | 2030-09-03 22:15 | 2030-09-04 00:00 | 1322 | 0.000000 | OFFSHORE | 38 | 38 | G5 |
| 1324 | 19.63 | Blade #3 completion work, blade yoke de-rigging | manual | 1.5eh | 2030-09-04 00:00 | 2030-09-04 01:30 | 1323 | 0.000000 | OFFSHORE | 39 | 38 | G5 |
| 1325 | 19.64 | Handling HSBM and lifting tools | manual | 1eh | 2030-09-04 01:30 | 2030-09-04 02:30 | 1324 | 0.000000 | OFFSHORE | 40 | 38 |  |
| 1326 | 19.65 | Lifting HSBM and lifting tools from Nacelle | manual | 1eh | 2030-09-04 02:30 | 2030-09-04 03:30 | 1325 | 0.000000 | OFFSHORE | 41 | 38 |  |
| 1327 | 19.66 | Turbine general completion works | manual | 3eh | 2030-09-04 03:30 | 2030-09-04 06:30 | 1326 | 0.000000 | OFFSHORE | 42 | 38 |  |
| 1328 | 19.67 | Secure of crane, gangway etc. Preparation for jacking down and sailing | manual | 3eh | 2030-09-04 06:30 | 2030-09-04 09:30 | 1327 | 0.000000 | OFFSHORE | 43 | 38 |  |
| 1329 | 19.68 | Jacking down at site | manual | 2eh | 2030-09-04 09:30 | 2030-09-04 11:30 | 1328 | 0.000000 | OFFSHORE | 44 | 38 |  |
| 1330 | 19.69 | Transit from site to port | manual | 5.2eh | 2030-09-04 11:30 | 2030-09-04 16:45 | 1329 | 0.000000 | OFFSHORE | 45 |  |  |

Notes:
- 1261: P50 representative hindcast year 1984; cycle 19; baseline duration 5.163 days; downtime 4.979 days; elapsed duration 10.146 days.
- 1262: Scenario: P50; P50 representative hindcast year 1984; cycle: 19; activity ID: 1; location: OFFSHORE; position: n/a; safe-to-safe group: none; baseline duration: 1.000 h; weather/operational downtime: 0.000 h; elapsed duration: 1.000 h.
- 1263: Scenario: P50; P50 representative hindcast year 1984; cycle: 19; activity ID: 2; location: OFFSHORE; position: n/a; safe-to-safe group: none; baseline duration: 2.000 h; weather/operational downtime: 0.000 h; elapsed duration: 2.000 h.
- 1264: Scenario: P50; P50 representative hindcast year 1984; cycle: 19; activity ID: 3; location: OFFSHORE; position: n/a; safe-to-safe group: none; baseline duration: 3.000 h; weather/operational downtime: 0.000 h; elapsed duration: 3.000 h.
- 1265: Scenario: P50; P50 representative hindcast year 1984; cycle: 19; activity ID: 4; location: OFFSHORE; position: n/a; safe-to-safe group: none; baseline duration: 1.000 h; weather/operational downtime: 0.000 h; elapsed duration: 1.000 h.
- 1266: Scenario: P50; P50 representative hindcast year 1984; cycle: 19; activity ID: 5; location: OFFSHORE; position: n/a; safe-to-safe group: none; baseline duration: 2.250 h; weather/operational downtime: 0.000 h; elapsed duration: 2.250 h.
- 1267: Scenario: P50; P50 representative hindcast year 1984; cycle: 19; activity ID: 6; location: OFFSHORE; position: n/a; safe-to-safe group: none; baseline duration: 2.250 h; weather/operational downtime: 0.000 h; elapsed duration: 2.250 h.
- 1268: Scenario: P50; P50 representative hindcast year 1984; cycle: 19; activity ID: 7; location: OFFSHORE; position: n/a; safe-to-safe group: none; baseline duration: 1.500 h; weather/operational downtime: 0.000 h; elapsed duration: 1.500 h.
- 1269: Scenario: P50; P50 representative hindcast year 1984; cycle: 19; activity ID: 8; location: OFFSHORE; position: n/a; safe-to-safe group: none; baseline duration: 1.500 h; weather/operational downtime: 0.000 h; elapsed duration: 1.500 h.
- 1270: Scenario: P50; P50 representative hindcast year 1984; cycle: 19; activity ID: 9; location: OFFSHORE; position: n/a; safe-to-safe group: none; baseline duration: 1.500 h; weather/operational downtime: 0.000 h; elapsed duration: 1.500 h.
- 1271: Scenario: P50; P50 representative hindcast year 1984; cycle: 19; activity ID: 10; location: OFFSHORE; position: n/a; safe-to-safe group: none; baseline duration: 1.000 h; weather/operational downtime: 0.000 h; elapsed duration: 1.000 h.
- 1272: Scenario: P50; P50 representative hindcast year 1984; cycle: 19; activity ID: 11; location: OFFSHORE; position: n/a; safe-to-safe group: none; baseline duration: 2.250 h; weather/operational downtime: 0.000 h; elapsed duration: 2.250 h.
- 1273: Scenario: P50; P50 representative hindcast year 1984; cycle: 19; activity ID: 12; location: OFFSHORE; position: n/a; safe-to-safe group: none; baseline duration: 2.250 h; weather/operational downtime: 0.000 h; elapsed duration: 2.250 h.
- 1274: Scenario: P50; P50 representative hindcast year 1984; cycle: 19; activity ID: 13; location: OFFSHORE; position: n/a; safe-to-safe group: none; baseline duration: 1.500 h; weather/operational downtime: 0.000 h; elapsed duration: 1.500 h.
- 1275: Scenario: P50; P50 representative hindcast year 1984; cycle: 19; activity ID: 14; location: OFFSHORE; position: n/a; safe-to-safe group: none; baseline duration: 1.500 h; weather/operational downtime: 0.000 h; elapsed duration: 1.500 h.
- 1276: Scenario: P50; P50 representative hindcast year 1984; cycle: 19; activity ID: 15; location: OFFSHORE; position: n/a; safe-to-safe group: none; baseline duration: 1.500 h; weather/operational downtime: 0.000 h; elapsed duration: 1.500 h.
- 1277: Scenario: P50; P50 representative hindcast year 1984; cycle: 19; activity ID: 16; location: OFFSHORE; position: n/a; safe-to-safe group: none; baseline duration: 3.000 h; weather/operational downtime: 0.000 h; elapsed duration: 3.000 h.
- 1278: Scenario: P50; P50 representative hindcast year 1984; cycle: 19; activity ID: 17; location: OFFSHORE; position: n/a; safe-to-safe group: none; baseline duration: 2.000 h; weather/operational downtime: 0.000 h; elapsed duration: 2.000 h.
- 1279: Scenario: P50; P50 representative hindcast year 1984; cycle: 19; activity ID: 18; location: OFFSHORE; position: n/a; safe-to-safe group: none; baseline duration: 1.000 h; weather/operational downtime: 0.000 h; elapsed duration: 1.000 h.
- 1280: Scenario: P50; P50 representative hindcast year 1984; cycle: 19; activity ID: 19; location: OFFSHORE; position: n/a; safe-to-safe group: none; baseline duration: 5.200 h; weather/operational downtime: 0.000 h; elapsed duration: 5.250 h.
- 1281: Scenario: P50; P50 representative hindcast year 1984; cycle: 19; activity ID: 20; location: OFFSHORE; position: n/a; safe-to-safe group: none; baseline duration: 0.500 h; weather/operational downtime: 2.500 h; elapsed duration: 3.000 h.
- 1282: Scenario: P50; P50 representative hindcast year 1984; cycle: 19; activity ID: 21; location: OFFSHORE; position: 37; safe-to-safe group: none; baseline duration: 1.000 h; weather/operational downtime: 0.000 h; elapsed duration: 1.000 h.
- 1283: Scenario: P50; P50 representative hindcast year 1984; cycle: 19; activity ID: 22; location: OFFSHORE; position: 37; safe-to-safe group: none; baseline duration: 1.000 h; weather/operational downtime: 0.000 h; elapsed duration: 1.000 h.
- 1284: Scenario: P50; P50 representative hindcast year 1984; cycle: 19; activity ID: 23; location: OFFSHORE; position: 37; safe-to-safe group: none; baseline duration: 4.000 h; weather/operational downtime: 0.000 h; elapsed duration: 4.000 h.
- 1285: Scenario: P50; P50 representative hindcast year 1984; cycle: 19; activity ID: 24; location: OFFSHORE; position: 37; safe-to-safe group: none; baseline duration: 3.000 h; weather/operational downtime: 0.000 h; elapsed duration: 3.000 h.
- 1286: Scenario: P50; P50 representative hindcast year 1984; cycle: 19; activity ID: 25; location: OFFSHORE; position: 37; safe-to-safe group: none; baseline duration: 1.000 h; weather/operational downtime: 0.000 h; elapsed duration: 1.000 h.
- 1287: Scenario: P50; P50 representative hindcast year 1984; cycle: 19; activity ID: 26; location: OFFSHORE; position: 37; safe-to-safe group: none; baseline duration: 2.000 h; weather/operational downtime: 0.000 h; elapsed duration: 2.000 h.
- 1288: Scenario: P50; P50 representative hindcast year 1984; cycle: 19; activity ID: 27; location: OFFSHORE; position: 37; safe-to-safe group: G1; baseline duration: 1.000 h; weather/operational downtime: 0.000 h; elapsed duration: 1.000 h.
- 1289: Scenario: P50; P50 representative hindcast year 1984; cycle: 19; activity ID: 28; location: OFFSHORE; position: 37; safe-to-safe group: G1; baseline duration: 3.500 h; weather/operational downtime: 0.000 h; elapsed duration: 3.500 h.
- 1290: Scenario: P50; P50 representative hindcast year 1984; cycle: 19; activity ID: 29; location: OFFSHORE; position: 37; safe-to-safe group: G1; baseline duration: 0.500 h; weather/operational downtime: 0.000 h; elapsed duration: 0.500 h.
- 1291: Scenario: P50; P50 representative hindcast year 1984; cycle: 19; activity ID: 30; location: OFFSHORE; position: 37; safe-to-safe group: G2; baseline duration: 0.500 h; weather/operational downtime: 0.000 h; elapsed duration: 0.500 h.
- 1292: Scenario: P50; P50 representative hindcast year 1984; cycle: 19; activity ID: 31; location: OFFSHORE; position: 37; safe-to-safe group: G2; baseline duration: 2.250 h; weather/operational downtime: 0.000 h; elapsed duration: 2.250 h.
- 1293: Scenario: P50; P50 representative hindcast year 1984; cycle: 19; activity ID: 32; location: OFFSHORE; position: 37; safe-to-safe group: G2; baseline duration: 0.500 h; weather/operational downtime: 0.000 h; elapsed duration: 0.500 h.
- 1294: Scenario: P50; P50 representative hindcast year 1984; cycle: 19; activity ID: 33; location: OFFSHORE; position: 37; safe-to-safe group: G3; baseline duration: 0.500 h; weather/operational downtime: 0.000 h; elapsed duration: 0.500 h.
- 1295: Scenario: P50; P50 representative hindcast year 1984; cycle: 19; activity ID: 34; location: OFFSHORE; position: 37; safe-to-safe group: G3; baseline duration: 1.750 h; weather/operational downtime: 0.000 h; elapsed duration: 1.750 h.
- 1296: Scenario: P50; P50 representative hindcast year 1984; cycle: 19; activity ID: 35; location: OFFSHORE; position: 37; safe-to-safe group: G3; baseline duration: 1.500 h; weather/operational downtime: 0.000 h; elapsed duration: 1.500 h.
- 1297: Scenario: P50; P50 representative hindcast year 1984; cycle: 19; activity ID: 36; location: OFFSHORE; position: 37; safe-to-safe group: G4; baseline duration: 1.750 h; weather/operational downtime: 34.500 h; elapsed duration: 36.250 h.
- 1298: Scenario: P50; P50 representative hindcast year 1984; cycle: 19; activity ID: 37; location: OFFSHORE; position: 37; safe-to-safe group: G4; baseline duration: 1.500 h; weather/operational downtime: 0.000 h; elapsed duration: 1.500 h.
- 1299: Scenario: P50; P50 representative hindcast year 1984; cycle: 19; activity ID: 38; location: OFFSHORE; position: 37; safe-to-safe group: G5; baseline duration: 1.750 h; weather/operational downtime: 0.000 h; elapsed duration: 1.750 h.
- 1300: Scenario: P50; P50 representative hindcast year 1984; cycle: 19; activity ID: 39; location: OFFSHORE; position: 37; safe-to-safe group: G5; baseline duration: 1.500 h; weather/operational downtime: 0.000 h; elapsed duration: 1.500 h.
- 1301: Scenario: P50; P50 representative hindcast year 1984; cycle: 19; activity ID: 40; location: OFFSHORE; position: 37; safe-to-safe group: none; baseline duration: 1.000 h; weather/operational downtime: 0.000 h; elapsed duration: 1.000 h.
- 1302: Scenario: P50; P50 representative hindcast year 1984; cycle: 19; activity ID: 41; location: OFFSHORE; position: 37; safe-to-safe group: none; baseline duration: 1.000 h; weather/operational downtime: 0.000 h; elapsed duration: 1.000 h.
- 1303: Scenario: P50; P50 representative hindcast year 1984; cycle: 19; activity ID: 42; location: OFFSHORE; position: 37; safe-to-safe group: none; baseline duration: 3.000 h; weather/operational downtime: 0.000 h; elapsed duration: 3.000 h.
- 1304: Scenario: P50; P50 representative hindcast year 1984; cycle: 19; activity ID: 43; location: OFFSHORE; position: 37; safe-to-safe group: none; baseline duration: 3.000 h; weather/operational downtime: 0.000 h; elapsed duration: 3.000 h.
- 1305: Scenario: P50; P50 representative hindcast year 1984; cycle: 19; activity ID: 44; location: OFFSHORE; position: 37; safe-to-safe group: none; baseline duration: 2.000 h; weather/operational downtime: 77.500 h; elapsed duration: 79.500 h.
- 1306: Scenario: P50; P50 representative hindcast year 1984; cycle: 19; activity ID: 21; location: OFFSHORE; position: 38; safe-to-safe group: none; baseline duration: 1.000 h; weather/operational downtime: 0.000 h; elapsed duration: 1.000 h.
- 1307: Scenario: P50; P50 representative hindcast year 1984; cycle: 19; activity ID: 22; location: OFFSHORE; position: 38; safe-to-safe group: none; baseline duration: 1.000 h; weather/operational downtime: 0.000 h; elapsed duration: 1.000 h.
- 1308: Scenario: P50; P50 representative hindcast year 1984; cycle: 19; activity ID: 23; location: OFFSHORE; position: 38; safe-to-safe group: none; baseline duration: 4.000 h; weather/operational downtime: 0.000 h; elapsed duration: 4.000 h.
- 1309: Scenario: P50; P50 representative hindcast year 1984; cycle: 19; activity ID: 24; location: OFFSHORE; position: 38; safe-to-safe group: none; baseline duration: 3.000 h; weather/operational downtime: 0.000 h; elapsed duration: 3.000 h.
- 1310: Scenario: P50; P50 representative hindcast year 1984; cycle: 19; activity ID: 25; location: OFFSHORE; position: 38; safe-to-safe group: none; baseline duration: 1.000 h; weather/operational downtime: 5.000 h; elapsed duration: 6.000 h.
- 1311: Scenario: P50; P50 representative hindcast year 1984; cycle: 19; activity ID: 26; location: OFFSHORE; position: 38; safe-to-safe group: none; baseline duration: 2.000 h; weather/operational downtime: 0.000 h; elapsed duration: 2.000 h.
- 1312: Scenario: P50; P50 representative hindcast year 1984; cycle: 19; activity ID: 27; location: OFFSHORE; position: 38; safe-to-safe group: G1; baseline duration: 1.000 h; weather/operational downtime: 0.000 h; elapsed duration: 1.000 h.
- 1313: Scenario: P50; P50 representative hindcast year 1984; cycle: 19; activity ID: 28; location: OFFSHORE; position: 38; safe-to-safe group: G1; baseline duration: 3.500 h; weather/operational downtime: 0.000 h; elapsed duration: 3.500 h.
- 1314: Scenario: P50; P50 representative hindcast year 1984; cycle: 19; activity ID: 29; location: OFFSHORE; position: 38; safe-to-safe group: G1; baseline duration: 0.500 h; weather/operational downtime: 0.000 h; elapsed duration: 0.500 h.
- 1315: Scenario: P50; P50 representative hindcast year 1984; cycle: 19; activity ID: 30; location: OFFSHORE; position: 38; safe-to-safe group: G2; baseline duration: 0.500 h; weather/operational downtime: 0.000 h; elapsed duration: 0.500 h.
- 1316: Scenario: P50; P50 representative hindcast year 1984; cycle: 19; activity ID: 31; location: OFFSHORE; position: 38; safe-to-safe group: G2; baseline duration: 2.250 h; weather/operational downtime: 0.000 h; elapsed duration: 2.250 h.
- 1317: Scenario: P50; P50 representative hindcast year 1984; cycle: 19; activity ID: 32; location: OFFSHORE; position: 38; safe-to-safe group: G2; baseline duration: 0.500 h; weather/operational downtime: 0.000 h; elapsed duration: 0.500 h.
- 1318: Scenario: P50; P50 representative hindcast year 1984; cycle: 19; activity ID: 33; location: OFFSHORE; position: 38; safe-to-safe group: G3; baseline duration: 0.500 h; weather/operational downtime: 0.000 h; elapsed duration: 0.500 h.
- 1319: Scenario: P50; P50 representative hindcast year 1984; cycle: 19; activity ID: 34; location: OFFSHORE; position: 38; safe-to-safe group: G3; baseline duration: 1.750 h; weather/operational downtime: 0.000 h; elapsed duration: 1.750 h.
- 1320: Scenario: P50; P50 representative hindcast year 1984; cycle: 19; activity ID: 35; location: OFFSHORE; position: 38; safe-to-safe group: G3; baseline duration: 1.500 h; weather/operational downtime: 0.000 h; elapsed duration: 1.500 h.
- 1321: Scenario: P50; P50 representative hindcast year 1984; cycle: 19; activity ID: 36; location: OFFSHORE; position: 38; safe-to-safe group: G4; baseline duration: 1.750 h; weather/operational downtime: 0.000 h; elapsed duration: 1.750 h.
- 1322: Scenario: P50; P50 representative hindcast year 1984; cycle: 19; activity ID: 37; location: OFFSHORE; position: 38; safe-to-safe group: G4; baseline duration: 1.500 h; weather/operational downtime: 0.000 h; elapsed duration: 1.500 h.
- 1323: Scenario: P50; P50 representative hindcast year 1984; cycle: 19; activity ID: 38; location: OFFSHORE; position: 38; safe-to-safe group: G5; baseline duration: 1.750 h; weather/operational downtime: 0.000 h; elapsed duration: 1.750 h.
- 1324: Scenario: P50; P50 representative hindcast year 1984; cycle: 19; activity ID: 39; location: OFFSHORE; position: 38; safe-to-safe group: G5; baseline duration: 1.500 h; weather/operational downtime: 0.000 h; elapsed duration: 1.500 h.
- 1325: Scenario: P50; P50 representative hindcast year 1984; cycle: 19; activity ID: 40; location: OFFSHORE; position: 38; safe-to-safe group: none; baseline duration: 1.000 h; weather/operational downtime: 0.000 h; elapsed duration: 1.000 h.
- 1326: Scenario: P50; P50 representative hindcast year 1984; cycle: 19; activity ID: 41; location: OFFSHORE; position: 38; safe-to-safe group: none; baseline duration: 1.000 h; weather/operational downtime: 0.000 h; elapsed duration: 1.000 h.
- 1327: Scenario: P50; P50 representative hindcast year 1984; cycle: 19; activity ID: 42; location: OFFSHORE; position: 38; safe-to-safe group: none; baseline duration: 3.000 h; weather/operational downtime: 0.000 h; elapsed duration: 3.000 h.
- 1328: Scenario: P50; P50 representative hindcast year 1984; cycle: 19; activity ID: 43; location: OFFSHORE; position: 38; safe-to-safe group: none; baseline duration: 3.000 h; weather/operational downtime: 0.000 h; elapsed duration: 3.000 h.
- 1329: Scenario: P50; P50 representative hindcast year 1984; cycle: 19; activity ID: 44; location: OFFSHORE; position: 38; safe-to-safe group: none; baseline duration: 2.000 h; weather/operational downtime: 0.000 h; elapsed duration: 2.000 h.
- 1330: Scenario: P50; P50 representative hindcast year 1984; cycle: 19; activity ID: 45; location: OFFSHORE; position: n/a; safe-to-safe group: none; baseline duration: 5.200 h; weather/operational downtime: 0.000 h; elapsed duration: 5.250 h.

| ID | WBS | Task | Type | Duration | Start | Finish | Predecessors | Duration WDT [days] | Location | Activity ID | Position | Safe-to-safe group |
| --- | --- | --- | --- | --- | --- | --- | --- | --- | --- | --- | --- | --- |
| 1331 | 20 | **Cycle 20 — Positions 39–40** |  | 123.9eh | 2030-09-04 16:45 | 2030-09-10 20:15 |  | 0.979167 |  |  |  |  |
| 1332 | 20.1 | Port maneuvering | manual | 1eh | 2030-09-04 16:45 | 2030-09-04 17:45 | 1330 | 0.000000 | OFFSHORE | 1 |  |  |
| 1333 | 20.2 | Preload and jacking up at port | manual | 2eh | 2030-09-04 17:45 | 2030-09-04 19:45 | 1332 | 0.000000 | OFFSHORE | 2 |  |  |
| 1334 | 20.3 | Release crane, gangway etc and prep for lifting | manual | 3eh | 2030-09-04 19:45 | 2030-09-04 22:45 | 1333 | 0.000000 | OFFSHORE | 3 |  |  |
| 1335 | 20.4 | Load in/out WTG supplier equipment | manual | 1eh | 2030-09-04 22:45 | 2030-09-04 23:45 | 1334 | 0.000000 | OFFSHORE | 4 |  |  |
| 1336 | 20.5 | Loadout Nacelle #1 | manual | 2.25eh | 2030-09-04 23:45 | 2030-09-05 02:00 | 1335 | 0.000000 | OFFSHORE | 5 |  |  |
| 1337 | 20.6 | Loadout Tower #1 | manual | 2.25eh | 2030-09-05 02:00 | 2030-09-05 04:15 | 1336 | 0.000000 | OFFSHORE | 6 |  |  |
| 1338 | 20.7 | Loadout Blade 1 | manual | 1.5eh | 2030-09-05 04:15 | 2030-09-05 05:45 | 1337 | 0.000000 | OFFSHORE | 7 |  |  |
| 1339 | 20.8 | Loadout Blade 2 | manual | 1.5eh | 2030-09-05 05:45 | 2030-09-05 07:15 | 1338 | 0.000000 | OFFSHORE | 8 |  |  |
| 1340 | 20.9 | Loadout Blade 3 | manual | 1.5eh | 2030-09-05 07:15 | 2030-09-05 08:45 | 1339 | 0.000000 | OFFSHORE | 9 |  |  |
| 1341 | 20.10 | Load in/out WTG supplier equipment | manual | 1eh | 2030-09-05 08:45 | 2030-09-05 09:45 | 1340 | 0.000000 | OFFSHORE | 10 |  |  |
| 1342 | 20.11 | Loadout Nacelle #2 | manual | 2.25eh | 2030-09-05 09:45 | 2030-09-05 12:00 | 1341 | 0.000000 | OFFSHORE | 11 |  |  |
| 1343 | 20.12 | Loadout Tower #2 | manual | 2.25eh | 2030-09-05 12:00 | 2030-09-05 14:15 | 1342 | 0.000000 | OFFSHORE | 12 |  |  |
| 1344 | 20.13 | Loadout Blade 1 | manual | 1.5eh | 2030-09-05 14:15 | 2030-09-05 15:45 | 1343 | 0.000000 | OFFSHORE | 13 |  |  |
| 1345 | 20.14 | Loadout Blade 2 | manual | 1.5eh | 2030-09-05 15:45 | 2030-09-05 17:15 | 1344 | 0.000000 | OFFSHORE | 14 |  |  |
| 1346 | 20.15 | Loadout Blade 3 | manual | 1.5eh | 2030-09-05 17:15 | 2030-09-05 18:45 | 1345 | 0.000000 | OFFSHORE | 15 |  |  |
| 1347 | 20.16 | Secure of crane, gangway (at port)) | manual | 3eh | 2030-09-05 18:45 | 2030-09-05 21:45 | 1346 | 0.000000 | OFFSHORE | 16 |  |  |
| 1348 | 20.17 | Jacking down at port | manual | 2eh | 2030-09-05 21:45 | 2030-09-05 23:45 | 1347 | 0.000000 | OFFSHORE | 17 |  |  |
| 1349 | 20.18 | Port maneuvering | manual | 1eh | 2030-09-05 23:45 | 2030-09-06 00:45 | 1348 | 0.000000 | OFFSHORE | 18 |  |  |
| 1350 | 20.19 | Transit from port to site | manual | 5.2eh | 2030-09-06 00:45 | 2030-09-06 06:00 | 1349 | 0.000000 | OFFSHORE | 19 |  |  |
| 1351 | 20.20 | DP field check | manual | 0.5eh | 2030-09-06 06:00 | 2030-09-07 00:30 | 1350 | 0.750000 | OFFSHORE | 20 |  |  |
| 1352 | 20.21 | Transit to next foundation | manual | 1eh | 2030-09-07 00:30 | 2030-09-07 01:30 | 1351 | 0.000000 | OFFSHORE | 21 | 39 |  |
| 1353 | 20.22 | Positioning at WTG location | manual | 1eh | 2030-09-07 01:30 | 2030-09-07 02:30 | 1352 | 0.000000 | OFFSHORE | 22 | 39 |  |
| 1354 | 20.23 | Preload and jacking up at site | manual | 4eh | 2030-09-07 02:30 | 2030-09-07 12:00 | 1353 | 0.229167 | OFFSHORE | 23 | 39 |  |
| 1355 | 20.24 | Release crane, gangway and prep for lifting | manual | 3eh | 2030-09-07 12:00 | 2030-09-07 15:00 | 1354 | 0.000000 | OFFSHORE | 24 | 39 |  |
| 1356 | 20.25 | Remove TP cover and Preparation of TP | manual | 1eh | 2030-09-07 15:00 | 2030-09-07 16:00 | 1355 | 0.000000 | OFFSHORE | 25 | 39 |  |
| 1357 | 20.26 | Tower preparation, removal of seafastening bolts | manual | 2eh | 2030-09-07 16:00 | 2030-09-07 18:00 | 1356 | 0.000000 | OFFSHORE | 26 | 39 |  |
| 1358 | 20.27 | Tower rigging-up (attached lifting equipment) | manual | 1eh | 2030-09-07 18:00 | 2030-09-07 19:00 | 1357 | 0.000000 | OFFSHORE | 27 | 39 | G1 |
| 1359 | 20.28 | Tower Lifting (safe-to-safe) | manual | 3.5eh | 2030-09-07 19:00 | 2030-09-07 22:30 | 1358 | 0.000000 | OFFSHORE | 28 | 39 | G1 |
| 1360 | 20.29 | Tower derigging (remove lifting equipment) | manual | 0.5eh | 2030-09-07 22:30 | 2030-09-07 23:00 | 1359 | 0.000000 | OFFSHORE | 29 | 39 | G1 |
| 1361 | 20.30 | Nacelle preparation and rigging | manual | 0.5eh | 2030-09-07 23:00 | 2030-09-07 23:30 | 1360 | 0.000000 | OFFSHORE | 30 | 39 | G2 |
| 1362 | 20.31 | Nacelle Lifting (safe-to-safe) | manual | 2.25eh | 2030-09-07 23:30 | 2030-09-08 01:45 | 1361 | 0.000000 | OFFSHORE | 31 | 39 | G2 |
| 1363 | 20.32 | Nacelle derigging (remove lifting equipment) | manual | 0.5eh | 2030-09-08 01:45 | 2030-09-08 02:15 | 1362 | 0.000000 | OFFSHORE | 32 | 39 | G2 |
| 1364 | 20.33 | Blade yoke rigging and attachement to Blade #1 | manual | 0.5eh | 2030-09-08 02:15 | 2030-09-08 02:45 | 1363 | 0.000000 | OFFSHORE | 33 | 39 | G3 |
| 1365 | 20.34 | Blade #1 Lifting (safe-to-safe) | manual | 1.75eh | 2030-09-08 02:45 | 2030-09-08 04:30 | 1364 | 0.000000 | OFFSHORE | 34 | 39 | G3 |
| 1366 | 20.35 | Blade #1 completion work, re-locate blade yoke to next blade | manual | 1.5eh | 2030-09-08 04:30 | 2030-09-08 06:00 | 1365 | 0.000000 | OFFSHORE | 35 | 39 | G3 |
| 1367 | 20.36 | Blade #2 Lifting (safe-to-safe) | manual | 1.75eh | 2030-09-08 06:00 | 2030-09-08 07:45 | 1366 | 0.000000 | OFFSHORE | 36 | 39 | G4 |
| 1368 | 20.37 | Balde #2 completion work, re-locate blade yoke to next blade | manual | 1.5eh | 2030-09-08 07:45 | 2030-09-08 09:15 | 1367 | 0.000000 | OFFSHORE | 37 | 39 | G4 |
| 1369 | 20.38 | Blade #3 Lifting (safe-to-safe) | manual | 1.75eh | 2030-09-08 09:15 | 2030-09-08 11:00 | 1368 | 0.000000 | OFFSHORE | 38 | 39 | G5 |
| 1370 | 20.39 | Blade #3 completion work, blade yoke de-rigging | manual | 1.5eh | 2030-09-08 11:00 | 2030-09-08 12:30 | 1369 | 0.000000 | OFFSHORE | 39 | 39 | G5 |
| 1371 | 20.40 | Handling HSBM and lifting tools | manual | 1eh | 2030-09-08 12:30 | 2030-09-08 13:30 | 1370 | 0.000000 | OFFSHORE | 40 | 39 |  |
| 1372 | 20.41 | Lifting HSBM and lifting tools from Nacelle | manual | 1eh | 2030-09-08 13:30 | 2030-09-08 14:30 | 1371 | 0.000000 | OFFSHORE | 41 | 39 |  |
| 1373 | 20.42 | Turbine general completion works | manual | 3eh | 2030-09-08 14:30 | 2030-09-08 17:30 | 1372 | 0.000000 | OFFSHORE | 42 | 39 |  |
| 1374 | 20.43 | Secure of crane, gangway etc. Preparation for jacking down and sailing | manual | 3eh | 2030-09-08 17:30 | 2030-09-08 20:30 | 1373 | 0.000000 | OFFSHORE | 43 | 39 |  |
| 1375 | 20.44 | Jacking down at site | manual | 2eh | 2030-09-08 20:30 | 2030-09-08 22:30 | 1374 | 0.000000 | OFFSHORE | 44 | 39 |  |
| 1376 | 20.45 | Transit to next foundation | manual | 1eh | 2030-09-08 22:30 | 2030-09-08 23:30 | 1375 | 0.000000 | OFFSHORE | 21 | 40 |  |
| 1377 | 20.46 | Positioning at WTG location | manual | 1eh | 2030-09-08 23:30 | 2030-09-09 00:30 | 1376 | 0.000000 | OFFSHORE | 22 | 40 |  |
| 1378 | 20.47 | Preload and jacking up at site | manual | 4eh | 2030-09-09 00:30 | 2030-09-09 04:30 | 1377 | 0.000000 | OFFSHORE | 23 | 40 |  |
| 1379 | 20.48 | Release crane, gangway and prep for lifting | manual | 3eh | 2030-09-09 04:30 | 2030-09-09 07:30 | 1378 | 0.000000 | OFFSHORE | 24 | 40 |  |
| 1380 | 20.49 | Remove TP cover and Preparation of TP | manual | 1eh | 2030-09-09 07:30 | 2030-09-09 08:30 | 1379 | 0.000000 | OFFSHORE | 25 | 40 |  |
| 1381 | 20.50 | Tower preparation, removal of seafastening bolts | manual | 2eh | 2030-09-09 08:30 | 2030-09-09 10:30 | 1380 | 0.000000 | OFFSHORE | 26 | 40 |  |
| 1382 | 20.51 | Tower rigging-up (attached lifting equipment) | manual | 1eh | 2030-09-09 10:30 | 2030-09-09 11:30 | 1381 | 0.000000 | OFFSHORE | 27 | 40 | G1 |
| 1383 | 20.52 | Tower Lifting (safe-to-safe) | manual | 3.5eh | 2030-09-09 11:30 | 2030-09-09 15:00 | 1382 | 0.000000 | OFFSHORE | 28 | 40 | G1 |
| 1384 | 20.53 | Tower derigging (remove lifting equipment) | manual | 0.5eh | 2030-09-09 15:00 | 2030-09-09 15:30 | 1383 | 0.000000 | OFFSHORE | 29 | 40 | G1 |
| 1385 | 20.54 | Nacelle preparation and rigging | manual | 0.5eh | 2030-09-09 15:30 | 2030-09-09 16:00 | 1384 | 0.000000 | OFFSHORE | 30 | 40 | G2 |
| 1386 | 20.55 | Nacelle Lifting (safe-to-safe) | manual | 2.25eh | 2030-09-09 16:00 | 2030-09-09 18:15 | 1385 | 0.000000 | OFFSHORE | 31 | 40 | G2 |
| 1387 | 20.56 | Nacelle derigging (remove lifting equipment) | manual | 0.5eh | 2030-09-09 18:15 | 2030-09-09 18:45 | 1386 | 0.000000 | OFFSHORE | 32 | 40 | G2 |
| 1388 | 20.57 | Blade yoke rigging and attachement to Blade #1 | manual | 0.5eh | 2030-09-09 18:45 | 2030-09-09 19:15 | 1387 | 0.000000 | OFFSHORE | 33 | 40 | G3 |
| 1389 | 20.58 | Blade #1 Lifting (safe-to-safe) | manual | 1.75eh | 2030-09-09 19:15 | 2030-09-09 21:00 | 1388 | 0.000000 | OFFSHORE | 34 | 40 | G3 |
| 1390 | 20.59 | Blade #1 completion work, re-locate blade yoke to next blade | manual | 1.5eh | 2030-09-09 21:00 | 2030-09-09 22:30 | 1389 | 0.000000 | OFFSHORE | 35 | 40 | G3 |
| 1391 | 20.60 | Blade #2 Lifting (safe-to-safe) | manual | 1.75eh | 2030-09-09 22:30 | 2030-09-10 00:15 | 1390 | 0.000000 | OFFSHORE | 36 | 40 | G4 |
| 1392 | 20.61 | Balde #2 completion work, re-locate blade yoke to next blade | manual | 1.5eh | 2030-09-10 00:15 | 2030-09-10 01:45 | 1391 | 0.000000 | OFFSHORE | 37 | 40 | G4 |
| 1393 | 20.62 | Blade #3 Lifting (safe-to-safe) | manual | 1.75eh | 2030-09-10 01:45 | 2030-09-10 03:30 | 1392 | 0.000000 | OFFSHORE | 38 | 40 | G5 |
| 1394 | 20.63 | Blade #3 completion work, blade yoke de-rigging | manual | 1.5eh | 2030-09-10 03:30 | 2030-09-10 05:00 | 1393 | 0.000000 | OFFSHORE | 39 | 40 | G5 |
| 1395 | 20.64 | Handling HSBM and lifting tools | manual | 1eh | 2030-09-10 05:00 | 2030-09-10 06:00 | 1394 | 0.000000 | OFFSHORE | 40 | 40 |  |
| 1396 | 20.65 | Lifting HSBM and lifting tools from Nacelle | manual | 1eh | 2030-09-10 06:00 | 2030-09-10 07:00 | 1395 | 0.000000 | OFFSHORE | 41 | 40 |  |
| 1397 | 20.66 | Turbine general completion works | manual | 3eh | 2030-09-10 07:00 | 2030-09-10 10:00 | 1396 | 0.000000 | OFFSHORE | 42 | 40 |  |
| 1398 | 20.67 | Secure of crane, gangway etc. Preparation for jacking down and sailing | manual | 3eh | 2030-09-10 10:00 | 2030-09-10 13:00 | 1397 | 0.000000 | OFFSHORE | 43 | 40 |  |
| 1399 | 20.68 | Jacking down at site | manual | 2eh | 2030-09-10 13:00 | 2030-09-10 15:00 | 1398 | 0.000000 | OFFSHORE | 44 | 40 |  |
| 1400 | 20.69 | Transit from site to port | manual | 5.2eh | 2030-09-10 15:00 | 2030-09-10 20:15 | 1399 | 0.000000 | OFFSHORE | 45 |  |  |

Notes:
- 1331: P50 representative hindcast year 1984; cycle 20; baseline duration 5.163 days; downtime 0.979 days; elapsed duration 6.146 days.
- 1332: Scenario: P50; P50 representative hindcast year 1984; cycle: 20; activity ID: 1; location: OFFSHORE; position: n/a; safe-to-safe group: none; baseline duration: 1.000 h; weather/operational downtime: 0.000 h; elapsed duration: 1.000 h.
- 1333: Scenario: P50; P50 representative hindcast year 1984; cycle: 20; activity ID: 2; location: OFFSHORE; position: n/a; safe-to-safe group: none; baseline duration: 2.000 h; weather/operational downtime: 0.000 h; elapsed duration: 2.000 h.
- 1334: Scenario: P50; P50 representative hindcast year 1984; cycle: 20; activity ID: 3; location: OFFSHORE; position: n/a; safe-to-safe group: none; baseline duration: 3.000 h; weather/operational downtime: 0.000 h; elapsed duration: 3.000 h.
- 1335: Scenario: P50; P50 representative hindcast year 1984; cycle: 20; activity ID: 4; location: OFFSHORE; position: n/a; safe-to-safe group: none; baseline duration: 1.000 h; weather/operational downtime: 0.000 h; elapsed duration: 1.000 h.
- 1336: Scenario: P50; P50 representative hindcast year 1984; cycle: 20; activity ID: 5; location: OFFSHORE; position: n/a; safe-to-safe group: none; baseline duration: 2.250 h; weather/operational downtime: 0.000 h; elapsed duration: 2.250 h.
- 1337: Scenario: P50; P50 representative hindcast year 1984; cycle: 20; activity ID: 6; location: OFFSHORE; position: n/a; safe-to-safe group: none; baseline duration: 2.250 h; weather/operational downtime: 0.000 h; elapsed duration: 2.250 h.
- 1338: Scenario: P50; P50 representative hindcast year 1984; cycle: 20; activity ID: 7; location: OFFSHORE; position: n/a; safe-to-safe group: none; baseline duration: 1.500 h; weather/operational downtime: 0.000 h; elapsed duration: 1.500 h.
- 1339: Scenario: P50; P50 representative hindcast year 1984; cycle: 20; activity ID: 8; location: OFFSHORE; position: n/a; safe-to-safe group: none; baseline duration: 1.500 h; weather/operational downtime: 0.000 h; elapsed duration: 1.500 h.
- 1340: Scenario: P50; P50 representative hindcast year 1984; cycle: 20; activity ID: 9; location: OFFSHORE; position: n/a; safe-to-safe group: none; baseline duration: 1.500 h; weather/operational downtime: 0.000 h; elapsed duration: 1.500 h.
- 1341: Scenario: P50; P50 representative hindcast year 1984; cycle: 20; activity ID: 10; location: OFFSHORE; position: n/a; safe-to-safe group: none; baseline duration: 1.000 h; weather/operational downtime: 0.000 h; elapsed duration: 1.000 h.
- 1342: Scenario: P50; P50 representative hindcast year 1984; cycle: 20; activity ID: 11; location: OFFSHORE; position: n/a; safe-to-safe group: none; baseline duration: 2.250 h; weather/operational downtime: 0.000 h; elapsed duration: 2.250 h.
- 1343: Scenario: P50; P50 representative hindcast year 1984; cycle: 20; activity ID: 12; location: OFFSHORE; position: n/a; safe-to-safe group: none; baseline duration: 2.250 h; weather/operational downtime: 0.000 h; elapsed duration: 2.250 h.
- 1344: Scenario: P50; P50 representative hindcast year 1984; cycle: 20; activity ID: 13; location: OFFSHORE; position: n/a; safe-to-safe group: none; baseline duration: 1.500 h; weather/operational downtime: 0.000 h; elapsed duration: 1.500 h.
- 1345: Scenario: P50; P50 representative hindcast year 1984; cycle: 20; activity ID: 14; location: OFFSHORE; position: n/a; safe-to-safe group: none; baseline duration: 1.500 h; weather/operational downtime: 0.000 h; elapsed duration: 1.500 h.
- 1346: Scenario: P50; P50 representative hindcast year 1984; cycle: 20; activity ID: 15; location: OFFSHORE; position: n/a; safe-to-safe group: none; baseline duration: 1.500 h; weather/operational downtime: 0.000 h; elapsed duration: 1.500 h.
- 1347: Scenario: P50; P50 representative hindcast year 1984; cycle: 20; activity ID: 16; location: OFFSHORE; position: n/a; safe-to-safe group: none; baseline duration: 3.000 h; weather/operational downtime: 0.000 h; elapsed duration: 3.000 h.
- 1348: Scenario: P50; P50 representative hindcast year 1984; cycle: 20; activity ID: 17; location: OFFSHORE; position: n/a; safe-to-safe group: none; baseline duration: 2.000 h; weather/operational downtime: 0.000 h; elapsed duration: 2.000 h.
- 1349: Scenario: P50; P50 representative hindcast year 1984; cycle: 20; activity ID: 18; location: OFFSHORE; position: n/a; safe-to-safe group: none; baseline duration: 1.000 h; weather/operational downtime: 0.000 h; elapsed duration: 1.000 h.
- 1350: Scenario: P50; P50 representative hindcast year 1984; cycle: 20; activity ID: 19; location: OFFSHORE; position: n/a; safe-to-safe group: none; baseline duration: 5.200 h; weather/operational downtime: 0.000 h; elapsed duration: 5.250 h.
- 1351: Scenario: P50; P50 representative hindcast year 1984; cycle: 20; activity ID: 20; location: OFFSHORE; position: n/a; safe-to-safe group: none; baseline duration: 0.500 h; weather/operational downtime: 18.000 h; elapsed duration: 18.500 h.
- 1352: Scenario: P50; P50 representative hindcast year 1984; cycle: 20; activity ID: 21; location: OFFSHORE; position: 39; safe-to-safe group: none; baseline duration: 1.000 h; weather/operational downtime: 0.000 h; elapsed duration: 1.000 h.
- 1353: Scenario: P50; P50 representative hindcast year 1984; cycle: 20; activity ID: 22; location: OFFSHORE; position: 39; safe-to-safe group: none; baseline duration: 1.000 h; weather/operational downtime: 0.000 h; elapsed duration: 1.000 h.
- 1354: Scenario: P50; P50 representative hindcast year 1984; cycle: 20; activity ID: 23; location: OFFSHORE; position: 39; safe-to-safe group: none; baseline duration: 4.000 h; weather/operational downtime: 5.500 h; elapsed duration: 9.500 h.
- 1355: Scenario: P50; P50 representative hindcast year 1984; cycle: 20; activity ID: 24; location: OFFSHORE; position: 39; safe-to-safe group: none; baseline duration: 3.000 h; weather/operational downtime: 0.000 h; elapsed duration: 3.000 h.
- 1356: Scenario: P50; P50 representative hindcast year 1984; cycle: 20; activity ID: 25; location: OFFSHORE; position: 39; safe-to-safe group: none; baseline duration: 1.000 h; weather/operational downtime: 0.000 h; elapsed duration: 1.000 h.
- 1357: Scenario: P50; P50 representative hindcast year 1984; cycle: 20; activity ID: 26; location: OFFSHORE; position: 39; safe-to-safe group: none; baseline duration: 2.000 h; weather/operational downtime: 0.000 h; elapsed duration: 2.000 h.
- 1358: Scenario: P50; P50 representative hindcast year 1984; cycle: 20; activity ID: 27; location: OFFSHORE; position: 39; safe-to-safe group: G1; baseline duration: 1.000 h; weather/operational downtime: 0.000 h; elapsed duration: 1.000 h.
- 1359: Scenario: P50; P50 representative hindcast year 1984; cycle: 20; activity ID: 28; location: OFFSHORE; position: 39; safe-to-safe group: G1; baseline duration: 3.500 h; weather/operational downtime: 0.000 h; elapsed duration: 3.500 h.
- 1360: Scenario: P50; P50 representative hindcast year 1984; cycle: 20; activity ID: 29; location: OFFSHORE; position: 39; safe-to-safe group: G1; baseline duration: 0.500 h; weather/operational downtime: 0.000 h; elapsed duration: 0.500 h.
- 1361: Scenario: P50; P50 representative hindcast year 1984; cycle: 20; activity ID: 30; location: OFFSHORE; position: 39; safe-to-safe group: G2; baseline duration: 0.500 h; weather/operational downtime: 0.000 h; elapsed duration: 0.500 h.
- 1362: Scenario: P50; P50 representative hindcast year 1984; cycle: 20; activity ID: 31; location: OFFSHORE; position: 39; safe-to-safe group: G2; baseline duration: 2.250 h; weather/operational downtime: 0.000 h; elapsed duration: 2.250 h.
- 1363: Scenario: P50; P50 representative hindcast year 1984; cycle: 20; activity ID: 32; location: OFFSHORE; position: 39; safe-to-safe group: G2; baseline duration: 0.500 h; weather/operational downtime: 0.000 h; elapsed duration: 0.500 h.
- 1364: Scenario: P50; P50 representative hindcast year 1984; cycle: 20; activity ID: 33; location: OFFSHORE; position: 39; safe-to-safe group: G3; baseline duration: 0.500 h; weather/operational downtime: 0.000 h; elapsed duration: 0.500 h.
- 1365: Scenario: P50; P50 representative hindcast year 1984; cycle: 20; activity ID: 34; location: OFFSHORE; position: 39; safe-to-safe group: G3; baseline duration: 1.750 h; weather/operational downtime: 0.000 h; elapsed duration: 1.750 h.
- 1366: Scenario: P50; P50 representative hindcast year 1984; cycle: 20; activity ID: 35; location: OFFSHORE; position: 39; safe-to-safe group: G3; baseline duration: 1.500 h; weather/operational downtime: 0.000 h; elapsed duration: 1.500 h.
- 1367: Scenario: P50; P50 representative hindcast year 1984; cycle: 20; activity ID: 36; location: OFFSHORE; position: 39; safe-to-safe group: G4; baseline duration: 1.750 h; weather/operational downtime: 0.000 h; elapsed duration: 1.750 h.
- 1368: Scenario: P50; P50 representative hindcast year 1984; cycle: 20; activity ID: 37; location: OFFSHORE; position: 39; safe-to-safe group: G4; baseline duration: 1.500 h; weather/operational downtime: 0.000 h; elapsed duration: 1.500 h.
- 1369: Scenario: P50; P50 representative hindcast year 1984; cycle: 20; activity ID: 38; location: OFFSHORE; position: 39; safe-to-safe group: G5; baseline duration: 1.750 h; weather/operational downtime: 0.000 h; elapsed duration: 1.750 h.
- 1370: Scenario: P50; P50 representative hindcast year 1984; cycle: 20; activity ID: 39; location: OFFSHORE; position: 39; safe-to-safe group: G5; baseline duration: 1.500 h; weather/operational downtime: 0.000 h; elapsed duration: 1.500 h.
- 1371: Scenario: P50; P50 representative hindcast year 1984; cycle: 20; activity ID: 40; location: OFFSHORE; position: 39; safe-to-safe group: none; baseline duration: 1.000 h; weather/operational downtime: 0.000 h; elapsed duration: 1.000 h.
- 1372: Scenario: P50; P50 representative hindcast year 1984; cycle: 20; activity ID: 41; location: OFFSHORE; position: 39; safe-to-safe group: none; baseline duration: 1.000 h; weather/operational downtime: 0.000 h; elapsed duration: 1.000 h.
- 1373: Scenario: P50; P50 representative hindcast year 1984; cycle: 20; activity ID: 42; location: OFFSHORE; position: 39; safe-to-safe group: none; baseline duration: 3.000 h; weather/operational downtime: 0.000 h; elapsed duration: 3.000 h.
- 1374: Scenario: P50; P50 representative hindcast year 1984; cycle: 20; activity ID: 43; location: OFFSHORE; position: 39; safe-to-safe group: none; baseline duration: 3.000 h; weather/operational downtime: 0.000 h; elapsed duration: 3.000 h.
- 1375: Scenario: P50; P50 representative hindcast year 1984; cycle: 20; activity ID: 44; location: OFFSHORE; position: 39; safe-to-safe group: none; baseline duration: 2.000 h; weather/operational downtime: 0.000 h; elapsed duration: 2.000 h.
- 1376: Scenario: P50; P50 representative hindcast year 1984; cycle: 20; activity ID: 21; location: OFFSHORE; position: 40; safe-to-safe group: none; baseline duration: 1.000 h; weather/operational downtime: 0.000 h; elapsed duration: 1.000 h.
- 1377: Scenario: P50; P50 representative hindcast year 1984; cycle: 20; activity ID: 22; location: OFFSHORE; position: 40; safe-to-safe group: none; baseline duration: 1.000 h; weather/operational downtime: 0.000 h; elapsed duration: 1.000 h.
- 1378: Scenario: P50; P50 representative hindcast year 1984; cycle: 20; activity ID: 23; location: OFFSHORE; position: 40; safe-to-safe group: none; baseline duration: 4.000 h; weather/operational downtime: 0.000 h; elapsed duration: 4.000 h.
- 1379: Scenario: P50; P50 representative hindcast year 1984; cycle: 20; activity ID: 24; location: OFFSHORE; position: 40; safe-to-safe group: none; baseline duration: 3.000 h; weather/operational downtime: 0.000 h; elapsed duration: 3.000 h.
- 1380: Scenario: P50; P50 representative hindcast year 1984; cycle: 20; activity ID: 25; location: OFFSHORE; position: 40; safe-to-safe group: none; baseline duration: 1.000 h; weather/operational downtime: 0.000 h; elapsed duration: 1.000 h.
- 1381: Scenario: P50; P50 representative hindcast year 1984; cycle: 20; activity ID: 26; location: OFFSHORE; position: 40; safe-to-safe group: none; baseline duration: 2.000 h; weather/operational downtime: 0.000 h; elapsed duration: 2.000 h.
- 1382: Scenario: P50; P50 representative hindcast year 1984; cycle: 20; activity ID: 27; location: OFFSHORE; position: 40; safe-to-safe group: G1; baseline duration: 1.000 h; weather/operational downtime: 0.000 h; elapsed duration: 1.000 h.
- 1383: Scenario: P50; P50 representative hindcast year 1984; cycle: 20; activity ID: 28; location: OFFSHORE; position: 40; safe-to-safe group: G1; baseline duration: 3.500 h; weather/operational downtime: 0.000 h; elapsed duration: 3.500 h.
- 1384: Scenario: P50; P50 representative hindcast year 1984; cycle: 20; activity ID: 29; location: OFFSHORE; position: 40; safe-to-safe group: G1; baseline duration: 0.500 h; weather/operational downtime: 0.000 h; elapsed duration: 0.500 h.
- 1385: Scenario: P50; P50 representative hindcast year 1984; cycle: 20; activity ID: 30; location: OFFSHORE; position: 40; safe-to-safe group: G2; baseline duration: 0.500 h; weather/operational downtime: 0.000 h; elapsed duration: 0.500 h.
- 1386: Scenario: P50; P50 representative hindcast year 1984; cycle: 20; activity ID: 31; location: OFFSHORE; position: 40; safe-to-safe group: G2; baseline duration: 2.250 h; weather/operational downtime: 0.000 h; elapsed duration: 2.250 h.
- 1387: Scenario: P50; P50 representative hindcast year 1984; cycle: 20; activity ID: 32; location: OFFSHORE; position: 40; safe-to-safe group: G2; baseline duration: 0.500 h; weather/operational downtime: 0.000 h; elapsed duration: 0.500 h.
- 1388: Scenario: P50; P50 representative hindcast year 1984; cycle: 20; activity ID: 33; location: OFFSHORE; position: 40; safe-to-safe group: G3; baseline duration: 0.500 h; weather/operational downtime: 0.000 h; elapsed duration: 0.500 h.
- 1389: Scenario: P50; P50 representative hindcast year 1984; cycle: 20; activity ID: 34; location: OFFSHORE; position: 40; safe-to-safe group: G3; baseline duration: 1.750 h; weather/operational downtime: 0.000 h; elapsed duration: 1.750 h.
- 1390: Scenario: P50; P50 representative hindcast year 1984; cycle: 20; activity ID: 35; location: OFFSHORE; position: 40; safe-to-safe group: G3; baseline duration: 1.500 h; weather/operational downtime: 0.000 h; elapsed duration: 1.500 h.
- 1391: Scenario: P50; P50 representative hindcast year 1984; cycle: 20; activity ID: 36; location: OFFSHORE; position: 40; safe-to-safe group: G4; baseline duration: 1.750 h; weather/operational downtime: 0.000 h; elapsed duration: 1.750 h.
- 1392: Scenario: P50; P50 representative hindcast year 1984; cycle: 20; activity ID: 37; location: OFFSHORE; position: 40; safe-to-safe group: G4; baseline duration: 1.500 h; weather/operational downtime: 0.000 h; elapsed duration: 1.500 h.
- 1393: Scenario: P50; P50 representative hindcast year 1984; cycle: 20; activity ID: 38; location: OFFSHORE; position: 40; safe-to-safe group: G5; baseline duration: 1.750 h; weather/operational downtime: 0.000 h; elapsed duration: 1.750 h.
- 1394: Scenario: P50; P50 representative hindcast year 1984; cycle: 20; activity ID: 39; location: OFFSHORE; position: 40; safe-to-safe group: G5; baseline duration: 1.500 h; weather/operational downtime: 0.000 h; elapsed duration: 1.500 h.
- 1395: Scenario: P50; P50 representative hindcast year 1984; cycle: 20; activity ID: 40; location: OFFSHORE; position: 40; safe-to-safe group: none; baseline duration: 1.000 h; weather/operational downtime: 0.000 h; elapsed duration: 1.000 h.
- 1396: Scenario: P50; P50 representative hindcast year 1984; cycle: 20; activity ID: 41; location: OFFSHORE; position: 40; safe-to-safe group: none; baseline duration: 1.000 h; weather/operational downtime: 0.000 h; elapsed duration: 1.000 h.
- 1397: Scenario: P50; P50 representative hindcast year 1984; cycle: 20; activity ID: 42; location: OFFSHORE; position: 40; safe-to-safe group: none; baseline duration: 3.000 h; weather/operational downtime: 0.000 h; elapsed duration: 3.000 h.
- 1398: Scenario: P50; P50 representative hindcast year 1984; cycle: 20; activity ID: 43; location: OFFSHORE; position: 40; safe-to-safe group: none; baseline duration: 3.000 h; weather/operational downtime: 0.000 h; elapsed duration: 3.000 h.
- 1399: Scenario: P50; P50 representative hindcast year 1984; cycle: 20; activity ID: 44; location: OFFSHORE; position: 40; safe-to-safe group: none; baseline duration: 2.000 h; weather/operational downtime: 0.000 h; elapsed duration: 2.000 h.
- 1400: Scenario: P50; P50 representative hindcast year 1984; cycle: 20; activity ID: 45; location: OFFSHORE; position: n/a; safe-to-safe group: none; baseline duration: 5.200 h; weather/operational downtime: 0.000 h; elapsed duration: 5.250 h.

| ID | WBS | Task | Type | Duration | Start | Finish | Predecessors | Duration WDT [days] | Location | Activity ID | Position | Safe-to-safe group |
| --- | --- | --- | --- | --- | --- | --- | --- | --- | --- | --- | --- | --- |
| 1401 | 21 | **Cycle 21 — Positions 41–42** |  | 123.9eh | 2030-09-10 20:15 | 2030-09-17 03:45 |  | 1.145833 |  |  |  |  |
| 1402 | 21.1 | Port maneuvering | manual | 1eh | 2030-09-10 20:15 | 2030-09-10 21:15 | 1400 | 0.000000 | OFFSHORE | 1 |  |  |
| 1403 | 21.2 | Preload and jacking up at port | manual | 2eh | 2030-09-10 21:15 | 2030-09-10 23:15 | 1402 | 0.000000 | OFFSHORE | 2 |  |  |
| 1404 | 21.3 | Release crane, gangway etc and prep for lifting | manual | 3eh | 2030-09-10 23:15 | 2030-09-11 02:15 | 1403 | 0.000000 | OFFSHORE | 3 |  |  |
| 1405 | 21.4 | Load in/out WTG supplier equipment | manual | 1eh | 2030-09-11 02:15 | 2030-09-11 03:15 | 1404 | 0.000000 | OFFSHORE | 4 |  |  |
| 1406 | 21.5 | Loadout Nacelle #1 | manual | 2.25eh | 2030-09-11 03:15 | 2030-09-11 05:30 | 1405 | 0.000000 | OFFSHORE | 5 |  |  |
| 1407 | 21.6 | Loadout Tower #1 | manual | 2.25eh | 2030-09-11 05:30 | 2030-09-11 07:45 | 1406 | 0.000000 | OFFSHORE | 6 |  |  |
| 1408 | 21.7 | Loadout Blade 1 | manual | 1.5eh | 2030-09-11 07:45 | 2030-09-11 09:15 | 1407 | 0.000000 | OFFSHORE | 7 |  |  |
| 1409 | 21.8 | Loadout Blade 2 | manual | 1.5eh | 2030-09-11 09:15 | 2030-09-11 10:45 | 1408 | 0.000000 | OFFSHORE | 8 |  |  |
| 1410 | 21.9 | Loadout Blade 3 | manual | 1.5eh | 2030-09-11 10:45 | 2030-09-11 12:15 | 1409 | 0.000000 | OFFSHORE | 9 |  |  |
| 1411 | 21.10 | Load in/out WTG supplier equipment | manual | 1eh | 2030-09-11 12:15 | 2030-09-11 13:15 | 1410 | 0.000000 | OFFSHORE | 10 |  |  |
| 1412 | 21.11 | Loadout Nacelle #2 | manual | 2.25eh | 2030-09-11 13:15 | 2030-09-11 15:30 | 1411 | 0.000000 | OFFSHORE | 11 |  |  |
| 1413 | 21.12 | Loadout Tower #2 | manual | 2.25eh | 2030-09-11 15:30 | 2030-09-11 17:45 | 1412 | 0.000000 | OFFSHORE | 12 |  |  |
| 1414 | 21.13 | Loadout Blade 1 | manual | 1.5eh | 2030-09-11 17:45 | 2030-09-11 19:15 | 1413 | 0.000000 | OFFSHORE | 13 |  |  |
| 1415 | 21.14 | Loadout Blade 2 | manual | 1.5eh | 2030-09-11 19:15 | 2030-09-11 20:45 | 1414 | 0.000000 | OFFSHORE | 14 |  |  |
| 1416 | 21.15 | Loadout Blade 3 | manual | 1.5eh | 2030-09-11 20:45 | 2030-09-11 22:15 | 1415 | 0.000000 | OFFSHORE | 15 |  |  |
| 1417 | 21.16 | Secure of crane, gangway (at port)) | manual | 3eh | 2030-09-11 22:15 | 2030-09-12 01:15 | 1416 | 0.000000 | OFFSHORE | 16 |  |  |
| 1418 | 21.17 | Jacking down at port | manual | 2eh | 2030-09-12 01:15 | 2030-09-12 03:15 | 1417 | 0.000000 | OFFSHORE | 17 |  |  |
| 1419 | 21.18 | Port maneuvering | manual | 1eh | 2030-09-12 03:15 | 2030-09-12 04:15 | 1418 | 0.000000 | OFFSHORE | 18 |  |  |
| 1420 | 21.19 | Transit from port to site | manual | 5.2eh | 2030-09-12 04:15 | 2030-09-12 09:30 | 1419 | 0.000000 | OFFSHORE | 19 |  |  |
| 1421 | 21.20 | DP field check | manual | 0.5eh | 2030-09-12 09:30 | 2030-09-12 10:00 | 1420 | 0.000000 | OFFSHORE | 20 |  |  |
| 1422 | 21.21 | Transit to next foundation | manual | 1eh | 2030-09-12 10:00 | 2030-09-12 11:00 | 1421 | 0.000000 | OFFSHORE | 21 | 41 |  |
| 1423 | 21.22 | Positioning at WTG location | manual | 1eh | 2030-09-12 11:00 | 2030-09-12 12:00 | 1422 | 0.000000 | OFFSHORE | 22 | 41 |  |
| 1424 | 21.23 | Preload and jacking up at site | manual | 4eh | 2030-09-12 12:00 | 2030-09-12 16:00 | 1423 | 0.000000 | OFFSHORE | 23 | 41 |  |
| 1425 | 21.24 | Release crane, gangway and prep for lifting | manual | 3eh | 2030-09-12 16:00 | 2030-09-12 19:00 | 1424 | 0.000000 | OFFSHORE | 24 | 41 |  |
| 1426 | 21.25 | Remove TP cover and Preparation of TP | manual | 1eh | 2030-09-12 19:00 | 2030-09-12 20:00 | 1425 | 0.000000 | OFFSHORE | 25 | 41 |  |
| 1427 | 21.26 | Tower preparation, removal of seafastening bolts | manual | 2eh | 2030-09-12 20:00 | 2030-09-12 22:00 | 1426 | 0.000000 | OFFSHORE | 26 | 41 |  |
| 1428 | 21.27 | Tower rigging-up (attached lifting equipment) | manual | 1eh | 2030-09-12 22:00 | 2030-09-12 23:00 | 1427 | 0.000000 | OFFSHORE | 27 | 41 | G1 |
| 1429 | 21.28 | Tower Lifting (safe-to-safe) | manual | 3.5eh | 2030-09-12 23:00 | 2030-09-13 02:30 | 1428 | 0.000000 | OFFSHORE | 28 | 41 | G1 |
| 1430 | 21.29 | Tower derigging (remove lifting equipment) | manual | 0.5eh | 2030-09-13 02:30 | 2030-09-13 03:00 | 1429 | 0.000000 | OFFSHORE | 29 | 41 | G1 |
| 1431 | 21.30 | Nacelle preparation and rigging | manual | 0.5eh | 2030-09-13 03:00 | 2030-09-13 03:30 | 1430 | 0.000000 | OFFSHORE | 30 | 41 | G2 |
| 1432 | 21.31 | Nacelle Lifting (safe-to-safe) | manual | 2.25eh | 2030-09-13 03:30 | 2030-09-13 05:45 | 1431 | 0.000000 | OFFSHORE | 31 | 41 | G2 |
| 1433 | 21.32 | Nacelle derigging (remove lifting equipment) | manual | 0.5eh | 2030-09-13 05:45 | 2030-09-13 06:15 | 1432 | 0.000000 | OFFSHORE | 32 | 41 | G2 |
| 1434 | 21.33 | Blade yoke rigging and attachement to Blade #1 | manual | 0.5eh | 2030-09-13 06:15 | 2030-09-14 09:30 | 1433 | 1.114583 | OFFSHORE | 33 | 41 | G3 |
| 1435 | 21.34 | Blade #1 Lifting (safe-to-safe) | manual | 1.75eh | 2030-09-14 09:30 | 2030-09-14 11:15 | 1434 | 0.000000 | OFFSHORE | 34 | 41 | G3 |
| 1436 | 21.35 | Blade #1 completion work, re-locate blade yoke to next blade | manual | 1.5eh | 2030-09-14 11:15 | 2030-09-14 12:45 | 1435 | 0.000000 | OFFSHORE | 35 | 41 | G3 |
| 1437 | 21.36 | Blade #2 Lifting (safe-to-safe) | manual | 1.75eh | 2030-09-14 12:45 | 2030-09-14 14:30 | 1436 | 0.000000 | OFFSHORE | 36 | 41 | G4 |
| 1438 | 21.37 | Balde #2 completion work, re-locate blade yoke to next blade | manual | 1.5eh | 2030-09-14 14:30 | 2030-09-14 16:00 | 1437 | 0.000000 | OFFSHORE | 37 | 41 | G4 |
| 1439 | 21.38 | Blade #3 Lifting (safe-to-safe) | manual | 1.75eh | 2030-09-14 16:00 | 2030-09-14 17:45 | 1438 | 0.000000 | OFFSHORE | 38 | 41 | G5 |
| 1440 | 21.39 | Blade #3 completion work, blade yoke de-rigging | manual | 1.5eh | 2030-09-14 17:45 | 2030-09-14 19:15 | 1439 | 0.000000 | OFFSHORE | 39 | 41 | G5 |
| 1441 | 21.40 | Handling HSBM and lifting tools | manual | 1eh | 2030-09-14 19:15 | 2030-09-14 20:15 | 1440 | 0.000000 | OFFSHORE | 40 | 41 |  |
| 1442 | 21.41 | Lifting HSBM and lifting tools from Nacelle | manual | 1eh | 2030-09-14 20:15 | 2030-09-14 21:15 | 1441 | 0.000000 | OFFSHORE | 41 | 41 |  |
| 1443 | 21.42 | Turbine general completion works | manual | 3eh | 2030-09-14 21:15 | 2030-09-15 00:15 | 1442 | 0.000000 | OFFSHORE | 42 | 41 |  |
| 1444 | 21.43 | Secure of crane, gangway etc. Preparation for jacking down and sailing | manual | 3eh | 2030-09-15 00:15 | 2030-09-15 03:15 | 1443 | 0.000000 | OFFSHORE | 43 | 41 |  |
| 1445 | 21.44 | Jacking down at site | manual | 2eh | 2030-09-15 03:15 | 2030-09-15 06:00 | 1444 | 0.031250 | OFFSHORE | 44 | 41 |  |
| 1446 | 21.45 | Transit to next foundation | manual | 1eh | 2030-09-15 06:00 | 2030-09-15 07:00 | 1445 | 0.000000 | OFFSHORE | 21 | 42 |  |
| 1447 | 21.46 | Positioning at WTG location | manual | 1eh | 2030-09-15 07:00 | 2030-09-15 08:00 | 1446 | 0.000000 | OFFSHORE | 22 | 42 |  |
| 1448 | 21.47 | Preload and jacking up at site | manual | 4eh | 2030-09-15 08:00 | 2030-09-15 12:00 | 1447 | 0.000000 | OFFSHORE | 23 | 42 |  |
| 1449 | 21.48 | Release crane, gangway and prep for lifting | manual | 3eh | 2030-09-15 12:00 | 2030-09-15 15:00 | 1448 | 0.000000 | OFFSHORE | 24 | 42 |  |
| 1450 | 21.49 | Remove TP cover and Preparation of TP | manual | 1eh | 2030-09-15 15:00 | 2030-09-15 16:00 | 1449 | 0.000000 | OFFSHORE | 25 | 42 |  |
| 1451 | 21.50 | Tower preparation, removal of seafastening bolts | manual | 2eh | 2030-09-15 16:00 | 2030-09-15 18:00 | 1450 | 0.000000 | OFFSHORE | 26 | 42 |  |
| 1452 | 21.51 | Tower rigging-up (attached lifting equipment) | manual | 1eh | 2030-09-15 18:00 | 2030-09-15 19:00 | 1451 | 0.000000 | OFFSHORE | 27 | 42 | G1 |
| 1453 | 21.52 | Tower Lifting (safe-to-safe) | manual | 3.5eh | 2030-09-15 19:00 | 2030-09-15 22:30 | 1452 | 0.000000 | OFFSHORE | 28 | 42 | G1 |
| 1454 | 21.53 | Tower derigging (remove lifting equipment) | manual | 0.5eh | 2030-09-15 22:30 | 2030-09-15 23:00 | 1453 | 0.000000 | OFFSHORE | 29 | 42 | G1 |
| 1455 | 21.54 | Nacelle preparation and rigging | manual | 0.5eh | 2030-09-15 23:00 | 2030-09-15 23:30 | 1454 | 0.000000 | OFFSHORE | 30 | 42 | G2 |
| 1456 | 21.55 | Nacelle Lifting (safe-to-safe) | manual | 2.25eh | 2030-09-15 23:30 | 2030-09-16 01:45 | 1455 | 0.000000 | OFFSHORE | 31 | 42 | G2 |
| 1457 | 21.56 | Nacelle derigging (remove lifting equipment) | manual | 0.5eh | 2030-09-16 01:45 | 2030-09-16 02:15 | 1456 | 0.000000 | OFFSHORE | 32 | 42 | G2 |
| 1458 | 21.57 | Blade yoke rigging and attachement to Blade #1 | manual | 0.5eh | 2030-09-16 02:15 | 2030-09-16 02:45 | 1457 | 0.000000 | OFFSHORE | 33 | 42 | G3 |
| 1459 | 21.58 | Blade #1 Lifting (safe-to-safe) | manual | 1.75eh | 2030-09-16 02:45 | 2030-09-16 04:30 | 1458 | 0.000000 | OFFSHORE | 34 | 42 | G3 |
| 1460 | 21.59 | Blade #1 completion work, re-locate blade yoke to next blade | manual | 1.5eh | 2030-09-16 04:30 | 2030-09-16 06:00 | 1459 | 0.000000 | OFFSHORE | 35 | 42 | G3 |
| 1461 | 21.60 | Blade #2 Lifting (safe-to-safe) | manual | 1.75eh | 2030-09-16 06:00 | 2030-09-16 07:45 | 1460 | 0.000000 | OFFSHORE | 36 | 42 | G4 |
| 1462 | 21.61 | Balde #2 completion work, re-locate blade yoke to next blade | manual | 1.5eh | 2030-09-16 07:45 | 2030-09-16 09:15 | 1461 | 0.000000 | OFFSHORE | 37 | 42 | G4 |
| 1463 | 21.62 | Blade #3 Lifting (safe-to-safe) | manual | 1.75eh | 2030-09-16 09:15 | 2030-09-16 11:00 | 1462 | 0.000000 | OFFSHORE | 38 | 42 | G5 |
| 1464 | 21.63 | Blade #3 completion work, blade yoke de-rigging | manual | 1.5eh | 2030-09-16 11:00 | 2030-09-16 12:30 | 1463 | 0.000000 | OFFSHORE | 39 | 42 | G5 |
| 1465 | 21.64 | Handling HSBM and lifting tools | manual | 1eh | 2030-09-16 12:30 | 2030-09-16 13:30 | 1464 | 0.000000 | OFFSHORE | 40 | 42 |  |
| 1466 | 21.65 | Lifting HSBM and lifting tools from Nacelle | manual | 1eh | 2030-09-16 13:30 | 2030-09-16 14:30 | 1465 | 0.000000 | OFFSHORE | 41 | 42 |  |
| 1467 | 21.66 | Turbine general completion works | manual | 3eh | 2030-09-16 14:30 | 2030-09-16 17:30 | 1466 | 0.000000 | OFFSHORE | 42 | 42 |  |
| 1468 | 21.67 | Secure of crane, gangway etc. Preparation for jacking down and sailing | manual | 3eh | 2030-09-16 17:30 | 2030-09-16 20:30 | 1467 | 0.000000 | OFFSHORE | 43 | 42 |  |
| 1469 | 21.68 | Jacking down at site | manual | 2eh | 2030-09-16 20:30 | 2030-09-16 22:30 | 1468 | 0.000000 | OFFSHORE | 44 | 42 |  |
| 1470 | 21.69 | Transit from site to port | manual | 5.2eh | 2030-09-16 22:30 | 2030-09-17 03:45 | 1469 | 0.000000 | OFFSHORE | 45 |  |  |

Notes:
- 1401: P50 representative hindcast year 1984; cycle 21; baseline duration 5.163 days; downtime 1.146 days; elapsed duration 6.312 days.
- 1402: Scenario: P50; P50 representative hindcast year 1984; cycle: 21; activity ID: 1; location: OFFSHORE; position: n/a; safe-to-safe group: none; baseline duration: 1.000 h; weather/operational downtime: 0.000 h; elapsed duration: 1.000 h.
- 1403: Scenario: P50; P50 representative hindcast year 1984; cycle: 21; activity ID: 2; location: OFFSHORE; position: n/a; safe-to-safe group: none; baseline duration: 2.000 h; weather/operational downtime: 0.000 h; elapsed duration: 2.000 h.
- 1404: Scenario: P50; P50 representative hindcast year 1984; cycle: 21; activity ID: 3; location: OFFSHORE; position: n/a; safe-to-safe group: none; baseline duration: 3.000 h; weather/operational downtime: 0.000 h; elapsed duration: 3.000 h.
- 1405: Scenario: P50; P50 representative hindcast year 1984; cycle: 21; activity ID: 4; location: OFFSHORE; position: n/a; safe-to-safe group: none; baseline duration: 1.000 h; weather/operational downtime: 0.000 h; elapsed duration: 1.000 h.
- 1406: Scenario: P50; P50 representative hindcast year 1984; cycle: 21; activity ID: 5; location: OFFSHORE; position: n/a; safe-to-safe group: none; baseline duration: 2.250 h; weather/operational downtime: 0.000 h; elapsed duration: 2.250 h.
- 1407: Scenario: P50; P50 representative hindcast year 1984; cycle: 21; activity ID: 6; location: OFFSHORE; position: n/a; safe-to-safe group: none; baseline duration: 2.250 h; weather/operational downtime: 0.000 h; elapsed duration: 2.250 h.
- 1408: Scenario: P50; P50 representative hindcast year 1984; cycle: 21; activity ID: 7; location: OFFSHORE; position: n/a; safe-to-safe group: none; baseline duration: 1.500 h; weather/operational downtime: 0.000 h; elapsed duration: 1.500 h.
- 1409: Scenario: P50; P50 representative hindcast year 1984; cycle: 21; activity ID: 8; location: OFFSHORE; position: n/a; safe-to-safe group: none; baseline duration: 1.500 h; weather/operational downtime: 0.000 h; elapsed duration: 1.500 h.
- 1410: Scenario: P50; P50 representative hindcast year 1984; cycle: 21; activity ID: 9; location: OFFSHORE; position: n/a; safe-to-safe group: none; baseline duration: 1.500 h; weather/operational downtime: 0.000 h; elapsed duration: 1.500 h.
- 1411: Scenario: P50; P50 representative hindcast year 1984; cycle: 21; activity ID: 10; location: OFFSHORE; position: n/a; safe-to-safe group: none; baseline duration: 1.000 h; weather/operational downtime: 0.000 h; elapsed duration: 1.000 h.
- 1412: Scenario: P50; P50 representative hindcast year 1984; cycle: 21; activity ID: 11; location: OFFSHORE; position: n/a; safe-to-safe group: none; baseline duration: 2.250 h; weather/operational downtime: 0.000 h; elapsed duration: 2.250 h.
- 1413: Scenario: P50; P50 representative hindcast year 1984; cycle: 21; activity ID: 12; location: OFFSHORE; position: n/a; safe-to-safe group: none; baseline duration: 2.250 h; weather/operational downtime: 0.000 h; elapsed duration: 2.250 h.
- 1414: Scenario: P50; P50 representative hindcast year 1984; cycle: 21; activity ID: 13; location: OFFSHORE; position: n/a; safe-to-safe group: none; baseline duration: 1.500 h; weather/operational downtime: 0.000 h; elapsed duration: 1.500 h.
- 1415: Scenario: P50; P50 representative hindcast year 1984; cycle: 21; activity ID: 14; location: OFFSHORE; position: n/a; safe-to-safe group: none; baseline duration: 1.500 h; weather/operational downtime: 0.000 h; elapsed duration: 1.500 h.
- 1416: Scenario: P50; P50 representative hindcast year 1984; cycle: 21; activity ID: 15; location: OFFSHORE; position: n/a; safe-to-safe group: none; baseline duration: 1.500 h; weather/operational downtime: 0.000 h; elapsed duration: 1.500 h.
- 1417: Scenario: P50; P50 representative hindcast year 1984; cycle: 21; activity ID: 16; location: OFFSHORE; position: n/a; safe-to-safe group: none; baseline duration: 3.000 h; weather/operational downtime: 0.000 h; elapsed duration: 3.000 h.
- 1418: Scenario: P50; P50 representative hindcast year 1984; cycle: 21; activity ID: 17; location: OFFSHORE; position: n/a; safe-to-safe group: none; baseline duration: 2.000 h; weather/operational downtime: 0.000 h; elapsed duration: 2.000 h.
- 1419: Scenario: P50; P50 representative hindcast year 1984; cycle: 21; activity ID: 18; location: OFFSHORE; position: n/a; safe-to-safe group: none; baseline duration: 1.000 h; weather/operational downtime: 0.000 h; elapsed duration: 1.000 h.
- 1420: Scenario: P50; P50 representative hindcast year 1984; cycle: 21; activity ID: 19; location: OFFSHORE; position: n/a; safe-to-safe group: none; baseline duration: 5.200 h; weather/operational downtime: 0.000 h; elapsed duration: 5.250 h.
- 1421: Scenario: P50; P50 representative hindcast year 1984; cycle: 21; activity ID: 20; location: OFFSHORE; position: n/a; safe-to-safe group: none; baseline duration: 0.500 h; weather/operational downtime: 0.000 h; elapsed duration: 0.500 h.
- 1422: Scenario: P50; P50 representative hindcast year 1984; cycle: 21; activity ID: 21; location: OFFSHORE; position: 41; safe-to-safe group: none; baseline duration: 1.000 h; weather/operational downtime: 0.000 h; elapsed duration: 1.000 h.
- 1423: Scenario: P50; P50 representative hindcast year 1984; cycle: 21; activity ID: 22; location: OFFSHORE; position: 41; safe-to-safe group: none; baseline duration: 1.000 h; weather/operational downtime: 0.000 h; elapsed duration: 1.000 h.
- 1424: Scenario: P50; P50 representative hindcast year 1984; cycle: 21; activity ID: 23; location: OFFSHORE; position: 41; safe-to-safe group: none; baseline duration: 4.000 h; weather/operational downtime: 0.000 h; elapsed duration: 4.000 h.
- 1425: Scenario: P50; P50 representative hindcast year 1984; cycle: 21; activity ID: 24; location: OFFSHORE; position: 41; safe-to-safe group: none; baseline duration: 3.000 h; weather/operational downtime: 0.000 h; elapsed duration: 3.000 h.
- 1426: Scenario: P50; P50 representative hindcast year 1984; cycle: 21; activity ID: 25; location: OFFSHORE; position: 41; safe-to-safe group: none; baseline duration: 1.000 h; weather/operational downtime: 0.000 h; elapsed duration: 1.000 h.
- 1427: Scenario: P50; P50 representative hindcast year 1984; cycle: 21; activity ID: 26; location: OFFSHORE; position: 41; safe-to-safe group: none; baseline duration: 2.000 h; weather/operational downtime: 0.000 h; elapsed duration: 2.000 h.
- 1428: Scenario: P50; P50 representative hindcast year 1984; cycle: 21; activity ID: 27; location: OFFSHORE; position: 41; safe-to-safe group: G1; baseline duration: 1.000 h; weather/operational downtime: 0.000 h; elapsed duration: 1.000 h.
- 1429: Scenario: P50; P50 representative hindcast year 1984; cycle: 21; activity ID: 28; location: OFFSHORE; position: 41; safe-to-safe group: G1; baseline duration: 3.500 h; weather/operational downtime: 0.000 h; elapsed duration: 3.500 h.
- 1430: Scenario: P50; P50 representative hindcast year 1984; cycle: 21; activity ID: 29; location: OFFSHORE; position: 41; safe-to-safe group: G1; baseline duration: 0.500 h; weather/operational downtime: 0.000 h; elapsed duration: 0.500 h.
- 1431: Scenario: P50; P50 representative hindcast year 1984; cycle: 21; activity ID: 30; location: OFFSHORE; position: 41; safe-to-safe group: G2; baseline duration: 0.500 h; weather/operational downtime: 0.000 h; elapsed duration: 0.500 h.
- 1432: Scenario: P50; P50 representative hindcast year 1984; cycle: 21; activity ID: 31; location: OFFSHORE; position: 41; safe-to-safe group: G2; baseline duration: 2.250 h; weather/operational downtime: 0.000 h; elapsed duration: 2.250 h.
- 1433: Scenario: P50; P50 representative hindcast year 1984; cycle: 21; activity ID: 32; location: OFFSHORE; position: 41; safe-to-safe group: G2; baseline duration: 0.500 h; weather/operational downtime: 0.000 h; elapsed duration: 0.500 h.
- 1434: Scenario: P50; P50 representative hindcast year 1984; cycle: 21; activity ID: 33; location: OFFSHORE; position: 41; safe-to-safe group: G3; baseline duration: 0.500 h; weather/operational downtime: 26.750 h; elapsed duration: 27.250 h.
- 1435: Scenario: P50; P50 representative hindcast year 1984; cycle: 21; activity ID: 34; location: OFFSHORE; position: 41; safe-to-safe group: G3; baseline duration: 1.750 h; weather/operational downtime: 0.000 h; elapsed duration: 1.750 h.
- 1436: Scenario: P50; P50 representative hindcast year 1984; cycle: 21; activity ID: 35; location: OFFSHORE; position: 41; safe-to-safe group: G3; baseline duration: 1.500 h; weather/operational downtime: 0.000 h; elapsed duration: 1.500 h.
- 1437: Scenario: P50; P50 representative hindcast year 1984; cycle: 21; activity ID: 36; location: OFFSHORE; position: 41; safe-to-safe group: G4; baseline duration: 1.750 h; weather/operational downtime: 0.000 h; elapsed duration: 1.750 h.
- 1438: Scenario: P50; P50 representative hindcast year 1984; cycle: 21; activity ID: 37; location: OFFSHORE; position: 41; safe-to-safe group: G4; baseline duration: 1.500 h; weather/operational downtime: 0.000 h; elapsed duration: 1.500 h.
- 1439: Scenario: P50; P50 representative hindcast year 1984; cycle: 21; activity ID: 38; location: OFFSHORE; position: 41; safe-to-safe group: G5; baseline duration: 1.750 h; weather/operational downtime: 0.000 h; elapsed duration: 1.750 h.
- 1440: Scenario: P50; P50 representative hindcast year 1984; cycle: 21; activity ID: 39; location: OFFSHORE; position: 41; safe-to-safe group: G5; baseline duration: 1.500 h; weather/operational downtime: 0.000 h; elapsed duration: 1.500 h.
- 1441: Scenario: P50; P50 representative hindcast year 1984; cycle: 21; activity ID: 40; location: OFFSHORE; position: 41; safe-to-safe group: none; baseline duration: 1.000 h; weather/operational downtime: 0.000 h; elapsed duration: 1.000 h.
- 1442: Scenario: P50; P50 representative hindcast year 1984; cycle: 21; activity ID: 41; location: OFFSHORE; position: 41; safe-to-safe group: none; baseline duration: 1.000 h; weather/operational downtime: 0.000 h; elapsed duration: 1.000 h.
- 1443: Scenario: P50; P50 representative hindcast year 1984; cycle: 21; activity ID: 42; location: OFFSHORE; position: 41; safe-to-safe group: none; baseline duration: 3.000 h; weather/operational downtime: 0.000 h; elapsed duration: 3.000 h.
- 1444: Scenario: P50; P50 representative hindcast year 1984; cycle: 21; activity ID: 43; location: OFFSHORE; position: 41; safe-to-safe group: none; baseline duration: 3.000 h; weather/operational downtime: 0.000 h; elapsed duration: 3.000 h.
- 1445: Scenario: P50; P50 representative hindcast year 1984; cycle: 21; activity ID: 44; location: OFFSHORE; position: 41; safe-to-safe group: none; baseline duration: 2.000 h; weather/operational downtime: 0.750 h; elapsed duration: 2.750 h.
- 1446: Scenario: P50; P50 representative hindcast year 1984; cycle: 21; activity ID: 21; location: OFFSHORE; position: 42; safe-to-safe group: none; baseline duration: 1.000 h; weather/operational downtime: 0.000 h; elapsed duration: 1.000 h.
- 1447: Scenario: P50; P50 representative hindcast year 1984; cycle: 21; activity ID: 22; location: OFFSHORE; position: 42; safe-to-safe group: none; baseline duration: 1.000 h; weather/operational downtime: 0.000 h; elapsed duration: 1.000 h.
- 1448: Scenario: P50; P50 representative hindcast year 1984; cycle: 21; activity ID: 23; location: OFFSHORE; position: 42; safe-to-safe group: none; baseline duration: 4.000 h; weather/operational downtime: 0.000 h; elapsed duration: 4.000 h.
- 1449: Scenario: P50; P50 representative hindcast year 1984; cycle: 21; activity ID: 24; location: OFFSHORE; position: 42; safe-to-safe group: none; baseline duration: 3.000 h; weather/operational downtime: 0.000 h; elapsed duration: 3.000 h.
- 1450: Scenario: P50; P50 representative hindcast year 1984; cycle: 21; activity ID: 25; location: OFFSHORE; position: 42; safe-to-safe group: none; baseline duration: 1.000 h; weather/operational downtime: 0.000 h; elapsed duration: 1.000 h.
- 1451: Scenario: P50; P50 representative hindcast year 1984; cycle: 21; activity ID: 26; location: OFFSHORE; position: 42; safe-to-safe group: none; baseline duration: 2.000 h; weather/operational downtime: 0.000 h; elapsed duration: 2.000 h.
- 1452: Scenario: P50; P50 representative hindcast year 1984; cycle: 21; activity ID: 27; location: OFFSHORE; position: 42; safe-to-safe group: G1; baseline duration: 1.000 h; weather/operational downtime: 0.000 h; elapsed duration: 1.000 h.
- 1453: Scenario: P50; P50 representative hindcast year 1984; cycle: 21; activity ID: 28; location: OFFSHORE; position: 42; safe-to-safe group: G1; baseline duration: 3.500 h; weather/operational downtime: 0.000 h; elapsed duration: 3.500 h.
- 1454: Scenario: P50; P50 representative hindcast year 1984; cycle: 21; activity ID: 29; location: OFFSHORE; position: 42; safe-to-safe group: G1; baseline duration: 0.500 h; weather/operational downtime: 0.000 h; elapsed duration: 0.500 h.
- 1455: Scenario: P50; P50 representative hindcast year 1984; cycle: 21; activity ID: 30; location: OFFSHORE; position: 42; safe-to-safe group: G2; baseline duration: 0.500 h; weather/operational downtime: 0.000 h; elapsed duration: 0.500 h.
- 1456: Scenario: P50; P50 representative hindcast year 1984; cycle: 21; activity ID: 31; location: OFFSHORE; position: 42; safe-to-safe group: G2; baseline duration: 2.250 h; weather/operational downtime: 0.000 h; elapsed duration: 2.250 h.
- 1457: Scenario: P50; P50 representative hindcast year 1984; cycle: 21; activity ID: 32; location: OFFSHORE; position: 42; safe-to-safe group: G2; baseline duration: 0.500 h; weather/operational downtime: 0.000 h; elapsed duration: 0.500 h.
- 1458: Scenario: P50; P50 representative hindcast year 1984; cycle: 21; activity ID: 33; location: OFFSHORE; position: 42; safe-to-safe group: G3; baseline duration: 0.500 h; weather/operational downtime: 0.000 h; elapsed duration: 0.500 h.
- 1459: Scenario: P50; P50 representative hindcast year 1984; cycle: 21; activity ID: 34; location: OFFSHORE; position: 42; safe-to-safe group: G3; baseline duration: 1.750 h; weather/operational downtime: 0.000 h; elapsed duration: 1.750 h.
- 1460: Scenario: P50; P50 representative hindcast year 1984; cycle: 21; activity ID: 35; location: OFFSHORE; position: 42; safe-to-safe group: G3; baseline duration: 1.500 h; weather/operational downtime: 0.000 h; elapsed duration: 1.500 h.
- 1461: Scenario: P50; P50 representative hindcast year 1984; cycle: 21; activity ID: 36; location: OFFSHORE; position: 42; safe-to-safe group: G4; baseline duration: 1.750 h; weather/operational downtime: 0.000 h; elapsed duration: 1.750 h.
- 1462: Scenario: P50; P50 representative hindcast year 1984; cycle: 21; activity ID: 37; location: OFFSHORE; position: 42; safe-to-safe group: G4; baseline duration: 1.500 h; weather/operational downtime: 0.000 h; elapsed duration: 1.500 h.
- 1463: Scenario: P50; P50 representative hindcast year 1984; cycle: 21; activity ID: 38; location: OFFSHORE; position: 42; safe-to-safe group: G5; baseline duration: 1.750 h; weather/operational downtime: 0.000 h; elapsed duration: 1.750 h.
- 1464: Scenario: P50; P50 representative hindcast year 1984; cycle: 21; activity ID: 39; location: OFFSHORE; position: 42; safe-to-safe group: G5; baseline duration: 1.500 h; weather/operational downtime: 0.000 h; elapsed duration: 1.500 h.
- 1465: Scenario: P50; P50 representative hindcast year 1984; cycle: 21; activity ID: 40; location: OFFSHORE; position: 42; safe-to-safe group: none; baseline duration: 1.000 h; weather/operational downtime: 0.000 h; elapsed duration: 1.000 h.
- 1466: Scenario: P50; P50 representative hindcast year 1984; cycle: 21; activity ID: 41; location: OFFSHORE; position: 42; safe-to-safe group: none; baseline duration: 1.000 h; weather/operational downtime: 0.000 h; elapsed duration: 1.000 h.
- 1467: Scenario: P50; P50 representative hindcast year 1984; cycle: 21; activity ID: 42; location: OFFSHORE; position: 42; safe-to-safe group: none; baseline duration: 3.000 h; weather/operational downtime: 0.000 h; elapsed duration: 3.000 h.
- 1468: Scenario: P50; P50 representative hindcast year 1984; cycle: 21; activity ID: 43; location: OFFSHORE; position: 42; safe-to-safe group: none; baseline duration: 3.000 h; weather/operational downtime: 0.000 h; elapsed duration: 3.000 h.
- 1469: Scenario: P50; P50 representative hindcast year 1984; cycle: 21; activity ID: 44; location: OFFSHORE; position: 42; safe-to-safe group: none; baseline duration: 2.000 h; weather/operational downtime: 0.000 h; elapsed duration: 2.000 h.
- 1470: Scenario: P50; P50 representative hindcast year 1984; cycle: 21; activity ID: 45; location: OFFSHORE; position: n/a; safe-to-safe group: none; baseline duration: 5.200 h; weather/operational downtime: 0.000 h; elapsed duration: 5.250 h.
